# Jupiler 15Sept11 - Amy updates

Schedule from MS Project, 2013-03-04 to 2017-08-07, costs in $, A marks actual dates.
Procter & Gamble

## Calendars

- Complete Holidays: Mon-Fri 08:00-12:00, 13:00-17:00; Sat-Sun off. Exceptions (off unless hours are given): 2013-03-29, 2013-05-27, 2013-07-04, 2013-09-02, 2013-11-27 to 2013-11-29, 2013-12-23 to 2014-01-01, 2014-01-20, 2014-04-18, 2014-05-26, 2014-07-04 to 2014-07-05, 2014-09-01, 2014-11-26 to 2014-11-28, 2014-12-22 to 2015-01-02.

## Resources

| Resource |
| --- |
| ?? |
| Shellie Porter |
| Vince |
| Niteen/Rene |
| Niteen |
| Brian Hamilton |
| PPI |
| Team |
| P&G |
| PP* |
| Unit #1 |
| Unit #2 |
| 1 d |
| 20 w |
| 18 w |
| 16 w |
| 6 mo |
| 6 w |
| PPI / P&G Technical |
| P&G / PPI comercial |
| Vendors |
| GBTC DOP Team |
| PPI / DOP Team |
| JC Plant |
| PV Plant |
| CQA |

## Schedule

| ID | WBS | Task | Type | Duration | Start | Finish | Predecessors | Complete | Remaining | Total slack | Free slack | Cost | Text1 | Text2 | Text10 | Text27 | Text28 |
| --- | --- | --- | --- | --- | --- | --- | --- | --- | --- | --- | --- | --- | --- | --- | --- | --- | --- |
| 1 | 1 | **Overall Schedule** |  | 1122.6d? | 2013-03-04 A | 2017-08-07 |  | 3% | 1088.24d? | 0d |  | 1,500 | IDM | IL | All |  |  |
| 2 | 1.1 | **Milestone Gates** |  | 879d | 2013-03-04 | 2016-08-30 |  |  |  | 243.6d |  |  | IDM | IL | All |  |  |
| 3 | 1.1.1 | Project Establishment (date projected) |  | 1d | 2013-03-04 | 2013-03-04 |  |  |  | 836.6d | 0d |  | IDM | IL | All | Discover | SIMPL Gate |
| 4 | 1.1.2 | PE Work Complete | milestone | 0d | 2013-11-18 | 2013-11-18 | 83, 84, 86, 95, 103, 104, 109, 110 |  |  | 940.6d |  |  | IDM | IL | All | Discover | SIMPL Gate |
| 5 | 1.1.3 | Project Commitment (date projected) | milestone | 0d | 2015-04-06 | 2015-04-06 | 13, 581, 584, 582, 637 |  |  | 50.9d | 0d |  | IDM | IL | All | Design | SIMPL Gate |
| 6 | 1.1.4 | PC Work Complete | milestone | 0d | 2015-05-19 | 2015-05-19 | 288, 517, 617, 626 |  |  | 0d |  |  | IDM | IL | All | Design | SIMPL Gate |
| 7 | 1.1.5 | Launch Authorization (date projected) | milestone | 0d | 2016-04-28 | 2016-04-28 | 5, 16, 675, 953, 954 |  |  | 243.6d | 0d |  | IDM | IL | All | Qualify & Ready | SIMPL Gate |
| 8 | 1.1.6 | LA Work Complete | milestone | 0d | 2016-08-30 | 2016-08-30 | 797FS-3mo, 23FS+4mo, 799FS-3mo, 793FS-3mo, 853FS-4mo, 732, 839, 840, 847, 900, 851, 924, 911 |  |  | 243.6d |  |  | IDM | IL | All | Qualify & Ready | SIMPL Gate |
| 9 | 1.2 | **Meeting Schedule** |  | 406.4d | 2014-05-08 A | 2015-12-21 |  |  | 406.4d | 424.7d |  |  | IDM | IL | All |  | SIMPL Gate |
| 10 | 1.2.1 | PE Gate Review at GM Lead Team | milestone | 0d | 2014-05-08 | 2014-05-08 | 130, 131, 132 |  |  | 831.1d |  |  | IDM | IL | All | Visibility | SIMPL Gate |
| 11 | 1.2.2 | Project Commitment Gate Review (Concurrence) at Technical Lead Team | milestone | 0d | 2014-09-03 A | 2014-09-03 A | 672 | 100% |  |  |  |  | TRO | TRL | All | Visibility | SIMPL Gate |
| 12 | 1.2.3 | Project Commitment Gate Review (Concurrence) at Commercial Lead Team (typically B5 Mktg Team) | milestone | 0d | 2014-09-03 A | 2014-09-03 A | 11, 673FS+3d | 100% |  |  |  |  | Mktg | Mktg | All | Visibility | SIMPL Gate |
| 13 | 1.2.4 | Project Commitment Approved at GM Lead Team | milestone | 0d | 2014-09-03 A | 2014-09-03 A | 12 | 100% |  |  |  |  | IDM | IL | All | Visibility | SIMPL Gate |
| 14 | 1.2.5 | LPA-LA Gate Review (Concurrence) at Technical Lead Team | milestone | 0d | 2015-03-30 A | 2015-03-30 A | 13, 953 | 100% |  |  |  |  | TRO | TRL | All | Visibility | SIMPL Gate |
| 15 | 1.2.6 | LPA-LA Gate Review (Concurrence) at Commercial Lead Team (typically B5 Mktg Team) | milestone | 0d | 2015-12-18 A | 2015-12-18 A | 14, 954, 953 | 100% |  |  |  |  | Mktg | Mktg | All | Visibility | SIMPL Gate |
| 16 | 1.2.7 | LPA-LA Approved at GM Lead Team |  | 1d | 2015-12-18 | 2015-12-21 | 15 |  |  | 336.7d | 93.1d |  | IDM | IL | All | Visibility | SIMPL Gate |
| 17 | 1.3 | **Key Milestones** |  | 882.6d | 2013-03-04 | 2016-09-05 |  |  |  | 240d |  |  | Sales | Sales | All |  |  |
| 18 | 1.3.1 | XX Country Sales Samples Due to "Company Issuing Sales Samples to Trade" (date needed) | milestone | 0d | 2014-06-20 | 2014-06-20 | 1013 |  |  | 770.6d | 469d |  | IDM | MADs | All | Launch | Sales Samples |
| 19 | 1.3.2 | XX Country Sales Samples Due to "Company Issuing Sales Samples to Trade" (date needed) | milestone | 0d | 2014-06-20 | 2014-06-20 | 1013 |  |  | 780.6d | 479d |  | IDM | MADs | All | Launch | Sales Samples |
| 20 | 1.3.3 | XX Country Sales Samples (date needed) | milestone | 0d | 2014-06-20 | 2014-06-20 | 1013 |  |  | 712.6d | 469d |  | IDM | MADs | All | Launch | Sales Samples |
| 21 | 1.3.4 | Initiative or Bundle Release to Trade (date needed) | milestone | 0d | 2016-04-28 | 2016-04-28 | 7, 18, 686, 697 |  |  | 301.6d | 0d |  | Sales | Sales | All | Launch | SOS Dates |
| 22 | 1.3.5 | Separate Country Release to Trade (date needed) | milestone | 0d | 2016-05-12 | 2016-05-12 | 19, 21FS+10d |  |  | 301.6d | 0d |  | Sales | Sales | All | Launch | SOS Dates |
| 23 | 1.3.6 | Separate Country Release to Trade (date needed) | milestone | 0d | 2016-04-28 | 2016-04-28 | 7, 20 |  |  | 243.6d | 0d |  | Sales | Sales | All | Launch | SOS Dates |
| 24 | 1.3.7 | Country XX Customer Notification Deadline for Direct Store Delivery (date needed) |  | 3w | 2013-03-04 | 2013-03-22 |  |  |  | 1084.6d | 0d |  | MLL | MLL | Supply | Launch | SOS Dates |
| 25 | 1.3.8 | First Order Date Country XX (date required) | milestone | 0d | 2016-05-12 | 2016-05-12 | 21, 22 |  |  | 301.6d | 0d |  | SNO | IOL | All | Launch | SOS Dates |
| 26 | 1.3.9 | Country XX Customer Notification Deadline for Direct Store Delivery (date needed) |  | 6d | 2013-03-04 | 2013-03-11 |  |  |  | 1093.6d | 9d |  | MLL | MLL/MIL | Supply | Launch | SOS Dates |
| 27 | 1.3.10 | Last Order Date for First Delivery Date (date required) | milestone | 0d | 2016-06-09 | 2016-06-09 | 25FS+4w |  |  | 301.6d |  |  | SNO | IOL | All | Launch | SOS Dates |
| 28 | 1.3.11 | First Delivery Date (date set) | milestone | 0d | 2016-08-17 | 2016-08-17 | 29FS-2w |  |  | 253d | 0d |  | SNO | IOL | All | Launch | SOS Dates |
| 29 | 1.3.12 | Start of Shipments (Country XX) (date set) | milestone | 0d | 2016-08-31 | 2016-08-31 | 16, 1092 |  |  | 240d | 0d |  | SNO | IOL | All | Launch | SOS Dates |
| 30 | 1.3.13 | Start of Shipments (Country XX) (date set) | milestone | 0d | 2016-09-05 | 2016-09-05 | 29FS+3d |  |  | 240d | 0d |  | SNO | IOL | All | Launch | SOS Dates |
| 31 | 1.3.14 | Start of Shipments (Country XX) (date set) | milestone | 0d | 2016-09-05 | 2016-09-05 | 30 |  |  | 240d |  |  | SNO | IOL | All | Launch | SOS Dates |

Notes:
- 26: Customers who plan to participate in the program have to declare their interests and categories 12-weeks prior to SOS.~ Please add a milestone entitled US Customer Notification Deadline for DSD and link it to 12-weeks prior to the 2/17 NSOS. ~This applies to US customers. / Canada can also participate in the program. I suggest a similar link (with 12-week lead-time), but to their 2/6 NDD.

| ID | WBS | Task | Type | Duration | Start | Finish | Predecessors | Complete | Remaining | Total slack | Free slack | Text1 | Text2 | Text10 | Text27 | Text28 |
| --- | --- | --- | --- | --- | --- | --- | --- | --- | --- | --- | --- | --- | --- | --- | --- | --- |
| 32 | 1.4 | **Funding Milestones** |  | 394d | 2013-06-04 A | 2015-01-20 |  |  | 394d | 663.6d |  | Eng | Eng | All |  |  |
| 33 | 1.4.1 | Prelim Funding for Any Relevant equipment with long lead times | milestone | 0d | 2013-06-04 | 2013-06-04 | 127, 124 |  |  | 369d | 0d | Eng | Eng | Tech | Discover | Eng Scope |
| 34 | 1.4.2 | **PC Funding Partial Appropriation Prework (amt needed)** |  | 9d | 2014-05-12 A | 2014-05-22 |  |  | 9d | 549.6d |  | Eng | Eng | Tech | Design | Eng Scope |
| 35 | 1.4.2.1 | Funding Booklet Completion - Partial | milestone | 0d | 2014-05-12 A | 2014-05-12 A | 5FS-16w | 100% |  |  |  | Eng | Eng | Tech | Design | Eng Scope |
| 36 | 1.4.2.2 | Capital Concurrence for Partial (note approver here) |  | 1d | 2014-05-12 | 2014-05-12 | 35 |  |  | 549.6d | 0d | Eng | Eng | Tech | Design | Eng Scope |
| 37 | 1.4.2.3 | Engineering Concurrence for Partial (note approvers here) |  | 1d | 2014-05-13 | 2014-05-13 | 36 |  |  | 549.6d | 0d | Eng | Eng | Tech | Design | Eng Scope |
| 38 | 1.4.2.4 | Final Memo & ROAuthorization in STEAM for Partial |  | 1d | 2014-05-14 | 2014-05-14 | 37 |  |  | 549.6d | 0d | Eng | Eng | Tech | Design | Eng Scope |
| 39 | 1.4.2.5 | STEAM Approval Partial Appropriation |  | 1w | 2014-05-15 | 2014-05-21 | 38 |  |  | 549.6d | 0d | Eng | Eng | Tech | Design | Eng Scope |
| 40 | 1.4.2.6 | Partial Funding Purchase Order Ready |  | 1d | 2014-05-22 | 2014-05-22 | 39 |  |  | 549.6d | 0d | Eng | Eng | Tech | Design | Eng Scope |
| 41 | 1.4.3 | **PC Funding Final Appropriation Prework (amt needed)** |  | 17d | 2014-12-15 | 2015-01-20 |  |  |  | 663.6d |  |  |  |  | Qualify & Ready | Eng Scope |
| 42 | 1.4.3.1 | Funding Booklet Completion - Final Appropriation |  | 2d | 2014-12-15 | 2014-12-16 | 645SS |  |  | 663.6d | 0d | Eng | Eng | Tech | Qualify & Ready | Eng Scope |
| 43 | 1.4.3.2 | Capital Concurrence Final Appropriation (note approver here) |  | 1d | 2014-12-17 | 2014-12-17 | 42 |  |  | 663.6d | 0d | Eng | Eng | Tech | Qualify & Ready | Eng Scope |
| 44 | 1.4.3.3 | Engineering Concurrence Final Appropriation (note approvers here) |  | 1d | 2014-12-18 | 2014-12-18 | 43 |  |  | 663.6d | 0d | Eng | Eng | Tech | Qualify & Ready | Eng Scope |
| 45 | 1.4.3.4 | Final Memo & ROAuthorization in STEAM for Final Appropriation |  | 1d | 2014-12-19 | 2014-12-19 | 44 |  |  | 663.6d | 0d | Eng | Eng | Tech | Qualify & Ready | Eng Scope |
| 46 | 1.4.3.5 | STEAM Approval Final Appropriation |  | 2d | 2015-01-05 | 2015-01-06 | 45 |  |  | 663.6d | 0d | Eng | Eng | Tech | Qualify & Ready | Eng Scope |
| 47 | 1.4.3.6 | Final Funding Purchase Order Ready |  | 2w | 2015-01-07 | 2015-01-20 | 46 |  |  | 663.6d |  | Eng | Eng | Tech | Qualify & Ready | Eng Scope |
| 48 | 1.5 | **US/PR Customer Engagement** |  | 6d | 2013-03-04 | 2013-03-11 |  |  |  | 994.6d |  | Sales | Sales | Supply |  |  |
| 49 | 1.5.1 | **Top 10 Monthly Connects** |  | 6d | 2013-03-04 | 2013-03-11 |  |  |  | 994.6d |  | Sales | Sales | Supply |  |  |
| 50 | 1.5.1.1 | **Sales Monthly Top 10 Connect** |  | 6d | 2013-03-04 | 2013-03-11 |  |  |  | 994.6d |  | Sales | Sales | Supply |  |  |
| 51 | 1.5.1.1.1 | **Preliminary Customer Conversion Plan from Customer Teams** |  | 6d | 2013-03-04 | 2013-03-11 |  |  |  | 994.6d |  | SNO | MLL/MIL | Supply | Design |  |
| 52 | 1.5.1.1.1.1 | Is Direct Store Delivery requested? (applicable on large stream 1s) |  | 6d | 2013-03-04 | 2013-03-11 |  |  |  | 994.6d | 0d | SNO | MLL/MIL | Comm | Design | Commercial Concept/Sell-In |
| 53 | 1.5.1.1.1.2 | Confirm if other elements of Bundle will be managed via Forecast / Order Compliance |  | 6d | 2013-03-04 | 2013-03-11 |  |  |  | 994.6d | 0d | SNO | MLL/MIL | Comm | Design | Commercial Concept/Sell-In |
| 54 | 1.5.1.1.1.3 | Flex Truck Allowance & Other Speed to Shelf Programs |  | 6d | 2013-03-04 | 2013-03-11 |  |  |  | 994.6d | 0d | SNO | MLL/MIL | Comm | Design | Commercial Concept/Sell-In |
| 55 | 1.5.1.1.1.4 | First Delivery Date Customer Expectations |  | 6d | 2013-03-04 | 2013-03-11 |  |  |  | 994.6d | 0d | SNO | MLL/MIL | Comm | Design | Commercial Concept/Sell-In |
| 56 | 1.5.1.1.1.5 | Flow Behind vs. Pipeline Capabilities Check |  | 6d | 2013-03-04 | 2013-03-11 |  |  |  | 994.6d | 0d | SNO | MLL/MIL | Comm | Design | Commercial Concept/Sell-In |
| 57 | 1.5.1.1.1.6 | Mixed impact of Planogram (POG) resets |  | 6d | 2013-03-04 | 2013-03-11 |  |  |  | 994.6d | 0d | SNO | MLL/MIL | Comm | Design | Commercial Concept/Sell-In |

| ID | WBS | Task | Duration | Start | Finish | Predecessors | Remaining | Total slack | Free slack | Cost | Text1 | Text2 | Text10 | Text27 | Text28 | LP |
| --- | --- | --- | --- | --- | --- | --- | --- | --- | --- | --- | --- | --- | --- | --- | --- | --- |
| 58 | 1.5.1.1.2 | **Merchandising** | 6d | 2013-03-04 | 2013-03-11 |  |  | 994.6d |  |  | SNO | MLL/MIL | Supply | Design | Commercial Concept/Sell-In |  |
| 59 | 1.5.1.1.2.1 | Finalize Bundle Display line-up | 6d | 2013-03-04 | 2013-03-11 |  |  | 994.6d | 0d |  | SNO | MLL/MIL | Comm | Design | Commercial Concept/Sell-In |  |
| 60 | 1.5.1.1.2.2 | Determine notification date / strategy for display launch | 6d | 2013-03-04 | 2013-03-11 |  |  | 994.6d | 0d |  | SNO | MLL/MIL | Comm | Design | Commercial Concept/Sell-In |  |
| 61 | 1.5.1.1.2.3 | Develop current Customization / Display simplification strategy | 6d | 2013-03-04 | 2013-03-11 |  |  | 994.6d | 0d |  | SNO | MLL/MIL | Comm | Design | Commercial Concept/Sell-In |  |
| 62 | 1.5.1.1.2.4 | Pre-Seed Program Support - 10oz Bottles | 6d | 2013-03-04 | 2013-03-11 |  |  | 994.6d | 0d |  | SNO | MLL/MIL | Comm | Design | Commercial Concept/Sell-In |  |
| 63 | 1.5.1.1.2.5 | Sachets for Sales Samples | 6d | 2013-03-04 | 2013-03-11 |  |  | 994.6d | 0d |  | SNO | MLL/MIL | Comm | Design | Commercial Concept/Sell-In |  |
| 64 | 1.6 | **Base Plan/A&I** | 325d | 2013-03-04 | 2014-06-25 |  |  | 305.6d |  |  | IDM | IL | All | Design |  |  |
| 65 | 1.6.1 | Risk Assumptions & agreements documented | 1w | 2013-03-04 | 2013-03-08 |  |  | 361.6d | 0d |  | IDM | IL | All | Design | Risk Assessment |  |
| 66 | 1.6.2 | Technical scope locked | 4.45mo | 2013-03-11 | 2013-07-29 | 65 |  | 361.6d | 0d |  | TRO | TRL | All | Design | Eng Scope, New Package, New Formula |  |
| 67 | 1.6.3 | SKU ID'ed (including ecommerce) | 2w | 2013-10-17 | 2013-10-30 | 66, 170 |  | 305.6d | 0d |  | SNO | IOL | All | Design | All |  |
| 68 | 1.6.4 | SKUs Locked (sizes, forms, channels) | 5mo | 2013-11-01 | 2014-04-22 | 67, 73 |  | 305.6d | 0d |  | SNO | Joel | All | Design | All |  |
| 69 | 1.6.5 | Brand codes with Active Projected SKU List application | 3w | 2014-04-23 | 2014-05-13 | 68 |  | 305.6d | 0d |  | SNO | IOL | All | Design | All |  |
| 70 | 1.6.6 | Request Country XX brand code incl. Trays/Customization Needs | 6w | 2014-05-14 | 2014-06-25 | 69 |  | 305.6d | 0d |  | IDM | IL | All | Design | All |  |
| 71 | 1.6.7 | Request Country XX brand code incl. trays/Customization Needs | 6w | 2014-05-14 | 2014-06-25 | 69 |  | 305.6d | 0d |  | IDM | IL | All | Design | All |  |
| 72 | 1.6.8 | Request Country XX brand codes incl. trays/Customization Needs | 6w | 2014-05-14 | 2014-06-25 | 69 |  | 305.6d | 0d |  | IDM | IL | All | Design | All |  |
| 73 | 1.6.9 | Lock if hard or soft conversion | 1d | 2013-10-31 | 2013-10-31 | 67 |  | 305.6d | 0d |  | Sales | Sales | All | Design | All |  |
| 74 | 1.7 | **Project Establishment Readiness** | 291.5d | 2013-03-04 A | 2014-05-08 |  | 291.5d | 831.1d |  | 1,500 | IDM | IL | All | Discover |  |  |
| 75 | 1.7.1 | **PE Market Readiness** | 20d | 2013-03-04 | 2013-04-01 |  |  | 376.9d |  |  | Sales | Sales | Comm | Discover |  |  |
| 76 | 1.7.1.1 | Bundling Principles confirmed with Bundle Sales Leader | 1w | 2013-03-04 | 2013-03-08 |  |  | 376.9d | 0d |  | Sales | Sales | Comm | Discover | Commercial Concept/Sell-In |  |
| 77 | 1.7.1.2 | Bundling risks & assumptions with Bundle Sales Ldr | 2w | 2013-03-11 | 2013-03-22 | 76 |  | 376.9d | 0d |  | Sales | Sales | Comm | Discover | Commercial Concept/Sell-In |  |
| 78 | 1.7.1.3 | Where to play confirmed - ecommerce, channels? | 1w | 2013-03-25 | 2013-04-01 | 77 |  | 376.9d | 0d |  | Sales | Sales | Comm | Discover | Commercial Concept/Sell-In |  |
| 79 | 1.7.2 | **PE Commercial Readiness** | 126d | 2013-03-04 | 2013-08-29 |  |  | 1d |  |  | Mktg | Mktg | Comm | Discover |  |  |
| 80 | 1.7.2.1 | Concept qualification | 45d | 2013-03-04 | 2013-05-06 |  |  | 1d | 0d |  | Global | Global | Comm | Discover | Commercial Concept/Sell-in | LP |
| 81 | 1.7.2.2 | Media Neutral Idea Approved - Include legal | 9w | 2013-05-07 | 2013-07-10 | 80 |  | 1d | 0d |  | Global | Global | Comm | Discover | Commercial Concept/Sell-in |  |
| 82 | 1.7.2.3 | Marketing Toolbox elements ID'ed | 1w | 2013-07-11 | 2013-07-17 | 81 |  | 1024.6d | 29d |  | Mktg | Mktg | Comm | Discover | Commercial Concept/Sell-in |  |
| 83 | 1.7.2.4 | CVA MRAT (customer value assessment, Market Readiness assessment tool) | 1w | 2013-04-02 | 2013-04-08 | 78 |  | 1097.6d | 157d |  | Sales | Sales | Comm | Discover | Commercial Concept/Sell-in |  |
| 84 | 1.7.2.5 | TPA Completed (Trial Potential Assessment) | 1w | 2013-07-30 | 2013-08-05 | 80, 66 |  | 1014.6d | 74d |  | A&I | A&I | Comm | Discover | Commercial Concept/Sell-in |  |
| 85 | 1.7.2.6 | Claims summary documented | 2w | 2013-07-30 | 2013-08-12 | 80, 66 |  | 929.6d | 0d |  | Mktg | Mktg | Comm | Discover | Commercial Concept/Sell-in, New Claim |  |
| 86 | 1.7.2.7 | A&I Learning Plan Completed | 4w | 2013-03-04 | 2013-04-01 |  |  | 1102.6d | 162d |  | A&I | A&I | Comm | Discover | Commercial Concept/Sell-in, New Claim |  |

| ID | WBS | Task | Duration | Start | Finish | Predecessors | Remaining | Total slack | Free slack | Cost | Text1 | Text2 | Text10 | Text27 | Text28 |
| --- | --- | --- | --- | --- | --- | --- | --- | --- | --- | --- | --- | --- | --- | --- | --- |
| 87 | 1.7.2.8 | **PE Artwork - Design Brief Approval** | 13d | 2013-08-13 | 2013-08-29 |  |  | 996.6d |  |  | Design | Design | Comm | Discover |  |
| 88 | 1.7.2.8.1 | Create Design Brief with Mktg and CMK | 5d | 2013-08-13 | 2013-08-19 | 85, 81, 144 |  | 996.6d | 0d |  | Design | Design | Comm | Discover | New Artwork |
| 89 | 1.7.2.8.2 | Design Brief Approved (including any in-mold line (IML) lock-up) | 1d | 2013-08-20 | 2013-08-20 | 88 |  | 996.6d | 0d |  | Design | Design | Comm | Discover | New Artwork |
| 90 | 1.7.2.8.3 | Kickoff Meeting with agency | 1d | 2013-08-21 | 2013-08-21 | 89 |  | 996.6d | 0d |  | Design | Design | Comm | Discover | New Artwork |
| 91 | 1.7.2.8.4 | Design Estimate received from agency | 1d | 2013-08-22 | 2013-08-22 | 90 |  | 996.6d | 0d |  | Design | Design | Comm | Discover | New Artwork |
| 92 | 1.7.2.8.5 | Establish brand codes and Pieces of Art (POA)s needed | 1d | 2013-08-23 | 2013-08-23 | 91 |  | 996.6d | 0d |  | Design | Design | Comm | Discover | New Artwork |
| 93 | 1.7.2.8.6 | Design Estimate approved | 1d | 2013-08-26 | 2013-08-26 | 92 |  | 996.6d | 0d |  | Design | Design | Comm | Discover | New Artwork |
| 94 | 1.7.2.8.7 | Purchase Order opened to agency | 1d | 2013-08-27 | 2013-08-27 | 93 |  | 996.6d | 0d |  | Design | Design | Comm | Discover | New Artwork |
| 95 | 1.7.2.8.8 | Prelim. dyelines sent to agency | 2d | 2013-08-28 | 2013-08-29 | 94, 82 |  | 996.6d | 56d |  | Design | Design | Comm | Discover | New Artwork |
| 96 | 1.7.3 | **PE Technical Readiness** | 182d | 2013-03-04 A | 2013-11-18 |  | 182d | 940.6d |  | 1,500 | PR/Pkg Dev | TRL/Steve | Tech | Discover |  |
| 97 | 1.7.3.1 | Concept test - Idea Hamper | 3mo | 2013-03-04 | 2013-06-05 |  |  | 767.6d | 0d |  | Global | Global | Tech | Discover | Commercial Concept/Sell-in, New Claim |
| 98 | 1.7.3.2 | Extended Concept & Usage (C&U/C&SPIT) | 3mo | 2013-06-06 | 2013-09-09 | 97 |  | 831.1d | 0d |  | Global | Global | Tech | Discover | New Formula, New Package |
| 99 | 1.7.3.3 | **Intellectual Property** | 85d | 2013-06-06 | 2013-10-04 |  |  | 767.6d |  |  | PR | TRL | Tech | Discover |  |
| 100 | 1.7.3.3.1 | Intellectual Property Position/Patent (Freedom To Practice Search) | 2w | 2013-06-06 | 2013-06-19 | 97 |  | 767.6d | 0d |  | Pkg Dev | MPD | Tech | Discover | All |
| 101 | 1.7.3.3.2 | Determine Intellectual Property (IP) Strategy | 2w | 2013-06-20 | 2013-07-03 | 100 |  | 767.6d | 0d |  | Pkg Dev | MPD | Tech | Discover | All |
| 102 | 1.7.3.3.3 | Patent design Trademark application complete | 60d | 2013-07-05 | 2013-09-27 | 101 |  | 971.6d | 0d |  | Mktg | Mktg | Tech | Discover | All |
| 103 | 1.7.3.3.4 | Intellectual Property (IP) index | 5d | 2013-09-30 | 2013-10-04 | 102 |  | 971.6d | 31d |  | Pkg Dev | MPD | Tech | Discover | All |
| 104 | 1.7.3.4 | Connect & Develop due diligence w/sites | 6.4w | 2013-03-04 | 2013-04-17 |  |  | 1090.6d | 150d |  | IDM | Shelly/Tom | Tech | Discover | All |
| 105 | 1.7.3.5 | Product & Package TFS draft | 1w | 2013-06-06 | 2013-06-12 | 97 |  | 777.6d | 61d |  | PD | Process/MPD | Tech | Discover | All |
| 106 | 1.7.3.6 | Process flow sheet draft | 1w | 2013-06-06 | 2013-06-12 | 97 |  | 782.6d | 61d |  | Eng | Eng | Tech | Discover | All |
| 107 | 1.7.3.7 | Technical Learning Plan ID'ed | 2w | 2013-07-11 | 2013-07-31 | 97, 81 |  | 798.6d | 0d |  | Process | Process | Tech | Discover | All |
| 108 | 1.7.3.8 | Draft QEC I | 2w | 2013-07-11 | 2013-07-24 | 97, 81 |  | 882.6d | 455d |  | PR | PR | Tech | Discover | All |
| 109 | 1.7.3.9 | Consumer & customer needs defined | 1d | 2013-07-11 | 2013-07-11 | 97, 81 |  | 1031.6d | 91d |  | PR/Sales/A&I | PR/Sales/A&I | Tech | Discover | All |
| 110 | 1.7.3.10 | Supply Network Capacity Analysis (Mat'l & Dist., New Supplier Confirmation) | 10w | 2013-09-10 | 2013-11-18 | 98 |  | 940.6d | 0d |  | Global | Global | Tech | Discover | All |

| ID | WBS | Task | Type | Duration | Start | Finish | Predecessors | Complete | Remaining | Total slack | Free slack | Constraint | Cost | Text1 | Text2 | Text10 | Text27 | Text28 |
| --- | --- | --- | --- | --- | --- | --- | --- | --- | --- | --- | --- | --- | --- | --- | --- | --- | --- | --- |
| 111 | 1.7.3.11 | **Packaging Design Intent Approval (DIA)** |  | 65d | 2013-04-04 A | 2013-07-05 |  |  | 65d | 1035.6d |  |  | 1,500 | Pkg Dev | MPD | Tech | Discover |  |
| 112 | 1.7.3.11.1 | Design Intent Approval (DIA) draft |  | 1w | 2013-04-04 | 2013-04-10 | 134, 135 |  |  | 34.5d | 0d |  |  | Pkg Dev | MPD | Tech | Discover | New Package |
| 113 | 1.7.3.11.2 | Design Intent Approval (DIA) review |  | 4w | 2013-04-11 | 2013-05-08 | 112 |  |  | 34.5d | 0d |  |  | Pkg Dev | MPD | Tech | Discover | New Package |
| 114 | 1.7.3.11.3 | Design Intent Approved (DIA) |  | 1w | 2013-05-09 | 2013-05-15 | 113 |  |  | 34.5d | 0d |  |  | Pkg Dev | MPD | Tech | Discover | New Package |
| 115 | 1.7.3.11.4 | **Design development** |  | 25d | 2013-05-16 | 2013-06-20 |  |  |  | 971.6d |  |  | 1,500 | Pkg Dev | MPD | Tech | Discover |  |
| 116 | 1.7.3.11.4.1 | Build 3D files |  | 3d | 2013-05-16 | 2013-05-20 | 114 |  |  | 971.6d | 0d |  |  | Pkg Dev | MPD | Tech | Discover | New Package |
| 117 | 1.7.3.11.4.2 | Prototyping |  | 1d | 2013-05-21 | 2013-05-21 | 116 |  |  | 971.6d | 0d |  | 1,500 | Pkg Dev | MPD | Tech | Discover | New Package |
| 118 | 1.7.3.11.4.3 | Consumer test |  | 1d | 2013-05-22 | 2013-05-22 | 117 |  |  | 971.6d | 0d |  |  | Pkg Dev | MPD | Tech | Discover | New Package |
| 119 | 1.7.3.11.4.4 | Prelim design locked |  | 1d | 2013-05-23 | 2013-05-23 | 118 |  |  | 971.6d | 0d |  |  | Pkg Dev | MPD | Tech | Discover | New Package |
| 120 | 1.7.3.11.4.5 | Should cost / feasibility |  | 4d | 2013-05-24 | 2013-05-30 | 119 |  |  | 971.6d | 92d | finish no earlier than 2011-07-21 |  | Pkg Dev | MPD | Tech | Discover | New Package |
| 121 | 1.7.3.11.4.6 | Develop 3D with mold builder (or pkg machine development - depending on assembled or formulated business) |  | 19d | 2013-05-24 | 2013-06-20 | 119 |  |  | 1035.6d | 0d |  |  | Pkg Dev | MPD | Tech | Discover | New Package |
| 122 | 1.7.3.11.5 | DIA review and approval |  | 2w | 2013-06-21 | 2013-07-05 | 121 |  |  | 1035.6d |  |  |  | Pkg Dev | MPD | Tech | Discover | New Package |
| 123 | 1.7.3.11.6 | DIA Final | milestone | 0d | 2013-04-12 A | 2013-04-12 A | 122 | 100% |  |  |  |  |  | Pkg Dev | MPD | Tech | Discover | New Package |
| 124 | 1.7.3.11.7 | Funding approval |  | 2w | 2013-04-15 | 2013-04-26 | 123 |  |  | 395d | 26d |  |  | Pkg Dev | MPD | Tech | Discover | New Package |
| 125 | 1.7.3.12 | Front End Engineering (FEI) work graduated |  | 1d | 2013-03-04 A | 2013-03-04 |  |  | 1d | 369d | 0d |  |  | Eng | Eng | Tech | Discover | FEI |
| 126 | 1.7.3.13 | Manufacturing SIMPL Readiness (All plts/CMs) |  | 22d | 2013-03-05 | 2013-04-04 | 125 |  |  | 369d | 0d |  |  | Eng. | Eng | Tech | Discover | Production & Distribution, Customization |
| 127 | 1.7.3.14 | Engineering Prelim Concurrence |  | 42d | 2013-04-05 | 2013-06-04 | 126 |  |  | 369d | 0d |  |  | Eng. | Eng | Tech | Discover | Eng Scope |
| 128 | 1.7.4 | **PE Financials** |  | 159.5d | 2013-09-10 | 2014-05-08 |  |  |  | 831.1d |  |  |  | Finance | Finance | All | Discover |  |
| 129 | 1.7.4.1 | Country Total Delivered Cost (TDC) test complete |  | 1mo | 2013-09-10 | 2013-10-09 | 105, 106, 97, 98, 134 |  |  | 879.6d | 0d |  |  | Global | Global | All | Discover | All |
| 130 | 1.7.4.2 | Volume locked |  | 2mo | 2014-01-29 | 2014-05-08 | 97, 98, 591 |  |  | 831.1d | 0d |  |  | A&I | A&I | All | Discover | All |
| 131 | 1.7.4.3 | Cannibalization locked |  | 2mo | 2013-09-10 | 2013-12-19 | 97, 98 |  |  | 920.6d | 89.5d |  |  | A&I | A&I | All | Discover | All |
| 132 | 1.7.4.4 | Cost estimated (capital/formula/etc.) |  | 1mo | 2013-10-10 | 2014-02-27 | 129, 136, 137, 120 |  |  | 879.6d | 48.5d |  |  | Global | Global | All | Discover | All |
| 133 | 1.7.5 | **PE Project Specific Items** |  | 22d | 2013-03-04 | 2013-04-03 |  |  |  | 34.5d |  |  |  | IDM | IL | All | Discover |  |
| 134 | 1.7.5.1 | Studies |  | 1mo | 2013-03-04 | 2013-04-03 |  |  |  | 34.5d | 0d |  |  | Global | Global | All | Discover | All |
| 135 | 1.7.5.2 | FMOT assessments |  | 1mo | 2013-03-04 | 2013-04-03 |  |  |  | 34.5d | 0d |  |  | Global | Global | All | Discover | New Artwork, New Package, New Brand Architecture, New Price |
| 136 | 1.7.5.3 | Mfg strategy options evaluated |  | 1mo | 2013-03-04 | 2013-04-03 |  |  |  | 1011.6d | 132d |  |  | Mktg/Eng./PR | Brooke/Eng/PR | All | Discover | Production & Distribution, Customization, SND Scope |
| 137 | 1.7.5.4 | Capacity constraints (Mfg/Customer) evaluated and resolved |  | 1mo | 2013-03-04 | 2013-04-03 |  |  |  | 1011.6d | 132d |  |  | Eng./Mktg | Eng/Mktg | All | Discover | Production & Distribution, Customization, SND Scope |

| ID | WBS | Task | Duration | Start | Finish | Predecessors | Complete | Remaining | Total slack | Free slack | Text1 | Text2 | Text10 | Text27 | Text28 | Text11 |
| --- | --- | --- | --- | --- | --- | --- | --- | --- | --- | --- | --- | --- | --- | --- | --- | --- |
| 138 | 1.7.6 | **Brand Architecture** | 73d | 2013-03-04 | 2013-06-14 |  |  |  | 974.6d |  | Mktg | Mktg | All | Discover |  |  |
| 139 | 1.7.6.1 | Brand Architecture Approved (clustering, brand stretch) | 5d | 2013-03-04 | 2013-03-08 |  |  |  | 974.6d | 0d | Design | Design | All | Discover | New Brand Architecture |  |
| 140 | 1.7.6.2 | Brand Vision Development - bringing the architecture to life | 1mo | 2013-03-11 | 2013-04-10 | 139 |  |  | 974.6d | 0d | Design | Design | All | Discover | New Brand Architecture |  |
| 141 | 1.7.6.3 | Testing on Brand Vision | 10d | 2013-04-11 | 2013-04-24 | 140 |  |  | 974.6d | 0d | Design | Design | All | Discover | New Brand Architecture |  |
| 142 | 1.7.6.4 | Approved Brand Vision (incl Quall feedback and iterations) | 1d | 2013-04-25 | 2013-04-25 | 141 |  |  | 974.6d | 0d | Design | Design | All | Discover | New Brand Architecture |  |
| 143 | 1.7.6.5 | Kickoff Package Design | 3d | 2013-04-26 | 2013-04-30 | 140, 142 |  |  | 974.6d | 0d | Design | Design | All | Discover | New Brand Architecture |  |
| 144 | 1.7.6.6 | 2D Development | 1mo | 2013-05-01 | 2013-05-31 | 143 |  |  | 974.6d | 0d | Design | Design | All | Discover | New Brand Architecture |  |
| 145 | 1.7.6.7 | Qualitative on 2D Design | 2w | 2013-06-03 | 2013-06-14 | 144 |  |  | 974.6d | 0d | Design | Design | All | Discover | New Brand Architecture |  |
| 146 | 1.8 | **Project Commitment Readiness** | 621d? | 2013-03-04 A | 2015-09-03 |  | 6% | 586.47d? | 501.6d |  | IDM | IL | All | Design |  |  |
| 147 | 1.8.1 | **PC Market Readiness** | 483d | 2013-04-02 | 2015-03-23 |  |  |  | 376.9d |  | Sales | Sales | Comm | Design |  |  |
| 148 | 1.8.1.1 | **Customer selling strategy defined** | 275d | 2013-04-02 | 2014-05-13 |  |  |  | 376.9d |  | Sales | Sales | Comm | Design |  |  |
| 149 | 1.8.1.1.1 | Determine target customer margins, floor price minimum (including corridor changes) | 1w | 2013-04-02 | 2013-04-08 | 78 |  |  | 376.9d | 0d | Sales | Sales | Comm | Design | Commercial Concept/Sell-In |  |
| 150 | 1.8.1.1.2 | Determine display/merchandising requirements | 1w | 2013-04-02 | 2013-04-08 | 149SS |  |  | 376.9d | 0d | Sales | Sales | Comm | Design | Commercial Concept/Sell-In |  |
| 151 | 1.8.1.1.3 | Provide Input to Storeback Sessions | 1w | 2013-04-09 | 2013-04-15 | 150 |  |  | 376.9d | 0d | Sales | Sales | Comm | Design | Commercial Concept/Sell-In |  |
| 152 | 1.8.1.1.4 | Determine Shelving Strategy | 1w | 2013-04-16 | 2013-04-22 | 151 |  |  | 376.9d | 104d | Sales | Sales | Comm | Design | Commercial Concept/Sell-In |  |
| 153 | 1.8.1.1.5 | Determine Preliminary customer selling strategy (Floor Price Minimum, Recommended Pricing) | 3d | 2014-05-01 | 2014-05-05 | 152, 165, 166, 163, 409FS-2w |  |  | 712.6d | 0d | Sales | Sales | Comm | Design | Commercial Concept/Sell-In |  |
| 154 | 1.8.1.1.6 | Customer plans in place (Distribution Shelving merch) | 3d | 2014-05-06 | 2014-05-08 | 153 |  |  | 797.6d | 0d | Sales | Sales | Comm | Design | Commercial Concept/Sell-In |  |
| 155 | 1.8.1.1.7 | Distribution Priorities | 3d | 2014-05-09 | 2014-05-13 | 154 |  |  | 797.6d | 297d | Sales | Sales | Comm | Design | Commercial Concept/Sell-In |  |
| 156 | 1.8.1.1.8 | Overall selling framework (incl. category growth, profitability, differentiation, External Relations story etc.) | 1w | 2013-10-03 | 2013-10-09 | 690 |  |  | 272.9d | 0d | Sales | Sales | Comm | Design | Commercial Concept/Sell-In |  |
| 157 | 1.8.1.2 | Identify Sales Samples needs/production strategy | 1w | 2014-05-01 | 2014-05-07 | 153SS |  |  | 712.6d | 0d | IDM | Sales/IDM | Comm | Design | Commercial Concept/Sell-In |  |
| 158 | 1.8.1.3 | **Bundling Strategy updated** | 77d | 2013-08-23 | 2013-12-13 |  |  |  | 305.9d |  | IDM | IL | Comm | Design |  |  |
| 159 | 1.8.1.3.1 | Pricing within the Bundle | 2w | 2013-08-23 | 2013-09-06 | 77, 405 |  |  | 397.9d | 0d | Sales | Sales | Comm | Design | Commercial Concept/Sell-In | Comm |
| 160 | 1.8.1.3.2 | Selling Strategy Inputs | 2mo | 2013-10-10 | 2013-12-13 | 156 |  |  | 272.9d | 0d | Sales | Sales | Comm | Design | Commercial Concept/Sell-In | Comm |
| 161 | 1.8.1.4 | Volume forecast agreed by Region | 1w | 2015-03-17 | 2015-03-23 | 517, 5FF-2w, 154 |  |  | 619.6d |  | A&I | A&I | Comm | Design | Commercial Concept/Sell-In |  |
| 162 | 1.8.1.5 | Pricing guidelines locked | 2w | 2013-09-09 | 2013-09-20 | 405, 159 |  |  | 397.9d | 124.5d | Sales/Finance | Sales/Finance | Comm | Design | Commercial Concept/Sell-In |  |
| 163 | 1.8.1.6 | Pricing & Sizing Strategy: Rationale Including Competitive Benchmarking, Customer Differentiation | 4mo | 2013-12-16 | 2014-04-30 | 405, 160 |  |  | 272.9d | 0d | Sales/Finance | Sales/Finance | Comm | Design | Commercial Concept/Sell-In |  |

Notes:
- 159: Tie to VL result for pricing

| ID | WBS | Task | Type | Duration | Start | Finish | Predecessors | Complete | Remaining | Total slack | Free slack | Text1 | Text2 | Text10 | Text27 | Text28 | LP | Text11 |
| --- | --- | --- | --- | --- | --- | --- | --- | --- | --- | --- | --- | --- | --- | --- | --- | --- | --- | --- |
| 164 | 1.8.1.7 | **Inventory Management** |  | 115d | 2013-11-01 | 2014-04-29 |  |  |  | 718.6d |  | SNO | IOL | Comm | Design |  |  |  |
| 165 | 1.8.1.7.1 | Runout plan |  | 4mo | 2013-11-01 | 2014-03-20 | 68SS |  |  | 718.6d | 0d | SNO | IOL | Comm | Design | Commercial Concept/Sell-In |  |  |
| 166 | 1.8.1.7.2 | Inventory mgmt plan |  | 1mo | 2014-03-21 | 2014-04-22 | 165 |  |  | 718.6d | 0d | SNO | IOL | Comm | Design | Commercial Concept/Sell-In |  |  |
| 167 | 1.8.1.7.3 | Develop transition plans and associated costs |  | 1w | 2014-04-23 | 2014-04-29 | 166 |  |  | 807.6d | 0d | SNO | SNO | Tech | Design | Commercial Concept/Sell-In |  |  |
| 168 | 1.8.1.8 | Update Customer Value Assessment (CVA) |  | 2w | 2015-01-21 | 2015-02-03 | 5FF-2mo |  |  | 653.6d |  | Sales | Sales | Comm | Design | Commercial Concept/Sell-In |  |  |
| 169 | 1.8.2 | **PC Commercial Readiness** |  | 572.5d? | 2013-03-04 A | 2015-06-29 |  | 9% | 520.96d? | 550.1d |  | Mktg | Mktg | Comm | Design |  |  |  |
| 170 | 1.8.2.1 | Shopper Market strategy developed |  | 2w | 2013-10-03 | 2013-10-16 | 152, 690 |  |  | 305.6d | 0d | Sales | Sales | Comm | Design | Commercial Concept/Sell-In |  |  |
| 171 | 1.8.2.2 | Initiative toolbox elements complete |  | 2d | 2015-02-02 | 2015-02-03 | 82, 5FF-2mo |  |  | 652.6d | 127d | Mktg | Mktg | Comm | Design | Commercial Concept/Sell-In |  |  |
| 172 | 1.8.2.3 | Trial Potential Assessment (TPA) completed |  | 1d | 2013-09-19 | 2013-09-19 | 275 |  |  | 982.6d |  | A&I | A&I | Comm | Design | Commercial Concept/Sell-In | LP |  |
| 173 | 1.8.2.4 | **Media Neutral Idea (MNI) Locked - Regional Updates** |  | 394.5d | 2013-03-04 A | 2014-10-03 |  |  | 394.5d | 728.1d |  | Mktg | Mktg | Comm | Design |  |  |  |
| 174 | 1.8.2.4.1 | **Path to Purchase (P2P) Development** |  | 5d | 2013-07-11 | 2013-07-17 |  |  |  | 1d |  | Mktg | Mktg | Comm | Design |  |  | Comm |
| 175 | 1.8.2.4.1.1 | Strategic Target Consumer Defined and Confirmed |  | 5d | 2013-07-11 | 2013-07-17 | 80, 81 |  |  | 1d | 0d | A&I | A&I | Comm | Design | Commercial Concept/Sell-In |  |  |
| 176 | 1.8.2.4.1.2 | Prime Prospect Holistic Profile including receptivity insights |  | 5d | 2013-07-11 | 2013-07-17 | 175SS |  |  | 1d |  | A&I | A&I | Comm | Design | Commercial Concept/Sell-In |  |  |
| 177 | 1.8.2.4.1.3 | Consumer Needs, Barriers to trial, Shopper needs, |  | 5d | 2013-07-11 | 2013-07-17 | 175SS |  |  | 1d |  | A&I | A&I | Comm | Design | Commercial Concept/Sell-In |  |  |
| 178 | 1.8.2.4.1.4 | Purchase barriers, channel preferences, and Point of Market Entry (POME) |  | 5d | 2013-07-11 | 2013-07-17 | 175SS |  |  | 1d |  | A&I | A&I | Comm | Design | Commercial Concept/Sell-In |  |  |
| 179 | 1.8.2.4.1.5 | Why target consumer is attractive for customer |  | 5d | 2013-07-11 | 2013-07-17 | 175SS |  |  | 1d |  | A&I | A&I | Comm | Design | Commercial Concept/Sell-In |  |  |
| 180 | 1.8.2.4.2 | **Creative Development** |  | 60d | 2013-03-04 A | 2013-05-28 |  |  | 60d | 1062.6d |  | Mktg | Mktg | Comm | Design |  |  | Comm |
| 181 | 1.8.2.4.2.1 | Update concepts to include any other relevant impacted brands/forms |  | 35d | 2013-03-04 | 2013-04-22 |  |  |  | 0d |  | Mktg | Mktg | Comm | Design | Commercial Concept/Sell-In |  |  |
| 182 | 1.8.2.4.2.2 | Concept Screener to include any other relevant impacted brands/forms |  | 25d | 2013-04-23 | 2013-05-28 | 181 |  |  | 1062.6d |  | A&I | A&I | Comm | Design | Commercial Concept/Sell-In |  |  |
| 183 | 1.8.2.4.2.3 | Confirm Claims on reco'd concepts |  | 5d | 2013-04-23 | 2013-04-29 | 181 |  |  | 0d |  | PR | PR | Tech | Design | Commercial Concept/Sell-In, New Claims |  |  |
| 184 | 1.8.2.4.2.4 | Concept approved for Virtual Launch | milestone | 0d | 2013-04-29 A | 2013-04-29 A | 183 | 100% |  |  |  | Mktg | Mktg | Comm | Design | Commercial Concept/Sell-In |  |  |
| 185 | 1.8.2.4.3 | **Concept Update work** |  | 35d | 2013-07-19 A | 2013-09-06 |  |  | 35d | 911.6d |  | Mktg | Mktg | Comm | Design |  |  |  |
| 186 | 1.8.2.4.3.1 | Ideation on Concepts and Claims |  | 2d | 2013-07-19 | 2013-07-22 | 408, 176, 177, 178, 179 |  |  | 0d |  | Mktg | Mktg | Comm | Design | Commercial Concept/Sell-In, New Claims |  |  |
| 187 | 1.8.2.4.3.2 | Claims Screener |  | 2d | 2013-07-23 | 2013-07-24 | 186 |  |  | 0d |  | PR | PR | Comm | Design | Commercial Concept/Sell-In, New Claims |  |  |
| 188 | 1.8.2.4.3.3 | Concept Iterations with GM Lead Team/Lead Mktg Agency Reps |  | 1d | 2013-07-25 | 2013-07-25 | 187 |  |  | 0d |  | Mktg | Mktg | Comm | Design | Commercial Concept/Sell-In |  |  |
| 189 | 1.8.2.4.3.4 | Legal Submission on Claims/Concepts |  | 1d | 2013-07-25 | 2013-07-25 | 187 |  |  | 939.6d | 0d | PR | PR | Comm | Design | Commercial Concept/Sell-In, New Claims |  |  |
| 190 | 1.8.2.4.3.5 | Concepts Washboard |  | 2d | 2013-07-26 | 2013-07-29 | 188 |  |  | 0d |  | A&I | A&I | Comm | Design | Commercial Concept/Sell-In |  |  |
| 191 | 1.8.2.4.3.6 | Legal Approval of Claims/Concepts |  | 2d | 2013-07-26 | 2013-07-29 | 189 |  |  | 939.6d | 10d | PR/Mktg | PR/Mktg | Comm | Design | Commercial Concept/Sell-In, New Claims |  |  |
| 192 | 1.8.2.4.3.7 | Final Approval with GM before Concept Evaluator |  | 1d | 2013-07-30 | 2013-07-30 | 190 |  |  | 0d |  | Mktg | Mktg | Comm | Design | Commercial Concept/Sell-In |  |  |
| 193 | 1.8.2.4.3.8 | Concept Evaluator |  | 5w | 2013-07-31 | 2013-09-04 | 192 |  |  | 0d |  | A&I | A&I | Comm | Design | Commercial Concept/Sell-In |  |  |
| 194 | 1.8.2.4.3.9 | Compile Results and Share |  | 2d | 2013-09-05 | 2013-09-06 | 193 |  |  | 0d |  | A&I | A&I | Comm | Design | Commercial Concept/Sell-In |  |  |
| 195 | 1.8.2.4.3.10 | Approval of Final Requalify Concept | milestone | 0d | 2013-09-06 A | 2013-09-06 A | 194 | 100% |  |  |  | Mktg | Mktg | Comm | Design | Commercial Concept/Sell-In |  |  |

| ID | WBS | Task | Type | Duration | Start | Finish | Predecessors | Complete | Remaining | Total slack | Free slack | Text1 | Text2 | Text10 | Text27 | Text28 | Text11 |
| --- | --- | --- | --- | --- | --- | --- | --- | --- | --- | --- | --- | --- | --- | --- | --- | --- | --- |
| 196 | 1.8.2.4.4 | **Commercialization Strategy Definition & Approval** |  | 263.5d | 2013-09-09 A | 2014-10-03 |  |  | 263.5d | 728.1d |  | Mktg | Mktg | Comm | Design |  |  |
| 197 | 1.8.2.4.4.1 | Update Claims for any variants that need to change based on work to date |  | 12d | 2013-09-09 | 2013-09-24 | 195 |  |  | 350.9d | 0d | Mktg | Mktg | Comm | Design | Commercial Concept/Sell-In, New Claims |  |
| 198 | 1.8.2.4.4.2 | Update Verbatims from Concept |  | 12d | 2013-09-09 | 2013-09-24 | 195 |  |  | 350.9d | 0d | Mktg | Mktg | Comm | Design | Commercial Concept/Sell-In |  |
| 199 | 1.8.2.4.4.3 | Review chgs with legal and do small technical testing for high risk areas |  | 4d | 2013-09-25 | 2013-09-30 | 197, 198 |  |  | 350.9d | 0d | Mktg | Mktg | Comm | Design | Commercial Concept/Sell-In |  |
| 200 | 1.8.2.4.4.4 | Place concept in test to confirm partiy |  | 9d | 2013-10-01 | 2013-10-11 | 199 |  |  | 350.9d | 0d | Mktg | Mktg | Comm | Design | Commercial Concept/Sell-In |  |
| 201 | 1.8.2.4.4.5 | Approval of new updated concept to move forward |  | 1d | 2013-10-14 | 2013-10-14 | 200 |  |  | 350.9d | 67.5d | Mktg | Mktg | Comm | Design | Commercial Concept/Sell-In |  |
| 202 | 1.8.2.4.4.6 | Creative/Communication brief development |  | 22d | 2013-09-09 | 2013-10-08 | 195 |  |  | 969.6d |  | Mktg | Mktg | Comm | Design | Commercial Concept/Sell-In | Comm |
| 203 | 1.8.2.4.4.7 | Creative/Communication Brief approval | milestone | 0d | 2013-10-21 A | 2013-10-21 A | 202, 201 | 100% |  |  |  | Mktg | Mktg | Comm | Design | Commercial Concept/Sell-In | Comm |
| 204 | 1.8.2.4.4.8 | Brief Creative team |  | 2.5w | 2013-10-22 | 2013-11-07 | 203 |  |  | 99.5d | 0d | Mktg | Mktg | Comm | Design | Commercial Concept/Sell-In | Comm |
| 205 | 1.8.2.4.4.9 | 1 st Client presentation (Top 1-3 Key Ideas) |  | 2.5w | 2013-11-07 | 2013-11-25 | 204 |  |  | 99.5d | 0d | Mktg | Mktg | Comm | Design | Commercial Concept/Sell-In | Comm |
| 206 | 1.8.2.4.4.10 | Creative/Communication Brief re-approved |  | 3mo | 2013-11-26 | 2014-03-13 | 205 |  |  | 99.5d | 0d | Mktg | Eng | Comm | Design | Commercial Concept/Sell-In |  |
| 207 | 1.8.2.4.4.11 | REDO - 1 st Client presentation (Top 1-3 Key Ideas) with GM |  | 34d | 2014-03-14 | 2014-05-01 | 206, 195 |  |  | 99.5d | 0d | Mktg | Eng | Comm | Design | Commercial Concept/Sell-In | Comm |
| 208 | 1.8.2.4.4.12 | Lead Testing (prep-4 and testing) |  | 1d | 2014-03-21 | 2014-03-21 | 207SS+1w |  |  | 127.5d | 28d | A&I | A&I | Comm | Design | Commercial Concept/Sell-In |  |
| 209 | 1.8.2.4.4.13 | Boards Approved - Lock MNI (incl revisions) |  | 2d | 2014-05-02 | 2014-05-05 | 208, 207 |  |  | 99.5d | 0d | Mktg | Eng | Comm | Design | Commercial Concept/Sell-In |  |
| 210 | 1.8.2.4.4.14 | Hand off MNI to IAT |  | 1d | 2014-05-06 | 2014-05-06 | 209 |  |  | 99.5d | 0d | Mktg | Eng | Comm | Design | Commercial Concept/Sell-In |  |
| 211 | 1.8.2.4.4.15 | Call for Work Development - start CPC |  | 7w | 2013-11-07 | 2014-01-10 | 204 |  |  | 258d | 0d | Mktg | Mktg | Comm | Design | Commercial Concept/Sell-In | Comm |
| 212 | 1.8.2.4.4.16 | Kick-off Agency work on Elements to Pre-Table Top | milestone | 0d | 2014-10-03 A | 2014-10-03 A | 209, 207 | 100% |  |  |  | Mktg | Eng | Comm | Design | Commercial Concept/Sell-In |  |
| 213 | 1.8.2.5 | **Pre Table Top** |  | 551.9d | 2013-03-04 A | 2015-05-29 |  |  | 551.9d | 570.7d |  | Mktg | Eng | Comm | Design |  |  |
| 214 | 1.8.2.5.1 | **Claims Development** |  | 342d | 2013-03-04 A | 2014-07-21 |  |  | 342d | 780.6d |  | Mktg | Mktg | Comm | Design |  |  |
| 215 | 1.8.2.5.1.1 | Claims Demo Brief Updated - R1 |  | 5w | 2013-08-13 | 2013-09-17 | 191, 85 |  |  | 929.6d | 0d | Mktg | Mktg | Comm | Design | New Claims |  |
| 216 | 1.8.2.5.1.2 | Assess the Claims Landscape |  | 1w | 2014-03-18 | 2014-03-24 | 571FS+2w, 215 |  |  | 812.6d | 0d | Mktg | Mktg | Comm | Design | New Claims |  |
| 217 | 1.8.2.5.1.3 | Prepare Claims Screener List |  | 1w | 2014-03-25 | 2014-03-31 | 216 |  |  | 812.6d | 0d | Mktg | Mktg | Comm | Design | New Claims |  |
| 218 | 1.8.2.5.1.4 | Approve with Legal and PR |  | 1w | 2014-04-01 | 2014-04-07 | 217 |  |  | 812.6d | 0d | Mktg | Mktg | Comm | Design | New Claims |  |
| 219 | 1.8.2.5.1.5 | Claims Demo Brief Updated - R2 |  | 2d | 2014-01-10 | 2014-01-14 | 211 |  |  | 258d | 0d | Mktg | Mktg | Comm | Design | New Claims | Comm |

| ID | WBS | Task | Type | Duration | Start | Finish | Predecessors | Complete | Remaining | Total slack | Free slack | Text1 | Text2 | LP | Text10 | Text27 | Text28 |
| --- | --- | --- | --- | --- | --- | --- | --- | --- | --- | --- | --- | --- | --- | --- | --- | --- | --- |
| 220 | 1.8.2.5.1.6 | **Claims (Screener) Qualification (FMOT) R1** |  | 40d | 2014-04-08 | 2014-06-04 |  |  |  | 812.6d |  | A&I | A&I | LP | Comm | Design | New Claims |
| 221 | 1.8.2.5.1.6.1 | Approve Claims for Submission |  | 1w | 2014-04-08 | 2014-04-14 | 218 |  |  | 812.6d | 0d | A&I | A&I | LP | Comm | Design | New Claims |
| 222 | 1.8.2.5.1.6.2 | Field Claims |  | 3w | 2014-04-15 | 2014-05-06 | 221 |  |  | 812.6d | 0d | A&I | A&I | LP | Comm | Design | New Claims |
| 223 | 1.8.2.5.1.6.3 | Claims Qualification Results Available |  | 3d | 2014-05-07 | 2014-05-09 | 222 |  |  | 812.6d | 0d | A&I | A&I | LP | Comm | Design | New Claims |
| 224 | 1.8.2.5.1.6.4 | Claims Approved for Use |  | 17d | 2014-05-12 | 2014-06-04 | 223 |  |  | 812.6d |  | A&I | A&I | LP | Comm | Design | New Claims |
| 225 | 1.8.2.5.1.7 | **Claims Strengthening Test (variant X)** |  | 322d | 2013-03-04 A | 2014-06-20 |  |  | 322d | 800.6d |  | PR | PR | LP | Comm | Design | New Claims |
| 226 | 1.8.2.5.1.7.1 | Define Consumer Study CRP |  | 1w | 2014-02-25 | 2014-03-03 | 571FS-1w |  |  | 833.6d | 0d | A&I | A&I | LP | Comm | Design | New Claims |
| 227 | 1.8.2.5.1.7.2 | Determine legs for Claims S |  | 1w | 2014-02-25 | 2014-03-03 | 226SS |  |  | 877.6d |  | A&I | A&I | LP | Comm | Design | New Claims |
| 228 | 1.8.2.5.1.7.3 | CS CRP Approved | milestone | 0d | 2014-03-03 A | 2014-03-03 A | 227 | 100% |  |  |  | A&I | A&I | LP | Comm | Design | New Claims |
| 229 | 1.8.2.5.1.7.4 | Success Criteria Per Leg Locked for CS |  | 49w | 2013-03-04 A | 2014-03-03 | 228FF |  | 49w | 828.6d | 0d | PD | PR | LP | Tech | Design | New Claims |
| 230 | 1.8.2.5.1.7.5 | **Product Prep for CS** |  | 37d | 2014-03-04 | 2014-04-24 |  |  |  | 828.6d |  | PD | PD | LP | Tech | Design | New Claims |
| 231 | 1.8.2.5.1.7.5.1 | Identify RM's needed for wide range of locked formulas |  | 1d | 2014-03-04 | 2014-03-04 | 226SS, 229 |  |  | 828.6d | 0d | Process | Process | LP | Tech | Design | New Claims |
| 232 | 1.8.2.5.1.7.5.2 | Order RM's for CS |  | 12d | 2014-03-05 | 2014-03-20 | 231, 226SS |  |  | 828.6d | 0d | Process | Process | LP | Tech | Design | New Claims |
| 233 | 1.8.2.5.1.7.5.3 | RM's Matls Received \ for CS |  | 1d | 2014-03-21 | 2014-03-21 | 232 |  |  | 828.6d | 0d | Process | Process | LP | Tech | Design | New Claims |
| 234 | 1.8.2.5.1.7.5.4 | **CS Product Prep** |  | 23d | 2014-03-24 | 2014-04-24 |  |  |  | 828.6d |  | Process | Process |  | Tech | Design | New Claims |
| 235 | 1.8.2.5.1.7.5.4.1 | Preview batch making for CS |  | 2d | 2014-03-24 | 2014-03-25 | 233 |  |  | 828.6d | 0d | Process | Process | LP | Tech | Design | New Claims |
| 236 | 1.8.2.5.1.7.5.4.2 | Preview batch stability for CS |  | 2w | 2014-03-26 | 2014-04-08 | 235 |  |  | 828.6d | 0d | PR | PR | LP | Tech | Design | New Claims |
| 237 | 1.8.2.5.1.7.5.4.3 | Renew CS MFC's (Sport) |  | 2w | 2014-03-24 | 2014-04-04 | 235SS |  |  | 833.6d | 0d | Process | Process | LP | Tech | Design | New Claims |
| 238 | 1.8.2.5.1.7.5.4.4 | Final product making for CS |  | 2d | 2014-04-09 | 2014-04-10 | 236 |  |  | 828.6d | 0d | Process | Process | LP | Tech | Design | New Claims |
| 239 | 1.8.2.5.1.7.5.4.5 | Final product testing for CS (approval, documents, etc) |  | 14ed | 2014-04-10 | 2014-04-24 | 238 |  |  | 3551.6d | 1.88d | PR | PR | LP | Tech | Design | New Claims |
| 240 | 1.8.2.5.1.7.6 | **Packout Prep for CS** |  | 292d | 2013-03-04 | 2014-05-08 |  |  |  | 830.6d |  | PR | Process | LP | Tech | Design | New Claims |
| 241 | 1.8.2.5.1.7.6.1 | Order Packing Materials |  | 1w | 2014-03-04 | 2014-03-10 | 228 |  |  | 872.6d |  | PR | PR |  | Tech | Design | New Claims |
| 242 | 1.8.2.5.1.7.6.2 | Receive CS Packing Materials |  | 35d | 2013-03-04 | 2013-04-22 |  |  |  | 1076.6d | 247d | PR | Process | LP | Tech | Design | New Claims |
| 243 | 1.8.2.5.1.7.6.3 | **CS Packing** |  | 8d | 2014-04-25 | 2014-05-06 |  |  |  | 829.6d |  | PR | Process | LP | Tech | Design | New Claims |
| 244 | 1.8.2.5.1.7.6.3.1 | Pack-out CS Product for CS |  | 1d | 2014-04-25 | 2014-04-25 | 236, 239, 242 |  |  | 829.6d | 0d | PD | PR | LP | Tech | Design | New Claims |
| 245 | 1.8.2.5.1.7.6.3.2 | Micro CS Product for CS |  | 7d | 2014-04-28 | 2014-05-06 | 244 |  |  | 829.6d | 0d | PD | PR | LP | Tech | Design | New Claims |

| ID | WBS | Task | Type | Duration | Start | Finish | Predecessors | Complete | Remaining | Total slack | Free slack | Text1 | Text2 | LP | Text10 | Text27 | Text28 |
| --- | --- | --- | --- | --- | --- | --- | --- | --- | --- | --- | --- | --- | --- | --- | --- | --- | --- |
| 246 | 1.8.2.5.1.7.6.4 | **CS Test Materials/ Clearance** |  | 22d | 2014-04-07 | 2014-05-07 |  |  |  | 831.6d |  | PR | PR | LP | Tech | Design | New Claims |
| 247 | 1.8.2.5.1.7.6.4.1 | Submit SMART |  | 4w | 2014-04-07 | 2014-05-05 | 237 |  |  | 833.6d |  | PR | PR | LP | Tech | Design | New Claims |
| 248 | 1.8.2.5.1.7.6.4.2 | Complete SMART |  | 1d | 2014-05-07 | 2014-05-07 | 245, 258 |  |  | 829.6d | 0d | PR | PR | LP | Tech | Design | New Claims |
| 249 | 1.8.2.5.1.7.6.5 | Product shipped for CS |  | 1d | 2014-05-08 | 2014-05-08 | 244, 248 |  |  | 829.6d | 0d | PD | PR | LP | Tech | Design | New Claims |
| 250 | 1.8.2.5.1.7.7 | **Concept Delivery for CS** |  | 43d | 2014-03-04 | 2014-05-02 |  |  |  | 809.6d |  | Mktg | Mktg | LP | Comm | Design | New Claims |
| 251 | 1.8.2.5.1.7.7.1 | Conduct Client Objectives Meeting - Round 1 |  | 2d | 2014-03-04 | 2014-03-05 | 228 |  |  | 809.6d | 0d | A&I | A&I | LP | Comm | Design | New Claims |
| 252 | 1.8.2.5.1.7.7.2 | Conduct Client Objectives Meeting - Round 2 |  | 1d | 2014-03-20 | 2014-03-20 | 251FS+2w |  |  | 853.6d | 0d | A&I | A&I | LP | Comm | Design | New Claims |
| 253 | 1.8.2.5.1.7.7.3 | **CS Concept** |  | 41d | 2014-03-06 | 2014-05-02 |  |  |  | 809.6d |  | Mktg | Mktg | LP | Comm | Design | New Claims |
| 254 | 1.8.2.5.1.7.7.3.1 | Draft After Use Questionnaire Delivered (3/30) |  | 7d | 2014-03-06 | 2014-03-14 | 251 |  |  | 809.6d | 0d | A&I | A&I | LP | Comm | Design | New Claims |
| 255 | 1.8.2.5.1.7.7.3.2 | Questions Finalized for Pre-Screening OQ Groups |  | 6d | 2014-03-28 | 2014-04-04 | 252FS+1w |  |  | 853.6d |  | A&I | A&I | LP | Comm | Design | New Claims |
| 256 | 1.8.2.5.1.7.7.3.3 | Pre- Screening OQ Groups |  | 6d | 2014-04-25 | 2014-05-02 | 239, 252FS+1w |  |  | 834.6d |  | A&I | A&I | LP | Comm | Design | New Claims |
| 257 | 1.8.2.5.1.7.7.3.4 | Final AU CS Questionnaire Input - Team |  | 1w | 2014-03-17 | 2014-03-21 | 254 |  |  | 809.6d | 0d | Mktg | Mktg | LP | Comm | Design | New Claims |
| 258 | 1.8.2.5.1.7.7.3.5 | Provide AU CS Questionnaire Feedback |  | 2d | 2014-03-24 | 2014-03-25 | 257 |  |  | 809.6d | 29d | A&I | A&I | LP | Comm | Design | New Claims |
| 259 | 1.8.2.5.1.7.8 | **CS Execution** |  | 20d | 2014-05-05 A | 2014-06-03 |  |  | 20d | 813.6d |  | A&I | A&I | LP | Comm | Design | New Claims |
| 260 | 1.8.2.5.1.7.8.1 | CS Product Organized for Placement |  | 1d | 2014-05-09 | 2014-05-09 | 249 |  |  | 829.6d |  | A&I | A&I | LP | Comm | Design | New Claims |
| 261 | 1.8.2.5.1.7.8.2 | CS Start Date/Field Concept | milestone | 0d | 2014-05-05 A | 2014-05-05 A | 256, 260, 258 | 100% |  |  |  | A&I | A&I | LP | Comm | Design | New Claims |
| 262 | 1.8.2.5.1.7.8.3 | CS Usage |  | 2w | 2014-05-06 | 2014-05-19 | 261 |  |  | 780.6d | 0d | A&I | A&I | LP | Comm | Design | New Claims |
| 263 | 1.8.2.5.1.7.8.4 | Afteruse Field Start Date |  | 10d | 2014-05-07 | 2014-05-20 | 262SS+1d, 258 |  |  | 780.6d | 0d | A&I | A&I | LP | Comm | Design | New Claims |
| 264 | 1.8.2.5.1.7.8.5 | T2/3 Box Respondents Identified |  | 1w | 2014-05-21 | 2014-05-28 | 263 |  |  | 780.6d | 0d | A&I | A&I | LP | Comm | Design | New Claims |
| 265 | 1.8.2.5.1.7.8.6 | Scheduling of Respondents |  | 4d | 2014-05-29 | 2014-06-03 | 264 |  |  | 780.6d | 0d | A&I | A&I | LP | Comm | Design | New Claims |
| 266 | 1.8.2.5.1.7.9 | **CS Results** |  | 17d | 2014-05-29 | 2014-06-20 |  |  |  | 780.6d |  | A&I | A&I | LP | Comm | Design | New Claims |
| 267 | 1.8.2.5.1.7.9.1 | CS At Home Interviews (Qualitative) |  | 1w | 2014-06-04 | 2014-06-10 | 265 |  |  | 780.6d | 0d | A&I | A&I | LP | Comm | Design | New Claims |
| 268 | 1.8.2.5.1.7.9.2 | CS Group Interviews |  | 1w | 2014-06-11 | 2014-06-17 | 267 |  |  | 780.6d | 0d | A&I | A&I | LP | Comm | Design | New Claims |
| 269 | 1.8.2.5.1.7.9.3 | CS Quantitative Results |  | 2w | 2014-05-29 | 2014-06-11 | 264 |  |  | 784.6d | 4d | A&I | A&I | LP | Comm | Design | New Claims |
| 270 | 1.8.2.5.1.7.9.4 | CS Top Claims Available for Downy |  | 3d | 2014-06-18 | 2014-06-20 | 269, 268 |  |  | 780.6d | 0d | A&I | A&I | LP | Comm | Design | New Claims |

| ID | WBS | Task | Duration | Start | Finish | Predecessors | Remaining | Total slack | Free slack | Text1 | Text2 | LP | Text10 | Text27 | Text28 | Text11 |
| --- | --- | --- | --- | --- | --- | --- | --- | --- | --- | --- | --- | --- | --- | --- | --- | --- |
| 271 | 1.8.2.5.1.8 | **Claims Qualification (FMOT) R2** | 20d | 2014-06-23 | 2014-07-21 |  |  | 780.6d |  | A&I | A&I | LP | Comm | Design | New Claims |  |
| 272 | 1.8.2.5.1.8.1 | Approve Claims for Submission | 2d | 2014-06-23 | 2014-06-24 | 270 |  | 780.6d | 0d | A&I | A&I | LP | Comm | Design | New Claims |  |
| 273 | 1.8.2.5.1.8.2 | Field Claims | 3w | 2014-06-25 | 2014-07-16 | 272 |  | 780.6d | 0d | A&I | A&I | LP | Comm | Design | New Claims |  |
| 274 | 1.8.2.5.1.8.3 | Claims Qualification Results Available | 3d | 2014-07-17 | 2014-07-21 | 273 |  | 780.6d |  | A&I | A&I | LP | Comm | Design | New Claims |  |
| 275 | 1.8.2.5.1.9 | FMOT guidelines | 1d | 2013-09-18 | 2013-09-18 | 150, 215 |  | 982.6d | 0d | Mktg | Mktg |  | Comm | Design | New Claims |  |
| 276 | 1.8.2.5.1.10 | Claims summary updated - R3 | 2d | 2014-01-14 | 2014-01-16 | 219 |  | 258d |  | Mktg | Eng |  | Comm | Design | New Claims |  |
| 277 | 1.8.2.5.2 | Claims Summary Updated - R4 (incl agency needs) | 1w | 2015-02-10 | 2015-02-17 | 219, 276, 287 |  | 644.1d |  | Mktg | Eng |  | Comm | Design | Commercial Concept/Sell-In, New Claims |  |
| 278 | 1.8.2.5.3 | Claims Summary Locked (All) | 8d | 2015-05-19 | 2015-05-29 | 288 |  | 570.7d |  | Mktg | Eng |  | Comm | Design | Commercial Concept/Sell-In, New Claims |  |
| 279 | 1.8.2.5.4 | **Marketing Elements Drafted** | 181.5d | 2014-05-07 | 2015-02-06 |  |  | 0d |  | Mktg | Eng |  | Comm | Design | Commercial Concept/Sell-In, New Claims |  |
| 280 | 1.8.2.5.4.1 | **TV Plans** | 181.5d | 2014-05-07 | 2015-02-06 |  |  | 0d |  | Mktg | Eng |  | Comm | Design | Commercial Concept/Sell-In, New Claims |  |
| 281 | 1.8.2.5.4.1.1 | Agency to refine boards for Digimatics | 1w | 2014-05-07 | 2014-05-13 | 210 |  | 99.5d |  | Mktg | Eng |  | Comm | Design | Commercial Concept/Sell-In, New Claims |  |
| 282 | 1.8.2.5.4.1.2 | Lock on Bds for Digimatics | 3.5mo | 2014-10-03 | 2015-02-06 | 212, 281 |  | 0d |  | Mktg | Eng |  | Comm | Design | Commercial Concept/Sell-In, New Claims |  |
| 283 | 1.8.2.5.4.2 | Print Plans | 5w | 2014-10-03 | 2014-11-07 | 212 |  | 52d |  | Mktg | Eng |  | Comm | Design | Commercial Concept/Sell-In, New Claims |  |
| 284 | 1.8.2.5.4.3 | Digital Plans | 5w | 2014-10-03 | 2014-11-07 | 212 |  | 52d |  | Mktg | Eng |  | Comm | Design | Commercial Concept/Sell-In, New Claims |  |
| 285 | 1.8.2.5.4.4 | In Store Plans | 5w | 2014-10-03 | 2014-11-07 | 212 |  | 52d |  | Mktg | Eng |  | Comm | Design | Commercial Concept/Sell-In, New Claims |  |
| 286 | 1.8.2.5.4.5 | Media Plans | 5w | 2014-10-03 | 2014-11-07 | 212 |  | 52d |  | Mktg | Eng |  | Comm | Design | Commercial Concept/Sell-In, New Claims |  |
| 287 | 1.8.2.5.5 | Review of Pre TableTop Documents | 2d | 2015-02-06 | 2015-02-10 | 276, 280, 283, 284, 285, 286, 211 |  | 0d |  | Mktg | Eng |  | Comm | Design | Commercial Concept/Sell-In |  |
| 288 | 1.8.2.5.6 | Approve Pre TableTop | 3.2mo | 2015-02-10 | 2015-05-19 | 287 |  | 0d |  | Mktg | Eng |  | Comm | Design | Commercial Concept/Sell-In |  |
| 289 | 1.8.2.6 | **PC Artwork** | 75d | 2013-06-17 A | 2013-10-01 |  | 75d | 974.6d |  | Design | Design |  | Comm | Design |  |  |
| 290 | 1.8.2.6.1 | **Design Exploratory & Review** | 75d | 2013-06-17 A | 2013-10-01 |  | 75d | 974.6d |  | Design | Design |  | Comm | Design |  |  |
| 291 | 1.8.2.6.1.1 | 2D Package Qualifications | 1w | 2013-06-17 | 2013-06-21 | 140, 145 |  | 974.6d | 0d | Design | Design |  | Comm | Design | New Artwork, New Package, New Brand Architecture |  |
| 292 | 1.8.2.6.1.2 | FMOT Claim & Qualifications | 1w | 2013-06-24 | 2013-06-28 | 291 |  | 974.6d | 0d | Design | Design |  | Comm | Design | New Artwork, New Package, New Brand Architecture |  |
| 293 | 1.8.2.6.1.3 | Lead package commercially qualified | 1w | 2013-07-01 | 2013-07-08 | 292 |  | 974.6d | 0d | Design | Design |  | Comm | Design | New Artwork, New Package, New Brand Architecture |  |
| 294 | 1.8.2.6.1.4 | Pkg design meets MSR | 1w | 2013-07-09 | 2013-07-15 | 293 |  | 974.6d | 0d | Design | Design |  | Comm | Design | New Artwork, New Package, New Brand Architecture |  |
| 295 | 1.8.2.6.1.5 | Design review with Design Manager | 1d | 2013-07-16 | 2013-07-16 | 294 |  | 974.6d | 0d | Design | Design |  | Comm | Design | New Artwork, New Package, New Brand Architecture |  |
| 296 | 1.8.2.6.1.6 | 1st Design Refinements | 5d | 2013-07-17 | 2013-07-23 | 295 |  | 974.6d | 0d | Design | Design |  | Comm | Design | New Artwork, New Package, New Brand Architecture |  |
| 297 | 1.8.2.6.1.7 | Round 1 - Review mtg w/ "C"' | 1d | 2013-07-24 | 2013-07-24 | 296 |  | 974.6d | 0d | Design | Design |  | Comm | Design | New Artwork, New Package, New Brand Architecture |  |
| 298 | 1.8.2.6.1.8 | Prelim. Legal Review with Legal- Name and Designs | 1d | 2013-07-25 | 2013-07-25 | 296, 297 |  | 974.6d | 0d | Design | Design |  | Comm | Design | New Artwork, New Package, New Brand Architecture |  |
| 299 | 1.8.2.6.1.9 | 2nd Design Refinements | 3d | 2013-07-26 | 2013-07-30 | 298 |  | 974.6d | 0d | Design | Design |  | Comm | Design | New Artwork, New Package, New Brand Architecture |  |
| 300 | 1.8.2.6.1.10 | Create stimulus for research | 2w | 2013-07-31 | 2013-08-13 | 299 |  | 974.6d | 0d | Design | Design |  | Comm | Design | New Artwork, New Package, New Brand Architecture |  |
| 301 | 1.8.2.6.1.11 | Package & Naming Approval | 1d | 2013-07-26 | 2013-07-26 | 298 |  | 986.6d | 12d | Design | Design |  | Comm | Design | New Artwork, New Package, New Brand Architecture |  |
| 302 | 1.8.2.6.1.12 | Qualitative Research | 5d | 2013-08-14 | 2013-08-20 | 300, 301 |  | 974.6d | 0d | A&I | A&I |  | Comm | Design | New Artwork, New Package, New Brand Architecture |  |
| 303 | 1.8.2.6.1.13 | Meeting w/ "A" Research findings | 1d | 2013-08-21 | 2013-08-21 | 302 |  | 974.6d | 0d | A&I | A&I |  | Comm | Design | New Artwork, New Package, New Brand Architecture |  |
| 304 | 1.8.2.6.1.14 | Research Learnings & Refinements | 12d | 2013-08-22 | 2013-09-09 | 303 |  | 974.6d | 0d | A&I | A&I |  | Comm | Design | New Artwork, New Package, New Brand Architecture |  |
| 305 | 1.8.2.6.1.15 | Pkg design meets MSR | 1w | 2013-09-10 | 2013-09-16 | 304 |  | 985.6d |  | Design | Design |  | Comm | Design | New Artwork, New Package, New Brand Architecture |  |
| 306 | 1.8.2.6.1.16 | Prelim. Legal Review with Legal- Name and Designs | 1d | 2013-09-10 | 2013-09-10 | 304 |  | 974.6d | 0d | Design | Design |  | Comm | Design | New Artwork, New Package, New Brand Architecture |  |
| 307 | 1.8.2.6.1.17 | Approve Shelf Views/Quals Stimulus (ex. Bottle color, labels/naming/caps) | 1d | 2013-09-11 | 2013-09-11 | 306 |  | 974.6d | 0d | Design | Design |  | Comm | Design | New Artwork, New Package, New Brand Architecture | Comm |
| 308 | 1.8.2.6.1.18 | Continued Revisions on Design | 6d | 2013-09-12 | 2013-09-19 | 307 |  | 974.6d | 0d | Design | Agency |  | Comm | Design | New Artwork, New Package, New Brand Architecture |  |

| ID | WBS | Task | Type | Duration | Start | Finish | Predecessors | Complete | Remaining | Total slack | Free slack | Text1 | Text2 | Text10 | Text27 | Text28 | LP | Text11 |
| --- | --- | --- | --- | --- | --- | --- | --- | --- | --- | --- | --- | --- | --- | --- | --- | --- | --- | --- |
| 309 | 1.8.2.6.1.19 | **Qualitatives (pkg color, label with collections, shelf views)** |  | 47d | 2013-07-11 A | 2013-09-17 |  |  | 47d | 984.6d |  | A&I | Ale | Comm | Design |  |  |  |
| 310 | 1.8.2.6.1.19.1 | **Shelf View** |  | 5d | 2013-09-11 | 2013-09-17 |  |  |  | 984.6d |  |  |  | Comm | Design |  |  |  |
| 311 | 1.8.2.6.1.19.1.1 | Determine Images needed for Shelf View (get VL shelf) |  | 1d | 2013-09-11 | 2013-09-11 | 306 |  |  | 984.6d | 0d | IDM | IL | Comm | Design | New Artwork, New Package, New Brand Architecture |  |  |
| 312 | 1.8.2.6.1.19.1.2 | Deliver Images to Agency for Shelf Views |  | 2d | 2013-09-12 | 2013-09-13 | 311 |  |  | 984.6d | 0d | Design | Agency | Comm | Design | New Artwork, New Package, New Brand Architecture |  |  |
| 313 | 1.8.2.6.1.19.1.3 | Update VL shelves with other brand Images |  | 2d | 2013-09-16 | 2013-09-17 | 312 |  |  | 984.6d |  | Design | Agency | Comm | Design | New Artwork, New Package, New Brand Architecture |  |  |
| 314 | 1.8.2.6.1.19.2 | Determine Stimulus with A&I/Design | milestone | 0d | 2013-07-11 A | 2013-07-11 A | 313 | 100% |  |  |  | A&I/Design | A&I/Design | Comm | Design | New Artwork, New Package, New Brand Architecture |  |  |
| 315 | 1.8.2.6.1.19.3 | Develop Stimulus with A&I/Design |  | 2d | 2013-07-12 | 2013-07-15 | 314 |  |  | 1027.6d | 0d | Design | Design | Comm | Design | New Artwork, New Package, New Brand Architecture |  |  |
| 316 | 1.8.2.6.1.19.4 | Conduct Dec. Quals |  | 2d | 2013-07-16 | 2013-07-17 | 315 |  |  | 1027.6d |  | A&I | A&I | Comm | Design | New Artwork, New Package, New Brand Architecture |  |  |
| 317 | 1.8.2.6.1.19.5 | Summarize Dec. Qual Results | milestone | 0d | 2013-07-17 A | 2013-07-17 A | 316 | 100% |  |  |  | A&I | A&I | Comm | Design | New Artwork, New Package, New Brand Architecture |  |  |
| 318 | 1.8.2.6.1.20 | Continued Revisions on Design |  | 6d | 2013-09-20 | 2013-09-27 | 317, 308 |  |  | 974.6d | 0d | Design | Agency | Comm | Design | New Artwork, New Package, New Brand Architecture |  |  |
| 319 | 1.8.2.6.1.21 | Round 3 of Progress since Quals |  | 2d | 2013-09-30 | 2013-10-01 | 318 |  |  | 974.6d |  | Design | Design | Comm | Design | New Artwork, New Package, New Brand Architecture |  |  |
| 320 | 1.8.2.6.1.22 | Prelim. Legal Review with Legal- Name and Designs |  | 1w | 2013-09-20 | 2013-09-26 | 318SS |  |  | 977.6d |  | Design | Design | Comm | Design | New Artwork, New Package, New Brand Architecture | LP | Comm |
| 321 | 1.8.2.6.1.23 | GM Approve Pkg Revisions (colors, artwork, etc) | milestone | 0d | 2013-07-29 A | 2013-07-29 A | 319, 320 | 100% |  |  |  | IDM | IL | Comm | Design | New Artwork, New Package, New Brand Architecture |  |  |
| 322 | 1.8.2.7 | **Learning Plan** |  | 572.5d? | 2013-03-04 A | 2015-06-29 |  | 15% | 485.61d? | 550.1d |  | A&I | A&I | Comm | Design |  | LP |  |
| 323 | 1.8.2.7.1 | **2D BISIP** |  | 163d | 2013-03-04 A | 2013-10-22 |  |  | 163d | 959.6d |  | A&I | A&I | Comm | Design |  | LP |  |
| 324 | 1.8.2.7.1.1 | Kickoff 2D Work (A&I mtg-2, Agency Mtg-1) |  | 6d | 2013-03-04 | 2013-03-11 |  |  |  | 1113.6d | 0d | IDM/A&I | A&I/IL | Comm | Design | New Artwork, New Package, New Brand Architecture |  |  |
| 325 | 1.8.2.7.1.2 | Approve 2D Scope and PACE |  | 1d | 2013-03-12 | 2013-03-12 | 324 |  |  | 1115.6d |  | A&I | A&I | Comm | Design | New Artwork, New Package, New Brand Architecture |  |  |
| 326 | 1.8.2.7.1.3 | Develop the Shelf POG’s for 2D |  | 1.5d | 2013-03-12 | 2013-03-13 | 324 |  |  | 1113.6d | 0d | Sales | Sales | Comm | Design | New Artwork, New Package, New Brand Architecture |  |  |
| 327 | 1.8.2.7.1.4 | Decision for Footprints/Sizes for 2D BISI-P |  | 1.5d | 2013-03-13 | 2013-03-14 | 326 |  |  | 1113.6d |  | Sales | Sales/Nate | Comm | Design | New Artwork, New Package, New Brand Architecture |  |  |
| 328 | 1.8.2.7.1.5 | Lock Shelf POG’s and label spots/develop SKU list/number coding | milestone | 0d | 2013-03-14 A | 2013-03-14 A | 327, 325 | 100% |  |  |  | IDM/Sales | IL/Sales | Comm | Design | New Artwork, New Package, New Brand Architecture |  |  |
| 329 | 1.8.2.7.1.6 | Decision for SKUs for 2D BISI-P – complete SKU list/number coding document |  | 6d | 2013-03-15 | 2013-03-22 | 328 |  |  | 438.1d | 88d | Mktg | Mktg | Comm | Design | New Artwork, New Package, New Brand Architecture |  |  |
| 330 | 1.8.2.7.1.7 | Send DRAFT shelf to PRS and receive questionnaire from PRS |  | 3d | 2013-03-15 | 2013-03-19 | 328 |  |  | 454.1d | 0d | A&I/Sales | A&I/Sales | Comm | Design | New Artwork, New Package, New Brand Architecture |  |  |
| 331 | 1.8.2.7.1.8 | Revise Questionnaire if needed |  | 6d | 2013-03-20 | 2013-03-27 | 330 |  |  | 454.1d | 104d | A&I | A&I | Comm | Design | New Artwork, New Package, New Brand Architecture |  |  |
| 332 | 1.8.2.7.1.9 | Time when Final Images for 2D BISI-P (barring GM approval of overall shelf) |  | 7d | 2013-07-30 | 2013-08-07 | 321, 329 |  |  | 350.1d | 0d | Design | Agency | Comm | Design | New Artwork, New Package, New Brand Architecture |  |  |
| 333 | 1.8.2.7.1.10 | Send final 2D BISI-P shelf to P&G for GM review on 24th |  | 1d | 2013-08-08 | 2013-08-08 | 332 |  |  | 350.1d | 0d | A&I | A&I | Comm | Design | New Artwork, New Package, New Brand Architecture |  |  |
| 334 | 1.8.2.7.1.11 | Send any last minute changes on 2D BISI-P Images to PRS by noon EST |  | 1d | 2013-08-23 | 2013-08-23 | 335 |  |  | 350.1d | 0d | Design | Design/Agency | Comm | Design | New Artwork, New Package, New Brand Architecture |  |  |
| 335 | 1.8.2.7.1.12 | Approval of 2D BISI-P Submissions (chose between options if necessary) |  | 2w | 2013-08-09 | 2013-08-22 | 333 |  |  | 350.1d | 0d | A&I/Design | A&I/Design | Comm | Design | New Artwork, New Package, New Brand Architecture |  |  |
| 336 | 1.8.2.7.1.13 | Prepare stimulus for 2D BISI-P |  | 6d | 2013-08-26 | 2013-09-03 | 334, 331 |  |  | 350.1d | 0d | A&I | PRS | Comm | Design | New Artwork, New Package, New Brand Architecture |  |  |
| 337 | 1.8.2.7.1.14 | Conduct 2D BISI-P |  | 25d | 2013-09-04 | 2013-10-08 | 336 |  |  | 350.1d | 0d | A&I | A&I | Comm | Design | New Artwork, New Package, New Brand Architecture |  |  |
| 338 | 1.8.2.7.1.15 | Results, Design Team Approval – Top Line Planned Changes Approved |  | 2w | 2013-10-09 | 2013-10-22 | 337 |  |  | 959.6d |  | A&I | A&I | Comm | Design | New Artwork, New Package, New Brand Architecture |  |  |

| ID | WBS | Task | Type | Duration | Start | Finish | Predecessors | Complete | Remaining | Total slack | Free slack | Text1 | Text2 | LP | Text10 | Text27 | Text28 | Text11 |
| --- | --- | --- | --- | --- | --- | --- | --- | --- | --- | --- | --- | --- | --- | --- | --- | --- | --- | --- |
| 339 | 1.8.2.7.2 | **3D BRIC Shelf Test** |  | 140d | 2013-03-04 A | 2013-09-19 |  |  | 140d | 982.6d |  | A&I | A&I | LP | Comm | Design |  |  |
| 340 | 1.8.2.7.2.1 | Kick off 3D Shelf Test Work |  | 6d | 2013-03-04 | 2013-03-11 |  |  |  | 1060.6d | 0d | A&I | A&I |  | Comm | Design | New Artwork, New Package, New Brand Architecture |  |
| 341 | 1.8.2.7.2.2 | Approve Scope and PACE |  | 1d | 2013-03-12 | 2013-03-12 | 340 |  |  | 1060.6d | 0d | IDM/A&I | A&I/IL |  | Comm | Design | New Artwork, New Package, New Brand Architecture |  |
| 342 | 1.8.2.7.2.3 | Develop the Shelf POG’s 3D |  | 1.5d | 2013-03-12 | 2013-03-13 | 340 |  |  | 1113.6d | 0d | Sales | Sales |  | Comm | Design | New Artwork, New Package, New Brand Architecture |  |
| 343 | 1.8.2.7.2.4 | Decision for Footprints/Sizes for 3D Shelf Test |  | 1.5d | 2013-03-13 | 2013-03-14 | 342 |  |  | 1113.6d |  | Sales | Sales/Nate |  | Comm | Design | New Artwork, New Package, New Brand Architecture |  |
| 344 | 1.8.2.7.2.5 | Lock Control Shelf POG’s and label spots/develop SKU list/number coding | milestone | 0d | 2013-03-14 A | 2013-03-14 A | 343 | 100% |  |  |  | IDM/Sales | IL/Sales |  | Comm | Design | New Artwork, New Package, New Brand Architecture |  |
| 345 | 1.8.2.7.2.6 | Lock New Modular POG's |  | 1w | 2013-03-13 | 2013-03-19 | 341 |  |  | 1060.6d | 0d | Sales | Sales/Sales |  | Comm | Design | New Artwork, New Package, New Brand Architecture |  |
| 346 | 1.8.2.7.2.7 | Decision for SKUs for 3D Shelf Test – complete SKU list/number coding document |  | 3d | 2013-03-20 | 2013-03-22 | 344, 345 |  |  | 1107.6d |  | Mktg | Mktg |  | Comm | Design | New Artwork, New Package, New Brand Architecture |  |
| 347 | 1.8.2.7.2.8 | Draft Shelf Test |  | 2w | 2013-03-13 | 2013-03-26 | 341 |  |  | 1087.6d | 0d | A&I | Sales |  | Comm | Design | New Artwork, New Package, New Brand Architecture |  |
| 348 | 1.8.2.7.2.9 | **Get Product for 3D Shelf Test** |  | 110d | 2013-03-22 A | 2013-08-28 |  |  | 110d | 997.6d |  | A&I | A&I |  | Comm | Design | New Artwork, New Package, New Brand Architecture |  |
| 349 | 1.8.2.7.2.9.1 | Send list of materials (e.g. cartons/bottle/labels/caps) needed to PS reps | milestone | 0d | 2013-03-22 A | 2013-03-22 A | 346 | 100% |  |  |  | A&I | A&I |  | Comm | Design | New Artwork, New Package, New Brand Architecture |  |
| 350 | 1.8.2.7.2.9.2 | Obtain 'fake materials if needed' - mock up/sprayed/etc |  | 3w | 2013-03-25 | 2013-04-15 | 349 |  |  | 1090.6d | 93d | MPD | MPD |  | Comm | Design | New Artwork, New Package, New Brand Architecture |  |
| 351 | 1.8.2.7.2.9.3 | Obtain Primary Pack (e.g., Base Bottles/Cartons/etc) |  | 2w | 2013-03-25 | 2013-04-08 | 349 |  |  | 1095.6d | 98d | MPD | MPD |  | Comm | Design | New Artwork, New Package, New Brand Architecture |  |
| 352 | 1.8.2.7.2.9.4 | Generate Labels for Primary Pack (e.g., caps, cartons, bottle) |  | 2d | 2013-08-23 | 2013-08-26 | 335, 191 |  |  | 997.6d | 0d | Design | Design |  | Comm | Design | New Artwork, New Package, New Brand Architecture | Comm |
| 353 | 1.8.2.7.2.9.5 | Order/Obtain any additional materials needed |  | 2w | 2013-03-25 | 2013-04-08 | 349 |  |  | 1095.6d | 98d | Design | MPD |  | Comm | Design | New Artwork, New Package, New Brand Architecture |  |
| 354 | 1.8.2.7.2.9.6 | Assemble Primary Packs for Shelf Test |  | 2d | 2013-08-27 | 2013-08-28 | 353, 350, 351, 352 |  |  | 997.6d |  | Design | Design |  | Comm | Design | New Artwork, New Package, New Brand Architecture |  |
| 355 | 1.8.2.7.2.9.7 | Items due to BRIC for Shelf Build | milestone | 0d | 2013-08-28 A | 2013-08-28 A | 354 | 100% |  |  |  | Design | Design |  | Comm | Design | New Artwork, New Package, New Brand Architecture |  |
| 356 | 1.8.2.7.2.10 | Revise Shelf Test if needed |  | 2d | 2013-03-27 | 2013-03-28 | 341, 347 |  |  | 1087.6d | 0d | A&I | A&I |  | Comm | Design | New Artwork, New Package, New Brand Architecture |  |
| 357 | 1.8.2.7.2.11 | Approval of 3D Shelf Test |  | 2d | 2013-04-01 | 2013-04-02 | 356 |  |  | 1087.6d | 104d | A&I | A&I |  | Comm | Design | New Artwork, New Package, New Brand Architecture |  |
| 358 | 1.8.2.7.2.12 | Conduct Test BRIC Shelf Test/Quals |  | 14d | 2013-08-29 | 2013-09-18 | 355, 357 |  |  | 983.6d |  | A&I | A&I/A&I |  | Comm | Design | New Artwork, New Package, New Brand Architecture | Comm |
| 359 | 1.8.2.7.2.13 | Results BRIC Shelf Test/Quals | milestone | 0d | 2013-09-18 A | 2013-09-18 A | 358 | 100% |  |  |  | A&I | A&I/A&I |  | Comm | Design | New Artwork, New Package, New Brand Architecture | Comm |
| 360 | 1.8.2.7.2.14 | Lead package commercially qualified |  | 1d | 2013-09-19 | 2013-09-19 | 359 |  |  | 979.6d | 396d | Sales | Sales | LP | Comm | Design | New Artwork, New Package, New Brand Architecture | Comm |
| 361 | 1.8.2.7.3 | **3D BISI-P** |  | 527d | 2013-03-20 A | 2015-05-12 |  |  | 527d | 583.6d |  | A&I | A&I | LP | Comm | Design |  |  |
| 362 | 1.8.2.7.3.1 | Research Learnings & Refinements from 2D BISI-P |  | 2w | 2013-10-09 | 2013-10-22 | 359, 337 |  |  | 350.1d | 0d | Design | Design | LP | Comm | Design | New Artwork, New Package, New Brand Architecture | Comm |
| 363 | 1.8.2.7.3.2 | Order/Receive Additional Materials for 3D BISI-P primary packs |  | 8w | 2013-03-20 | 2013-05-15 | 345 |  |  | 1060.6d | 115d | Design | Design | LP | Comm | Design | New Artwork, New Package, New Brand Architecture |  |
| 364 | 1.8.2.7.3.3 | Order New Primary Packs for 3D BISI-P |  | 5w | 2013-03-20 | 2013-04-24 | 345 |  |  | 1085.6d |  | Design | Design | LP | Comm | Design | New Artwork, New Package, New Brand Architecture | Comm |
| 365 | 1.8.2.7.3.4 | Receive Primary Pack for 3D BISI-P | milestone | 0d | 2013-10-08 A | 2013-10-08 A | 364, 637 | 100% |  |  |  | Design | Design | LP | Comm | Design | New Artwork, New Package, New Brand Architecture | Comm |
| 366 | 1.8.2.7.3.5 | Update control to test POGs for confirmed improvements on eye-tracking |  | 3ed | 2013-10-22 | 2013-10-25 | 362 |  |  | 3857.6d | 7.88d | Design | Design | LP | Comm | Design | New Artwork, New Package, New Brand Architecture |  |
| 367 | 1.8.2.7.3.6 | 2D BISI-P Eye Tracking Update |  | 5d | 2013-10-28 | 2013-11-01 | 366 |  |  | 888.6d | 0d | Design | Design | LP | Comm | Design | New Artwork, New Package, New Brand Architecture |  |
| 368 | 1.8.2.7.3.7 | Results from Eye Tracking Update |  | 3d | 2013-11-04 | 2013-11-06 | 367 |  |  | 888.6d | 0d | Design | Design | LP | Comm | Design | New Artwork, New Package, New Brand Architecture |  |
| 369 | 1.8.2.7.3.8 | Slight Changes for Labels/Approval |  | 4d | 2013-11-07 | 2013-11-12 | 368 |  |  | 941.6d | 358d | Design | Design | LP | Comm | Design | New Artwork, New Package, New Brand Architecture |  |

| ID | WBS | Task | Type | Duration | Start | Finish | Predecessors | Complete | Remaining | Total slack | Free slack | Text1 | Text2 | LP | Text10 | Text11 | Text27 | Text28 |
| --- | --- | --- | --- | --- | --- | --- | --- | --- | --- | --- | --- | --- | --- | --- | --- | --- | --- | --- |
| 370 | 1.8.2.7.3.9 | **Changes to Claims for 3D BISI-P** |  | 56d | 2013-08-09 A | 2013-10-28 |  |  | 56d | 955.6d |  | Design | Design | LP | Comm | Comm | Design | New Artwork, New Package, New Brand Architecture |
| 371 | 1.8.2.7.3.9.1 | Identify Claims/Benefits for Package Communication |  | 1w | 2013-08-23 | 2013-08-29 | 335 |  |  | 996.6d |  | Mktg/PR | Mktg/PR | LP | Comm |  | Design | New Artwork, New Package, New Brand Architecture |
| 372 | 1.8.2.7.3.9.2 | Review Claims with Legal |  | 2w | 2013-08-09 | 2013-08-22 | 335SS |  |  | 999.6d | 0d | PR | PR | LP | Comm |  | Design | New Artwork, New Package, New Brand Architecture |
| 373 | 1.8.2.7.3.9.3 | Final minor refinements per feedback |  | 2d | 2013-08-23 | 2013-08-26 | 372 |  |  | 999.6d |  | Design | Design | LP | Comm | Comm | Design | New Artwork, New Package, New Brand Architecture |
| 374 | 1.8.2.7.3.9.4 | Identify Updated Claims/Processefits for additional On Pack communication | milestone | 0d | 2013-10-22 A | 2013-10-22 A | 362, 197 | 100% |  |  |  | Design | Design | LP | Comm |  | Design | New Artwork, New Package, New Brand Architecture |
| 375 | 1.8.2.7.3.9.5 | Review Claims with Legal |  | 4d | 2013-10-23 | 2013-10-28 | 374 |  |  | 955.6d |  | PR | PR | LP | Comm |  | Design | New Artwork, New Package, New Brand Architecture |
| 376 | 1.8.2.7.3.9.6 | Final minor refinements per feedback | milestone | 0d | 2013-10-28 A | 2013-10-28 A | 375 | 100% |  |  |  | Design | Design | LP | Comm | Comm | Design | New Artwork, New Package, New Brand Architecture |
| 377 | 1.8.2.7.3.10 | Lock Package for 3D BISIP |  | 3d | 2015-05-08 | 2015-05-12 | 360, 613, 376, 369 |  |  | 583.6d |  | Design | Design | LP | Comm |  | Design | New Artwork, New Package, New Brand Architecture |
| 378 | 1.8.2.7.3.11 | Order 3D BISI-P Labels from Haney | milestone | 0d | 2013-11-12 A | 2013-11-12 A | 369 | 100% |  |  |  | Design | Design | LP | Comm | Comm | Design | New Artwork, New Package, New Brand Architecture |
| 379 | 1.8.2.7.3.12 | Place Labels on Primary Packs for 3D BISI-P |  | 2w | 2013-11-13 | 2013-11-26 | 378, 365 |  |  | 927.6d | 0d | Design | Design | LP | Comm | Comm | Design | New Artwork, New Package, New Brand Architecture |
| 380 | 1.8.2.7.3.13 | Order any Stickers and put on materials |  | 2w | 2013-10-29 | 2013-11-11 | 376, 363 |  |  | 945.6d |  | Design | Design | LP | Comm |  | Design | New Artwork, New Package, New Brand Architecture |
| 381 | 1.8.2.7.3.14 | Place Stickers/Etc on Primary Packs | milestone | 0d | 2013-11-13 A | 2013-11-13 A | 379SS, 380 | 100% |  |  |  | Design | Design | LP | Comm | Comm | Design | New Artwork, New Package, New Brand Architecture |
| 382 | 1.8.2.7.3.15 | Primary Pack Due for 3D BISI-P |  | 7d | 2013-12-02 | 2013-12-10 | 379, 381 |  |  | 927.6d |  | Design | Design | LP | Comm | Comm | Design | New Artwork, New Package, New Brand Architecture |
| 383 | 1.8.2.7.3.16 | **3D BISI-P Test Execution** |  | 32d | 2013-11-08 A | 2014-01-07 |  |  | 32d | 915.6d |  | A&I | A&I | LP | Comm |  | Design | New Artwork, New Package, New Brand Architecture |
| 384 | 1.8.2.7.3.16.1 | 3D BISI-P CRP Approved/PO Approved/Final POG confirmed |  | 5d | 2013-11-08 | 2013-11-14 | 362FS+12d |  |  | 350.1d | 0d | A&I | A&I | LP | Comm |  | Design | New Artwork, New Package, New Brand Architecture |
| 385 | 1.8.2.7.3.16.2 | 3D BISI-P On-boarding Meeting |  | 5d | 2013-11-08 | 2013-11-14 | 384SS |  |  | 930.6d | 0d |  |  |  |  |  | Design | New Artwork, New Package, New Brand Architecture |
| 386 | 1.8.2.7.3.16.3 | Draft 3D BISI-P Questionnaire to P&G |  | 4d | 2013-11-15 | 2013-11-20 | 385 |  |  | 930.6d | 0d | A&I | A&I | LP | Comm |  | Design | New Artwork, New Package, New Brand Architecture |
| 387 | 1.8.2.7.3.16.4 | PRS Receives Finished 3D BISI-P Bottles | milestone | 0d | 2013-12-10 A | 2013-12-10 A | 382, 384 | 100% |  |  |  | A&I | A&I | LP | Comm |  | Design | New Artwork, New Package, New Brand Architecture |
| 388 | 1.8.2.7.3.16.5 | 3D BISI-P Questionnaire Feedback from P&G |  | 5d | 2013-11-21 | 2013-12-02 | 386 |  |  | 930.6d | 0d | A&I | A&I | LP | Comm |  | Design | New Artwork, New Package, New Brand Architecture |
| 389 | 1.8.2.7.3.16.6 | Final 3D BISI-P Questionnaire Approval |  | 3d | 2013-12-03 | 2013-12-05 | 388 |  |  | 930.6d |  | A&I | A&I | LP | Comm |  | Design | New Artwork, New Package, New Brand Architecture |
| 390 | 1.8.2.7.3.16.7 | Shopping/Photography/2D Visual Graphics complete |  | 5d | 2013-12-11 | 2013-12-17 | 384, 387 |  |  | 335.1d | 0d | A&I | A&I | LP | Comm |  | Design | New Artwork, New Package, New Brand Architecture |
| 391 | 1.8.2.7.3.16.8 | P&G Approval of Final 3D BISI-P Stimuli |  | 2d | 2013-12-18 | 2013-12-19 | 390 |  |  | 335.1d | 0d | A&I | A&I | LP | Comm |  | Design | New Artwork, New Package, New Brand Architecture |
| 392 | 1.8.2.7.3.16.9 | Prep for Fielding of 3D BISI-P |  | 5d | 2013-12-20 | 2014-01-07 | 391 |  |  | 335.1d | 0d | A&I | A&I | LP | Comm |  | Design | New Artwork, New Package, New Brand Architecture |
| 393 | 1.8.2.7.3.17 | Conduct 3D BISI-P |  | 9d | 2014-01-08 | 2014-01-21 | 392 |  |  | 335.1d | 0d | Design | Design | LP | Comm | Comm | Design | New Artwork, New Package, New Brand Architecture |
| 394 | 1.8.2.7.3.18 | 3D BISI-P Results |  | 2w | 2014-01-22 | 2014-02-04 | 393 |  |  | 335.1d | 0d | A&I | A&I | LP | Comm | Comm | Design | New Artwork, New Package, New Brand Architecture |
| 395 | 1.8.2.7.3.19 | Minor Refinements from 3D BISI-P |  | 1w | 2014-02-05 | 2014-02-11 | 394 |  |  | 335.1d | 0d | A&I | A&I | LP | Comm |  | Design | New Artwork, New Package, New Brand Architecture |
| 396 | 1.8.2.7.3.20 | Approval for Package |  | 1w | 2014-02-12 | 2014-02-18 | 395 |  |  | 335.1d | 10d | A&I | A&I | LP | Comm |  | Design | New Artwork, New Package, New Brand Architecture |

| ID | WBS | Task | Type | Duration | Start | Finish | Predecessors | Complete | Remaining | Total slack | Free slack | Constraint | Text1 | Text2 | LP | Text10 | Text27 | Text11 | Text28 |
| --- | --- | --- | --- | --- | --- | --- | --- | --- | --- | --- | --- | --- | --- | --- | --- | --- | --- | --- | --- |
| 397 | 1.8.2.7.4 | **Virtual Launch** |  | 106d | 2013-04-30 | 2013-09-27 |  |  |  | 0d |  |  | A&I | A&I | LP | Comm | Design |  |  |
| 398 | 1.8.2.7.4.1 | Provide Packaging Design |  | 2w | 2013-06-03 | 2013-06-14 | 144 |  |  | 1049.6d | 0d |  | Design | Design |  | Comm | Design | Comm | New Artwork, New Package, New Brand Architecture |
| 399 | 1.8.2.7.4.2 | Naming |  | 2w | 2013-06-03 | 2013-06-14 | 398SS |  |  | 1049.6d |  |  | Mktg | Mktg |  | Comm | Design | Comm | New Artwork, New Package, New Brand Architecture |
| 400 | 1.8.2.7.4.3 | Provide Concept |  | 2w | 2013-04-30 | 2013-05-13 | 183, 184 |  |  | 0d |  |  | Mktg | Mktg |  | Comm | Design | Comm | New Artwork, New Package, New Brand Architecture |
| 401 | 1.8.2.7.4.4 | Approve VL Input |  | 1d | 2013-05-14 | 2013-05-14 | 400 |  |  | 0d |  |  | GM LT | Finance |  | Comm | Design |  | New Artwork, New Package, New Brand Architecture |
| 402 | 1.8.2.7.4.5 | Concept Evaluator |  | 8w | 2013-05-15 | 2013-07-11 | 401 |  |  | 0d |  | start no earlier than 2011-11-04 | A&I | A&I |  | Comm | Design | Comm | New Artwork, New Package, New Brand Architecture |
| 403 | 1.8.2.7.4.6 | VL Test |  | 12w | 2013-05-15 | 2013-08-08 | 401 |  |  | 10d | 0d | start no earlier than 2011-10-17 | A&I | A&I |  | Comm | Design | Comm | New Artwork, New Package, New Brand Architecture |
| 404 | 1.8.2.7.4.7 | **VL Results Available** |  | 55d | 2013-07-12 | 2013-09-27 |  |  |  | 0d |  |  | A&I | A&I |  | Comm | Design | Comm | New Artwork, New Package, New Brand Architecture |
| 405 | 1.8.2.7.4.7.1 | Pricing from VL |  | 2w | 2013-08-09 | 2013-08-22 | 402, 403 |  |  | 10d | 0d |  | A&I | A&I |  | Comm | Design | Comm | New Artwork, New Package, New Brand Architecture |
| 406 | 1.8.2.7.4.7.2 | Volume from VL |  | 2w | 2013-08-09 | 2013-08-22 | 402, 403 |  |  | 10d |  |  | A&I | A&I |  | Comm | Design | Comm | New Artwork, New Package, New Brand Architecture |
| 407 | 1.8.2.7.4.7.3 | **VL Results Approved** |  | 55d | 2013-07-12 | 2013-09-27 |  |  |  | 0d |  |  | A&I | A&I |  | Comm | Design | Comm | New Artwork, New Package, New Brand Architecture |
| 408 | 1.8.2.7.4.7.3.1 | Results Compiled and initial Concept Results Shared |  | 1w | 2013-07-12 | 2013-07-18 | 402 |  |  | 0d |  |  | A&I | A&I |  | Comm | Design |  | New Artwork, New Package, New Brand Architecture |
| 409 | 1.8.2.7.4.7.3.2 | Concept, Pricing, Appeal Results Approved |  | 3w | 2013-09-09 | 2013-09-27 | 405, 406, 194 |  |  | 0d |  |  | Mktg | Mktg |  | Comm | Design |  | New Artwork, New Package, New Brand Architecture |
| 410 | 1.8.2.7.5 | **Consumer Usage Check (top variants selected for test)** |  | 164.5d | 2013-03-08 A | 2013-10-31 |  |  | 164.5d | 953.1d |  |  | PR | PR | LP | Tech | Design |  |  |
| 411 | 1.8.2.7.5.1 | Define Consumer Usage Check (CUC) CRP |  | 2d | 2013-08-07 | 2013-08-08 | 595 |  |  | 967.6d | 0d |  | PR | PR | LP | Tech | Design |  | New Package, New Formula |
| 412 | 1.8.2.7.5.2 | Success Criteria Per Leg Locked |  | 1d | 2013-08-09 | 2013-08-09 | 411 |  |  | 990.6d | 0d |  | PR | PR | LP | Tech | Design |  | New Package, New Formula |
| 413 | 1.8.2.7.5.3 | **Product Prep for CUC** |  | 127d | 2013-03-08 A | 2013-09-09 |  |  | 127d | 990.6d |  |  | PD | PD | LP | Tech | Design |  | New Package, New Formula |
| 414 | 1.8.2.7.5.3.1 | Formulas defined and preliminary testing confirms that success criteria can be met |  | 20d | 2013-08-12 | 2013-09-09 | 411, 412 |  |  | 990.6d |  |  | PD | PD | LP | Tech | Design |  | New Package, New Formula |
| 415 | 1.8.2.7.5.3.2 | CUC Order Materials (perfumes, cartons, etc) | milestone | 0d | 2013-03-08 A | 2013-03-08 A | 414 | 100% |  |  |  |  | Perfume | Perfume | LP | Tech | Design |  | New Package, New Formula |
| 416 | 1.8.2.7.5.3.3 | CUC Materials Received |  | 1d | 2013-03-11 | 2013-03-11 | 415 |  |  | 418d | 0d |  | Perfume | Perfume | LP | Tech | Design |  | New Package, New Formula |
| 417 | 1.8.2.7.5.3.4 | CUC Materials Leveling/Testing/Stability (perfumes, scents, etc) |  | 2w | 2013-03-12 | 2013-03-25 | 416 |  |  | 418d | 0d |  | Perfume | Perfume | LP | Tech | Design |  | New Package, New Formula |
| 418 | 1.8.2.7.5.3.5 | **Round 1** |  | 42d | 2013-03-26 | 2013-05-23 |  |  |  | 418d |  |  | PD | PD |  | Tech | Design |  | New Package, New Formula |
| 419 | 1.8.2.7.5.3.5.1 | CUC Lab batch making (no preview batches) |  | 5d | 2013-03-26 | 2013-04-02 | 416, 417 |  |  | 418d | 0d |  | Process | Process | LP |  | Design |  | New Package, New Formula |
| 420 | 1.8.2.7.5.3.5.2 | CUC Lab batch testing Include Stability Testing (no preview batches) |  | 3w | 2013-04-03 | 2013-04-23 | 419 |  |  | 418d | 0d |  | Process | Process | LP |  | Design |  | New Package, New Formula |
| 421 | 1.8.2.7.5.3.5.3 | CUC Final product making |  | 5d | 2013-04-24 | 2013-04-30 | 420 |  |  | 418d | 0d |  | Process | Process | LP |  | Design |  | New Package, New Formula |
| 422 | 1.8.2.7.5.3.5.4 | CUC Final product testing (approval, batch records, physical properties) |  | 3d | 2013-05-01 | 2013-05-03 | 421 |  |  | 418d | 0d |  | Process | Process | LP |  | Design |  | New Package, New Formula |
| 423 | 1.8.2.7.5.3.5.5 | Approval from TST for ordering RM's ahead of final locked formulas to help with time |  | 3d | 2013-05-06 | 2013-05-08 | 422 |  |  | 466d |  |  |  |  |  |  | Design |  | New Package, New Formula |
| 424 | 1.8.2.7.5.3.5.6 | Root Cause Analysis |  | 13d | 2013-05-06 | 2013-05-22 | 422 |  |  | 418d | 0d |  | Process | Process | LP |  | Design |  | New Package, New Formula |
| 425 | 1.8.2.7.5.3.5.7 | Lock CUC Formulas |  | 1d | 2013-05-23 | 2013-05-23 | 424 |  |  | 418d | 0d |  |  |  |  |  | Design |  | New Package, New Formula |

| ID | WBS | Task | Type | Duration | Start | Finish | Predecessors | Complete | Remaining | Total slack | Free slack | Constraint | Text1 | Text2 | Text10 | Text27 | Text28 | LP |
| --- | --- | --- | --- | --- | --- | --- | --- | --- | --- | --- | --- | --- | --- | --- | --- | --- | --- | --- |
| 426 | 1.8.2.7.5.3.6 | **Round 2** |  | 25d | 2013-05-24 | 2013-06-29 |  |  |  | 1026.6d |  |  | PD | PD | Tech | Design | New Package, New Formula |  |
| 427 | 1.8.2.7.5.3.6.1 | CUC Preview batch making |  | 3d | 2013-05-24 | 2013-05-29 | 425 |  |  | 1026.6d | 0d |  | Process | Process | Tech | Design | New Package, New Formula | LP |
| 428 | 1.8.2.7.5.3.6.2 | Create MFCs |  | 2w | 2013-05-24 | 2013-06-07 | 427SS |  |  | 1026.6d | 0d |  | Process | Process | Tech | Design | New Package, New Formula | LP |
| 429 | 1.8.2.7.5.3.6.3 | CUC Preview batch testing Include Stability Testing (no preview batches) |  | 2w | 2013-05-30 | 2013-06-12 | 427 |  |  | 1032d | 0d |  | Process | Process | Tech | Design | New Package, New Formula | LP |
| 430 | 1.8.2.7.5.3.6.4 | CUC Final product making |  | 4d | 2013-06-13 | 2013-06-18 | 429 |  |  | 1032d | 0d |  | Process | Process | Tech | Design | New Package, New Formula | LP |
| 431 | 1.8.2.7.5.3.6.5 | CUC Final product testing (approval, batch records, physical properties) |  | 11ed | 2013-06-18 | 2013-06-29 | 430 |  |  | 4463.6d | 280.88d |  | Process | Process | Tech | Design | New Package, New Formula | LP |
| 432 | 1.8.2.7.5.4 | **Packout Prep for CUC** |  | 84d | 2013-06-10 | 2013-10-07 |  |  |  | 967.6d |  |  | PR | Process | Tech | Design | New Package, New Formula | LP |
| 433 | 1.8.2.7.5.4.1 | Order Packing Materials |  | 2d | 2013-08-09 | 2013-08-12 | 411 |  |  | 967.6d | 0d |  | PR | PR | Tech | Design | New Package, New Formula | LP |
| 434 | 1.8.2.7.5.4.2 | Receive Packing Materials |  | 25d | 2013-08-13 | 2013-09-17 | 433 |  |  | 967.6d | 0d |  | PR | Process | Tech | Design | New Package, New Formula | LP |
| 435 | 1.8.2.7.5.4.3 | CUC Pack-out |  | 4d | 2013-09-18 | 2013-09-23 | 434 |  |  | 967.6d | 0d |  | PR | PR | Tech | Design | New Package, New Formula | LP |
| 436 | 1.8.2.7.5.4.4 | CUC Micro Test (if applicable) |  | 5d | 2013-09-24 | 2013-09-30 | 435 |  |  | 967.6d | 0d |  | PR | PR | Tech | Design | New Package, New Formula | LP |
| 437 | 1.8.2.7.5.4.5 | **CUC Test Materials/ Clearance** |  | 84d | 2013-06-10 | 2013-10-07 |  |  |  | 967.6d |  |  | PR | PR | Tech | Design | New Package, New Formula | LP |
| 438 | 1.8.2.7.5.4.5.1 | Submit SMART |  | 4w | 2013-06-10 | 2013-07-08 | 428 |  |  | 1026.6d | 59d |  | PR | PR | Tech | Design | New Package, New Formula | LP |
| 439 | 1.8.2.7.5.4.5.2 | Complete SMART |  | 5d | 2013-10-01 | 2013-10-07 | 436, 431, 438 |  |  | 967.6d | 0d |  | PR | PR | Tech | Design | New Package, New Formula | LP |
| 440 | 1.8.2.7.5.5 | CUC Product Shipped to Test Facility |  | 3d | 2013-10-08 | 2013-10-10 | 439 |  |  | 967.6d |  |  | PR | Process | Tech | Design | New Package, New Formula | LP |
| 441 | 1.8.2.7.5.6 | CUC Product Placed | milestone | 0d | 2013-10-10 A | 2013-10-10 A | 440 | 100% |  |  |  |  | PR | PR | Tech | Design | New Package, New Formula | LP |
| 442 | 1.8.2.7.5.7 | CUC Usage |  | 2w | 2013-10-11 | 2013-10-24 | 441 |  |  | 930.6d | 0d |  | PR | PR | Tech | Design | New Package, New Formula | LP |
| 443 | 1.8.2.7.5.8 | CUC Recall |  | 5d | 2013-10-22 | 2013-10-29 | 442SS+1.5w |  |  | 930.6d | 0d |  | PR | PR | Tech | Design | New Package, New Formula | LP |
| 444 | 1.8.2.7.5.9 | CUC Results Summary |  | 2d | 2013-10-29 | 2013-10-31 | 443 |  |  | 930.6d | 380.5d |  | PR | PR | Tech | Design | New Package, New Formula | LP |
| 445 | 1.8.2.7.6 | **BASES I (list chosen variants in scope)** |  | 572.5d? | 2013-03-04 A | 2015-06-29 |  | 25% | 429.5d? | 550.1d |  |  | A&I | A&I | Comm | Design |  | LP |
| 446 | 1.8.2.7.6.1 | Define BASES I CRP |  | 2w | 2013-08-13 | 2013-08-26 | 596 |  |  | 994.6d | 0d | start no earlier than 2011-05-05 | A&I | A&I | Comm | Design | New Package, New Formula, Commercial Concept/Sell-in | LP |
| 447 | 1.8.2.7.6.2 | Determine legs for BASES I |  | 1w | 2013-08-27 | 2013-09-03 | 446 |  |  | 994.6d |  |  | A&I | A&I | Comm | Design | New Package, New Formula, Commercial Concept/Sell-in | LP |
| 448 | 1.8.2.7.6.3 | BASES I CRP Approved | milestone | 0d | 2013-09-03 A | 2013-09-03 A | 447 | 100% |  |  |  | start no earlier than 2011-11-28 | A&I | A&I | Comm | Design | New Package, New Formula, Commercial Concept/Sell-in | LP |
| 449 | 1.8.2.7.6.4 | Success Criteria Per Leg Locked for BASES I |  | 1w | 2013-08-27 A | 2013-09-03 | 448FF |  | 1w | 964.6d | 0d |  | PD | PR | Tech | Design | New Package, New Formula, Commercial Concept/Sell-in | LP |

| ID | WBS | Task | Type | Duration | Start | Finish | Predecessors | Complete | Remaining | Total slack | Free slack | Text1 | Text2 | LP | Text10 | Text27 | Text28 |
| --- | --- | --- | --- | --- | --- | --- | --- | --- | --- | --- | --- | --- | --- | --- | --- | --- | --- |
| 450 | 1.8.2.7.6.5 | **Product Prep for BASES I** |  | 550d | 2013-03-04 A | 2015-05-27 |  |  | 550d | 572.6d |  | PD | PD | LP | Tech | Design | New Package, New Formula, Commercial Concept/Sell-in |
| 451 | 1.8.2.7.6.5.1 | Lock Formulation |  | 30d | 2013-09-04 | 2013-10-15 | 449 |  |  | 964.6d |  | PD | PD | LP | Tech | Design | New Package, New Formula, Commercial Concept/Sell-in |
| 452 | 1.8.2.7.6.5.2 | Stability Testing | milestone | 0w | 2013-05-10 A | 2013-05-10 A | 451 | 100% |  |  |  | PD | PD | LP | Tech | Design | New Package, New Formula, Commercial Concept/Sell-in |
| 453 | 1.8.2.7.6.5.3 | **Additional Product Development** |  | 45d | 2013-08-28 | 2013-10-30 |  |  |  | 347d |  | PD | PD | LP | Tech | Design | New Package, New Formula, Commercial Concept/Sell-in |
| 454 | 1.8.2.7.6.5.3.1 | Research |  | 2w | 2013-08-28 | 2013-09-11 | 522 |  |  | 347d | 0d | PD | PD | LP | Tech | Design | New Package, New Formula, Commercial Concept/Sell-in |
| 455 | 1.8.2.7.6.5.3.2 | First Round of Results w New Materials |  | 29d | 2013-09-12 | 2013-10-22 | 454 |  |  | 347d | 0d | PD | PD | LP | Tech | Design | New Package, New Formula, Commercial Concept/Sell-in |
| 456 | 1.8.2.7.6.5.3.3 | PS&RA Check/Plans to Passport of New Material |  | 1w | 2013-10-23 | 2013-10-29 | 455 |  |  | 953.6d | 0d | PD/Process | PD/Process | LP | Tech | Design | New Package, New Formula, Commercial Concept/Sell-in |
| 457 | 1.8.2.7.6.5.3.4 | Stabilty & Performance Testing on First Round |  | 2w | 2013-10-16 | 2013-10-29 | 455FS-1w |  |  | 953.6d | 0d | PD | PD | LP | Tech | Design | New Package, New Formula, Commercial Concept/Sell-in |
| 458 | 1.8.2.7.6.5.3.5 | Making of Second Round of Final Package for Testing |  | 15d | 2013-08-28 | 2013-09-18 | 522 |  |  | 371d | 24d | PD | PD | LP | Tech | Design | New Package, New Formula, Commercial Concept/Sell-in |
| 459 | 1.8.2.7.6.5.3.6 | Stability & Performance Testing on Package/Formula |  | 3d | 2013-10-23 | 2013-10-25 | 455, 458 |  |  | 347d | 0d | Perfume | Perfume | LP | Tech | Design | New Package, New Formula, Commercial Concept/Sell-in |
| 460 | 1.8.2.7.6.5.3.7 | Lock addtl Formula/Package for Testing Legs |  | 1d | 2013-10-30 | 2013-10-30 | 456, 457 |  |  | 953.6d |  | PD | PD | LP | Tech | Design | New Package, New Formula, Commercial Concept/Sell-in |
| 461 | 1.8.2.7.6.5.4 | BASES I Formulas Locked | milestone | 0d | 2013-11-12 A | 2013-11-12 A | 425, 452, 460 | 100% |  |  |  | PD | PD | LP | Tech | Design | New Package, New Formula, Commercial Concept/Sell-in |
| 462 | 1.8.2.7.6.5.5 | Identify RM's needed for wide range of locked formulas |  | 1d | 2013-11-13 | 2013-11-13 | 425, 458, 452, 461 |  |  | 334d |  | Process | Process | LP | Tech | Design | New Package, New Formula, Commercial Concept/Sell-in |
| 463 | 1.8.2.7.6.5.6 | Order RM's/PMs for BASES I |  | 1d | 2015-04-07 | 2015-04-07 | 448, 462, 423, 637 |  |  | 0d |  | Process | Process | LP | Tech | Design | New Package, New Formula, Commercial Concept/Sell-in |
| 464 | 1.8.2.7.6.5.7 | RM's/PMs Matls Received \ for BASES I |  | 1d | 2015-04-08 | 2015-04-08 | 463 |  |  | 0d |  | Process | Process | LP | Tech | Design | New Package, New Formula, Commercial Concept/Sell-in |
| 465 | 1.8.2.7.6.5.8 | Order Remaining Materials for BASES I |  | 1d | 2013-10-28 | 2013-10-28 | 452, 459 |  |  | 347d | 0d | Process | Process | LP | Tech | Design | New Package, New Formula, Commercial Concept/Sell-in |
| 466 | 1.8.2.7.6.5.9 | Receive Remaining Materials for BASES I |  | 1d | 2013-10-29 | 2013-10-29 | 465 |  |  | 347d |  | Process | Process | LP | Tech | Design | New Package, New Formula, Commercial Concept/Sell-in |
| 467 | 1.8.2.7.6.5.10 | **Variants A BASES Product Prep** |  | 35d | 2015-04-09 | 2015-05-27 |  |  |  | 0d |  | Process | Process |  | Tech | Design | New Package, New Formula, Commercial Concept/Sell-in |
| 468 | 1.8.2.7.6.5.10.1 | Preview batch making for var A BASES I |  | 1w | 2015-04-09 | 2015-04-15 | 464, 466 |  |  | 0d |  | Process | Process | LP | Tech | Design | New Package, New Formula, Commercial Concept/Sell-in |
| 469 | 1.8.2.7.6.5.10.2 | Preview batch testing/stability for var A BASES I |  | 2w | 2015-04-16 | 2015-04-29 | 468 |  |  | 0d |  | PR | PR | LP | Tech | Design | New Package, New Formula, Commercial Concept/Sell-in |
| 470 | 1.8.2.7.6.5.10.3 | Create var A MFC's |  | 2w | 2015-04-09 | 2015-04-22 | 468SS |  |  | 570.6d | 0d | Process | Process | LP | Tech | Design | New Package, New Formula, Commercial Concept/Sell-in |
| 471 | 1.8.2.7.6.5.10.4 | Final product making for var A BASES I |  | 2w | 2015-04-30 | 2015-05-13 | 469 |  |  | 0d |  | Process | Process | LP | Tech | Design | New Package, New Formula, Commercial Concept/Sell-in |
| 472 | 1.8.2.7.6.5.10.5 | Final product testing for var A BASES I (approval, documents, etc) |  | 14ed | 2015-05-13 | 2015-05-27 | 471 |  |  | 2311.97d | 1.88d | PR | PR | LP | Tech | Design | New Package, New Formula, Commercial Concept/Sell-in |
| 473 | 1.8.2.7.6.5.11 | **Variants B BASES Product Prep** |  | 29d | 2013-03-04 | 2013-04-12 |  |  |  | 520d |  | Process | Process |  | Tech | Design | New Package, New Formula, Commercial Concept/Sell-in |
| 474 | 1.8.2.7.6.5.11.1 | Preview batch making for var B BASES I |  | 1w | 2013-03-04 | 2013-03-08 |  |  |  | 520d | 0d | Process | Process | LP | Tech | Design | New Package, New Formula, Commercial Concept/Sell-in |
| 475 | 1.8.2.7.6.5.11.2 | Preview batch testing/stability for var B BASES I |  | 2w | 2013-03-11 | 2013-03-22 | 474 |  |  | 520d | 0d | PR | PR | LP | Tech | Design | New Package, New Formula, Commercial Concept/Sell-in |
| 476 | 1.8.2.7.6.5.11.3 | Create MFC's (for var B Only) |  | 2w | 2013-03-04 | 2013-03-15 | 474SS |  |  | 1085.6d | 515d | Process | Process | LP | Tech | Design | New Package, New Formula, Commercial Concept/Sell-in |
| 477 | 1.8.2.7.6.5.11.4 | Final product making for var B BASES I |  | 1w | 2013-03-25 | 2013-04-01 | 475 |  |  | 520d | 0d | Process | Process | LP | Tech | Design | New Package, New Formula, Commercial Concept/Sell-in |
| 478 | 1.8.2.7.6.5.11.5 | Final product testing for var B BASES I (approval, documents, etc) |  | 11ed | 2013-04-01 | 2013-04-12 | 477 |  |  | 4670.6d | 2360.5d | PR | PR | LP | Tech | Design | New Package, New Formula, Commercial Concept/Sell-in |

| ID | WBS | Task | Type | Duration | Start | Finish | Predecessors | Complete | Remaining | Total slack | Free slack | Text1 | Text2 | LP | Text10 | Text27 | Text28 |
| --- | --- | --- | --- | --- | --- | --- | --- | --- | --- | --- | --- | --- | --- | --- | --- | --- | --- |
| 479 | 1.8.2.7.6.6 | **Packout Prep for BASES I** |  | 561.5d? | 2013-03-12 A | 2015-06-23 |  | 77% | 131.16d? | 550.1d |  | PR | Process | LP | Tech | Design | New Package, New Formula, Commercial Concept/Sell-in |
| 480 | 1.8.2.7.6.6.1 | Receive Packing Materials |  | 146d? | 2013-03-12 A | 2013-10-08 A | 465 | 100% |  |  |  | PR | Process | LP | Tech | Design | New Package, New Formula, Commercial Concept/Sell-in |
| 481 | 1.8.2.7.6.6.2 | **Var A BASES Packing** |  | 12.5d | 2015-05-28 | 2015-06-15 |  |  |  | 550.1d |  | PR | Process | LP | Tech | Design | New Package, New Formula, Commercial Concept/Sell-in |
| 482 | 1.8.2.7.6.6.2.1 | Pack-out Var A Product for BASES I |  | 1.5w | 2015-05-28 | 2015-06-08 | 469, 444, 472, 480 |  |  | 550.1d | 0d | PD | PR | LP | Tech | Design | New Package, New Formula, Commercial Concept/Sell-in |
| 483 | 1.8.2.7.6.6.2.2 | Micro var A Product for BASES I |  | 1w | 2015-06-08 | 2015-06-15 | 482 |  |  | 553.1d | 3d | PD | PR | LP | Tech | Design | New Package, New Formula, Commercial Concept/Sell-in |
| 484 | 1.8.2.7.6.6.3 | **Var B BASES Packing** |  | 8d | 2015-06-08 | 2015-06-18 |  |  |  | 550.1d |  | PR | Process | LP | Tech | Design | New Package, New Formula, Commercial Concept/Sell-in |
| 485 | 1.8.2.7.6.6.3.1 | Pack-out var B Product for BASES I |  | 3d | 2015-06-08 | 2015-06-11 | 475, 478, 482, 480 |  |  | 550.1d | 0d | PD | PR | LP | Tech | Design | New Package, New Formula, Commercial Concept/Sell-in |
| 486 | 1.8.2.7.6.6.3.2 | Micro var B Product for BASES I |  | 1w | 2015-06-11 | 2015-06-18 | 485 |  |  | 550.1d | 0d | PD | PR | LP | Tech | Design | New Package, New Formula, Commercial Concept/Sell-in |
| 487 | 1.8.2.7.6.6.4 | **BASES I Test Materials/ Clearance** |  | 42.5d | 2015-04-23 | 2015-06-22 |  |  |  | 550.1d |  | PR | PR | LP | Tech | Design | New Package, New Formula, Commercial Concept/Sell-in |
| 488 | 1.8.2.7.6.6.4.1 | Submit SMART |  | 4w | 2015-04-23 | 2015-05-20 | 470, 476 |  |  | 570.6d | 20.5d | PR | PR | LP | Tech | Design | New Package, New Formula, Commercial Concept/Sell-in |
| 489 | 1.8.2.7.6.6.4.2 | Complete SMART |  | 2d | 2015-06-18 | 2015-06-22 | 486, 483, 488 |  |  | 550.1d | 0d | PR | PR | LP | Tech | Design | New Package, New Formula, Commercial Concept/Sell-in |
| 490 | 1.8.2.7.6.6.5 | Product shipped for var A BASES I (put due date if needed based on contracts and agencies) |  | 1d | 2015-06-22 | 2015-06-23 | 482, 489 |  |  | 550.1d | 0d | PD | PR | LP | Tech | Design | New Package, New Formula, Commercial Concept/Sell-in |
| 491 | 1.8.2.7.6.6.6 | Product shipped for var B BASES I (put due date if needed based on contracts and agencies) |  | 1d | 2015-06-22 | 2015-06-23 | 489, 485 |  |  | 550.1d | 0d | PD | PR |  | Tech | Design | New Package, New Formula, Commercial Concept/Sell-in |
| 492 | 1.8.2.7.6.7 | **Concept Delivery for BASES I** |  | 35d | 2013-12-17 | 2014-02-17 |  |  |  | 274.4d |  | Mktg | Mktg | LP | Comm | Design | New Package, New Formula, Commercial Concept/Sell-in |
| 493 | 1.8.2.7.6.7.1 | Conduct Client Objectives Meeting - Round 1 |  | 2d | 2013-12-17 | 2013-12-19 | 448FS+3.25mo |  |  | 274.4d | 0d | A&I | A&I | LP | Comm | Design | New Package, New Formula, Commercial Concept/Sell-in |
| 494 | 1.8.2.7.6.7.2 | Conduct Client Objectives Meeting - Round 2 |  | 1d | 2014-01-22 | 2014-01-23 | 493FS+3w |  |  | 274.4d | 0d | A&I | A&I | LP | Comm | Design | New Package, New Formula, Commercial Concept/Sell-in |
| 495 | 1.8.2.7.6.7.3 | **Concept** |  | 33d | 2013-12-19 | 2014-02-17 |  |  |  | 283.4d |  | Mktg | Mktg | LP | Comm | Design | New Package, New Formula, Commercial Concept/Sell-in |
| 496 | 1.8.2.7.6.7.3.1 | Draft Concept/After Use Questionnaire Delivered (3/30) |  | 7d | 2013-12-19 | 2014-01-09 | 493 |  |  | 283.4d | 0d | A&I | A&I | LP | Comm | Design | New Package, New Formula, Commercial Concept/Sell-in |
| 497 | 1.8.2.7.6.7.3.2 | Questions Finalized for Pre-Screening OQ Groups |  | 6d | 2014-01-30 | 2014-02-07 | 494FS+1w |  |  | 888.1d | 0d | A&I | A&I | LP | Comm | Design | New Package, New Formula, Commercial Concept/Sell-in |
| 498 | 1.8.2.7.6.7.3.3 | Pre- Screening OQ Groups |  | 6d | 2014-02-07 | 2014-02-17 | 494FS+1w, 497 |  |  | 888.1d |  | A&I | A&I | LP | Comm | Design | New Package, New Formula, Commercial Concept/Sell-in |
| 499 | 1.8.2.7.6.7.3.4 | Final Concept/AU BASES I Questionnaire Input - Team |  | 16d | 2014-01-09 | 2014-02-03 | 496 |  |  | 283.4d | 0d | Mktg | Mktg | LP | Comm | Design | New Package, New Formula, Commercial Concept/Sell-in |
| 500 | 1.8.2.7.6.7.3.5 | Provide Final Concept/AU BASE II Questionnaire Feedback |  | 2d | 2014-02-03 | 2014-02-05 | 499, 201 |  |  | 283.4d | 0d | A&I | A&I | LP | Comm | Design | New Package, New Formula, Commercial Concept/Sell-in |
| 501 | 1.8.2.7.6.7.3.6 | Final Concept/AU BASES I Questionnaire Approval - Susan/Beth |  | 4d | 2014-02-05 | 2014-02-11 | 500 |  |  | 283.4d | 10d | A&I | A&I | LP | Comm | Design | New Package, New Formula, Commercial Concept/Sell-in |
| 502 | 1.8.2.7.6.8 | **BASES I Execution** |  | 342d | 2014-02-11 A | 2015-06-29 |  |  | 342d | 550.1d |  | A&I | A&I | LP | Comm | Design | New Package, New Formula, Commercial Concept/Sell-in |
| 503 | 1.8.2.7.6.8.1 | BASES I Product Organized for Placement |  | 4d | 2015-06-23 | 2015-06-29 | 490, 491 |  |  | 550.1d |  | A&I | A&I | LP | Comm | Design | New Package, New Formula, Commercial Concept/Sell-in |
| 504 | 1.8.2.7.6.8.2 | BASES I Start Date (note date with agency)/Field Concept | milestone | 0d | 2014-02-11 A | 2014-02-11 A | 503, 498, 501 | 100% |  |  |  | A&I | A&I | LP | Comm | Design | New Package, New Formula, Commercial Concept/Sell-in |
| 505 | 1.8.2.7.6.8.3 | BASES Usage (end date with agency) |  | 2w | 2014-02-11 | 2014-02-25 | 504 |  |  | 273.4d | 0d | A&I | A&I | LP | Comm | Design | New Package, New Formula, Commercial Concept/Sell-in |
| 506 | 1.8.2.7.6.8.4 | BASES I Concept Top Line (results expected date) |  | 1w | 2014-02-25 | 2014-03-04 | 505 |  |  | 284.4d | 11d | A&I | A&I | LP | Comm | Design | New Package, New Formula, Commercial Concept/Sell-in |
| 507 | 1.8.2.7.6.8.5 | Afteruse Field Start Date (date expected) |  | 5d | 2014-02-25 | 2014-03-04 | 505, 501 |  |  | 273.4d | 0d | A&I | A&I | LP | Comm | Design | New Package, New Formula, Commercial Concept/Sell-in |
| 508 | 1.8.2.7.6.8.6 | BASES I After Use Topline (date expected) |  | 11d | 2014-03-04 | 2014-03-19 | 507 |  |  | 273.4d | 0d | A&I | A&I | LP | Comm | Design | New Package, New Formula, Commercial Concept/Sell-in |

| ID | WBS | Task | Type | Duration | Start | Finish | Predecessors | Complete | Remaining | Total slack | Free slack | Constraint | Text1 | Text2 | LP | Text10 | Text27 | Text28 |
| --- | --- | --- | --- | --- | --- | --- | --- | --- | --- | --- | --- | --- | --- | --- | --- | --- | --- | --- |
| 509 | 1.8.2.7.6.9 | **BASES I Forecasting** |  | 38d | 2014-02-13 | 2014-04-08 |  |  |  | 273.4d |  |  | A&I | A&I | LP | Comm | Design | New Package, New Formula, Commercial Concept/Sell-in |
| 510 | 1.8.2.7.6.9.1 | Marketing Plan Inputs Final Decisions (date needed) |  | 1d | 2014-02-13 | 2014-02-14 | 494FS+3w |  |  | 274.4d | 0d |  | Mktg | Mktg | LP | Comm | Design | New Package, New Formula, Commercial Concept/Sell-in |
| 511 | 1.8.2.7.6.9.2 | Marketing Plan Alignment Meeting (date with agency) |  | 2d | 2014-02-14 | 2014-02-18 | 510 |  |  | 274.4d | 0d |  | Mktg | Mktg | LP | Comm | Design | New Package, New Formula, Commercial Concept/Sell-in |
| 512 | 1.8.2.7.6.9.3 | BASES I Building Model |  | 4w | 2014-02-18 | 2014-03-18 | 511 |  |  | 274.4d | 1d |  | Mktg | Mktg | LP | Comm | Design | New Package, New Formula, Commercial Concept/Sell-in |
| 513 | 1.8.2.7.6.9.4 | BASES I Volume Topline to IBO (date expected) |  | 4d | 2014-03-19 | 2014-03-25 | 506, 508, 512 |  |  | 273.4d | 0d |  | A&I | A&I | LP | Comm | Design | New Package, New Formula, Commercial Concept/Sell-in |
| 514 | 1.8.2.7.6.9.5 | BASES I IBO Turn Around and CMK Approval |  | 1w | 2014-03-25 | 2014-04-01 | 513 |  |  | 273.4d | 0d |  | A&I | A&I | LP | Comm | Design | New Package, New Formula, Commercial Concept/Sell-in |
| 515 | 1.8.2.7.6.9.6 | BASES I Financials |  | 1w | 2014-03-25 | 2014-04-01 | 513 |  |  | 273.4d | 0d |  | Finance | Finance | LP | Comm | Design | New Package, New Formula, Commercial Concept/Sell-in |
| 516 | 1.8.2.7.6.9.7 | BASES I Diagnostic Report/Tables (date expected) |  | 1w | 2014-03-19 | 2014-03-26 | 506, 508, 512 |  |  | 277.4d | 4d |  | A&I | A&I | LP | Comm | Design | New Package, New Formula, Commercial Concept/Sell-in |
| 517 | 1.8.2.7.6.9.8 | BASES I CMK Forecast Delivered (date expected) |  | 1w | 2014-04-01 | 2014-04-08 | 514, 515, 516, 506, 162 |  |  | 273.4d | 0d |  | A&I | A&I | LP | Comm | Design | New Package, New Formula, Commercial Concept/Sell-in |
| 518 | 1.8.2.7.7 | **PC E&U (Variants Selected and Control legs)** |  | 238d | 2013-03-04 A | 2014-02-20 |  | 30% | 167.3d | 884.6d |  |  | PR | PR | LP | Tech | Design |  |
| 519 | 1.8.2.7.7.1 | Define PC E&U CRP |  | 2w | 2013-08-13 | 2013-08-26 | 595, 597 |  |  | 994.6d | 0d | start no earlier than 2011-05-05 | A&I | A&I | LP | Comm | Design | New Package, New Formula |
| 520 | 1.8.2.7.7.2 | Determine legs for PC E&U |  | 1w | 2013-08-27 | 2013-09-03 | 519 |  |  | 994.6d |  |  | A&I | A&I | LP | Comm | Design | New Package, New Formula |
| 521 | 1.8.2.7.7.3 | PC E&U CRP Approved | milestone | 0d | 2013-08-27 A | 2013-08-27 A | 520 | 100% |  |  |  | start no earlier than 2012-01-23 | A&I | A&I | LP | Comm | Design | New Package, New Formula |
| 522 | 1.8.2.7.7.4 | Success Criteria Per Leg Locked for PC E&U |  | 24.8w | 2013-03-04 A | 2013-08-27 | 521FF |  | 24.8w | 347d | 0d |  | PD | PR | LP | Comm | Design | New Package, New Formula |
| 523 | 1.8.2.7.7.5 | **Product Prep for PC E&U** |  | 70d | 2013-05-24 | 2013-09-03 |  |  |  | 418d |  |  | PR | PR | LP | Tech | Design | New Package, New Formula |
| 524 | 1.8.2.7.7.5.1 | **PC E&U Formulas defined and prelim testing** |  | 37d | 2013-05-24 | 2013-07-17 |  |  |  | 418d |  |  | PD | PD | LP | Tech | Design |  |
| 525 | 1.8.2.7.7.5.1.1 | **Model Formulas to Deliver Success Criteria** |  | 37d | 2013-05-24 | 2013-07-17 |  |  |  | 418d |  |  | PD | PD | LP | Tech | Design |  |
| 526 | 1.8.2.7.7.5.1.1.1 | Complete All Variants Scope/Needs |  | 7.4w | 2013-05-24 | 2013-07-17 | 425 |  |  | 418d | 0d |  | PD | PD | LP | Tech | Design | New Package, New Formula |
| 527 | 1.8.2.7.7.5.2 | Identify RM's needed for wide range of primary packs |  | 1d | 2013-06-24 | 2013-06-24 | 526SS+4w |  |  | 421d | 0d |  | Process | Process | LP | Tech | Design | New Package, New Formula |
| 528 | 1.8.2.7.7.5.3 | Order RM's/PMs for PC E&U |  | 3d | 2013-06-25 | 2013-06-27 | 527 |  |  | 421d | 0d |  | PD | Process | LP | Tech | Design | New Package, New Formula |
| 529 | 1.8.2.7.7.5.4 | RM's Matls Received \ for PC E&U |  | 2w | 2013-06-28 | 2013-07-12 | 528 |  |  | 421d | 3d |  | PD | Process | LP | Tech | Design | New Package, New Formula |
| 530 | 1.8.2.7.7.5.5 | Preview batch making for PC E&U |  | 1w | 2013-07-18 | 2013-07-24 | 529, 526 |  |  | 418d | 0d |  | PD | Process | LP | Tech | Design | New Package, New Formula |
| 531 | 1.8.2.7.7.5.6 | Preview batch testing for PC E&U (incl stability if applicable) |  | 2w | 2013-07-25 | 2013-08-07 | 530 |  |  | 418d | 0d |  | PD | PR | LP | Tech | Design | New Package, New Formula |
| 532 | 1.8.2.7.7.5.7 | Create MFC's |  | 2w | 2013-07-25 | 2013-08-07 | 530 |  |  | 432d | 0d |  | PD | Process | LP | Tech | Design | New Package, New Formula |
| 533 | 1.8.2.7.7.5.8 | Final product making for PC E&U |  | 2d | 2013-08-22 | 2013-08-23 | 531FS+2w |  |  | 418d | 0d |  | PD | Process | LP | Tech | Design | New Package, New Formula |
| 534 | 1.8.2.7.7.5.9 | Final product testing for PC E&U |  | 11ed | 2013-08-23 | 2013-09-03 | 533 |  |  | 1892.5d | 106.88d |  | PD | PR | LP | Tech | Design | New Package, New Formula |

| ID | WBS | Task | Type | Duration | Start | Finish | Predecessors | Complete | Remaining | Total slack | Free slack | Text1 | Text2 | LP | Text10 | Text27 | Text28 |
| --- | --- | --- | --- | --- | --- | --- | --- | --- | --- | --- | --- | --- | --- | --- | --- | --- | --- |
| 535 | 1.8.2.7.7.6 | **Packout Prep for PC E&U** |  | 165.5d | 2013-03-12 A | 2013-11-05 |  | 79% | 35.24d | 396.5d |  | PR | Process | LP | Tech | Design | New Package, New Formula |
| 536 | 1.8.2.7.7.6.1 | Receive Packing Materials |  | 146d | 2013-03-12 A | 2013-10-08 A | 528 | 100% |  |  |  | PR | Process | LP | Tech | Design | New Package, New Formula |
| 537 | 1.8.2.7.7.6.2 | Pack-out Product for PC E&U |  | 1w | 2013-10-09 | 2013-10-15 | 534, 536 |  |  | 396.5d | 0d | PD | PR | LP | Tech | Design | New Package, New Formula |
| 538 | 1.8.2.7.7.6.3 | Micro Product for PC E&U (if applicable) |  | 1.5w | 2013-10-16 | 2013-10-25 | 537 |  |  | 396.5d | 0d | PD | PR | LP | Tech | Design | New Package, New Formula |
| 539 | 1.8.2.7.7.6.4 | **PC E&U Test Materials/ Clearance** |  | 60.5d | 2013-08-08 | 2013-11-01 |  |  |  | 396.5d |  | PR | PR | LP | Tech | Design | New Package, New Formula |
| 540 | 1.8.2.7.7.6.4.1 | Submit SMART |  | 4w | 2013-08-08 | 2013-09-05 | 532 |  |  | 432d | 35.5d | PR | PR | LP | Tech | Design | New Package, New Formula |
| 541 | 1.8.2.7.7.6.4.2 | Complete SMART |  | 5d | 2013-10-25 | 2013-11-01 | 538, 540 |  |  | 396.5d | 0d | PR | PR | LP | Tech | Design | New Package, New Formula |
| 542 | 1.8.2.7.7.6.5 | Product shipped to agency for PC E&U |  | 2d | 2013-11-01 | 2013-11-05 | 538, 541 |  |  | 396.5d | 18.5d | PR | PR | LP | Tech | Design | New Package, New Formula |
| 543 | 1.8.2.7.7.7 | **Product Placement** |  | 31d | 2013-11-25 A | 2014-01-23 |  |  | 31d | 378d |  | PR | PR | LP | Tech | Design | New Package, New Formula |
| 544 | 1.8.2.7.7.7.1 | Concepts to agency for PC E&U | milestone | 0d | 2013-11-25 A | 2013-11-25 A | 522FS+63d | 100% |  |  |  | PR | PR | LP | Tech | Design | New Package, New Formula |
| 545 | 1.8.2.7.7.7.2 | E&U Questionnaire to P&G |  | 2d | 2013-11-26 | 2013-12-02 | 544 |  |  | 378d | 0d | PR | PR | LP | Tech | Design | New Package, New Formula |
| 546 | 1.8.2.7.7.7.3 | P&G Approval of E&U Questionnaire |  | 2d | 2013-12-03 | 2013-12-04 | 545 |  |  | 378d | 0d | PR | PR | LP | Tech | Design | New Package, New Formula |
| 547 | 1.8.2.7.7.7.4 | E&U Field Screener |  | 5d | 2013-12-05 | 2013-12-11 | 542, 546 |  |  | 378d | 0d | PR | PR | LP | Tech | Design | New Package, New Formula |
| 548 | 1.8.2.7.7.7.5 | E&U Packout/Product Placed |  | 2d | 2013-12-05 | 2013-12-06 | 547SS |  |  | 378d | 0d | PR | PR | LP | Tech | Design | New Package, New Formula |
| 549 | 1.8.2.7.7.7.6 | PC E&U Usage |  | 2w | 2013-12-09 | 2013-12-20 | 548 |  |  | 378d | 0d | PR | PR | LP | Tech | Design | New Package, New Formula |
| 550 | 1.8.2.7.7.7.7 | PC E&U Recall/Usage Questionnaire |  | 3w | 2014-01-02 | 2014-01-23 | 549 |  |  | 378d | 0d | PR | PR | LP | Tech | Design | New Package, New Formula |
| 551 | 1.8.2.7.7.8 | PC E&U Results Summary |  | 4w | 2014-01-24 | 2014-02-20 | 550 |  |  | 378d | 0d | PR | PR | LP | Tech | Design | New Package, New Formula |
| 552 | 1.8.2.7.8 | **3D BRIC Shelf Test** |  | 47d | 2013-12-17 A | 2014-03-04 |  |  | 47d | 876.6d |  | A&I | A&I | LP | Comm | Design |  |
| 553 | 1.8.2.7.8.1 | Kick off 3D Shelf Test Work |  | 6d | 2013-12-17 | 2014-01-03 | 368FS+25d |  |  | 888.6d | 0d | A&I | A&I |  | Comm | Design | New Artwork, New Package, New Brand Architecture |
| 554 | 1.8.2.7.8.2 | Approve Scope and PACE |  | 1d | 2014-01-06 | 2014-01-06 | 553 |  |  | 888.6d | 0d | IDM/A&I | A&I/IL |  | Comm | Design | New Artwork, New Package, New Brand Architecture |
| 555 | 1.8.2.7.8.3 | Develop the Shelf POG’s 3D |  | 1.5d | 2014-01-06 | 2014-01-07 | 553 |  |  | 914.6d | 0d | Sales | Sales |  | Comm | Design | New Artwork, New Package, New Brand Architecture |
| 556 | 1.8.2.7.8.4 | Decision for Footprints/Sizes for 3D Shelf Test |  | 1.5d | 2014-01-07 | 2014-01-08 | 555 |  |  | 914.6d |  | Sales | Sales/Nate |  | Comm | Design | New Artwork, New Package, New Brand Architecture |
| 557 | 1.8.2.7.8.5 | Lock Control Shelf POG’s and label spots/develop SKU list/number coding | milestone | 0d | 2014-01-08 A | 2014-01-08 A | 556 | 100% |  |  |  | IDM/Sales | IL/Sales |  | Comm | Design | New Artwork, New Package, New Brand Architecture |
| 558 | 1.8.2.7.8.6 | Lock New Modular POG's |  | 1w | 2014-01-07 | 2014-01-13 | 554 |  |  | 908.6d | 0d | Sales | Sales/Sales |  | Comm | Design | New Artwork, New Package, New Brand Architecture |
| 559 | 1.8.2.7.8.7 | Decision for SKUs for 3D Shelf Test – complete SKU list/number coding document |  | 3d | 2014-01-14 | 2014-01-16 | 557, 558 |  |  | 908.6d |  | Mktg | Mktg |  | Comm | Design | New Artwork, New Package, New Brand Architecture |
| 560 | 1.8.2.7.8.8 | Draft Shelf Test |  | 2w | 2014-01-07 | 2014-01-21 | 554 |  |  | 888.6d | 0d | A&I | Sales |  | Comm | Design | New Artwork, New Package, New Brand Architecture |

| ID | WBS | Task | Type | Duration | Start | Finish | Predecessors | Complete | Remaining | Total slack | Free slack | Text1 | Text2 | Text10 | Text27 | Text28 | Text11 | LP |
| --- | --- | --- | --- | --- | --- | --- | --- | --- | --- | --- | --- | --- | --- | --- | --- | --- | --- | --- |
| 561 | 1.8.2.7.8.9 | **Get Product for 3D Shelf Test R2** |  | 17d | 2014-01-16 A | 2014-02-11 |  |  | 17d | 891.6d |  | A&I | A&I | Comm | Design | New Artwork, New Package, New Brand Architecture |  |  |
| 562 | 1.8.2.7.8.9.1 | Send list of existing primary packaging needed to PS reps | milestone | 0d | 2014-01-16 A | 2014-01-16 A | 559 | 100% |  |  |  | A&I | A&I | Comm | Design | New Artwork, New Package, New Brand Architecture |  |  |
| 563 | 1.8.2.7.8.9.2 | Obtain new primary packages (new color/new sizes) |  | 3w | 2014-01-17 | 2014-02-07 | 562 |  |  | 891.6d | 0d | MPD | MPD | Comm | Design | New Artwork, New Package, New Brand Architecture |  |  |
| 564 | 1.8.2.7.8.9.3 | Obtain existing primary packaging |  | 2w | 2014-01-17 | 2014-01-31 | 562 |  |  | 896.6d | 5d | MPD | MPD | Comm | Design | New Artwork, New Package, New Brand Architecture |  |  |
| 565 | 1.8.2.7.8.9.4 | Generate Labels for new Primary Package |  | 2d | 2014-01-17 | 2014-01-21 | 562 |  |  | 904.6d | 13d | Design | Design | Comm | Design | New Artwork, New Package, New Brand Architecture | Comm |  |
| 566 | 1.8.2.7.8.9.5 | Send list of existing primary packaging needed to PS reps |  | 2d | 2014-02-10 | 2014-02-11 | 563, 564, 565 |  |  | 891.6d |  | Design | Design | Comm | Design | New Artwork, New Package, New Brand Architecture |  |  |
| 567 | 1.8.2.7.8.9.6 | Obtain new primary packages (new color/new sizes) | milestone | 0d | 2014-02-11 A | 2014-02-11 A | 566 | 100% |  |  |  | Design | Design | Comm | Design | New Artwork, New Package, New Brand Architecture |  |  |
| 568 | 1.8.2.7.8.10 | Obtain existing primary packaging |  | 2d | 2014-01-22 | 2014-01-23 | 554, 560 |  |  | 888.6d | 0d | A&I | A&I | Comm | Design | New Artwork, New Package, New Brand Architecture |  |  |
| 569 | 1.8.2.7.8.11 | Generate Labels for new Primary Package |  | 2d | 2014-01-24 | 2014-01-27 | 568 |  |  | 888.6d | 11d | A&I | A&I | Comm | Design | New Artwork, New Package, New Brand Architecture |  |  |
| 570 | 1.8.2.7.8.12 | Conduct Test BRIC Shelf Test/Quals |  | 14d | 2014-02-12 | 2014-03-03 | 567, 569 |  |  | 877.6d |  | A&I | A&I/A&I | Comm | Design | New Artwork, New Package, New Brand Architecture | Comm |  |
| 571 | 1.8.2.7.8.13 | Results BRIC Shelf Test/Quals | milestone | 0d | 2014-03-03 A | 2014-03-03 A | 570 | 100% |  |  |  | A&I | A&I/A&I | Comm | Design | New Artwork, New Package, New Brand Architecture | Comm |  |
| 572 | 1.8.2.7.8.14 | Lead package commercially qualified |  | 1d | 2014-03-04 | 2014-03-04 | 571 |  |  | 325.1d | 0d | Sales | Sales | Comm | Design | New Artwork, New Package, New Brand Architecture | Comm | LP |
| 573 | 1.8.3 | **PC Technical Readiness** |  | 620d | 2013-03-04 A | 2015-09-02 |  |  | 620d | 502.6d |  | TRO | TRL/Steve | Tech | Design |  |  |  |
| 574 | 1.8.3.1 | **General Technical Readiness** |  | 479d | 2013-07-05 | 2015-06-17 |  |  |  | 427.6d |  | Eng | Process | Tech | Design |  |  |  |
| 575 | 1.8.3.1.1 | GTRO/dTRM update to get to PC |  | 2w | 2013-07-30 | 2013-08-12 | 593 |  |  | 800.6d | 507d | PD | Process | Tech | Design | All |  |  |
| 576 | 1.8.3.1.2 | Freedom to Practice issues identified & execute IP strategy |  | 2w | 2013-07-05 | 2013-07-18 | 101 |  |  | 817.6d | 524d | PR | PR | Tech | Design | All |  |  |
| 577 | 1.8.3.1.3 | Technical learning plan updated |  | 2w | 2013-08-01 | 2013-08-14 | 107, 593, 3FS+3mo |  |  | 798.6d | 505d | Process | Process | Tech | Design | All |  |  |
| 578 | 1.8.3.1.4 | TFS finalized |  | 2w | 2015-06-04 | 2015-06-17 | 593, 105, 672FS-3mo |  |  | 293.6d | 0d | Process | Process | Tech | Design | All |  |  |
| 579 | 1.8.3.1.5 | QEC expanded |  | 2w | 2015-06-04 | 2015-06-17 | 108, 593, 672FS-3mo |  |  | 427.6d | 0d | PR | PR | Tech | Design | All |  |  |
| 580 | 1.8.3.1.6 | Process flowchart final |  | 1w | 2014-05-23 | 2014-05-30 | 593, 106, 845SS |  |  | 551.6d | 258d | Process | Process | Tech | Design | All |  |  |
| 581 | 1.8.3.1.7 | Initiative Start-up (ISU) risk assessment #1 |  | 1w | 2013-07-30 | 2013-08-05 | 593 |  |  | 455.9d | 0d | Eng | Eng/Eng | Tech | Design | All |  |  |
| 582 | 1.8.3.1.8 | Initiative Start Up risk assessment #2 |  | 1d | 2015-01-22 | 2015-01-22 | 856 |  |  | 102.9d | 4d | Eng | Eng/Eng | Tech | Design | All |  |  |
| 583 | 1.8.3.1.9 | Overall Risk Assessment (ORA) develop/update |  | 2w | 2015-01-22 | 2015-02-04 | 593, 856 |  |  | 443.6d | 150d | Eng | Eng/Eng | Tech | Design | All |  |  |
| 584 | 1.8.3.1.10 | Checklist Based Design Review (CBDP) |  | 2w | 2015-01-15 | 2015-01-28 | 593, 856SS |  |  | 98.9d | 0d | Eng | Eng/Eng | Tech | Design | All |  |  |
| 585 | 1.8.3.1.11 | Patent design Trademark application complete |  | 60d | 2013-07-05 | 2013-09-27 | 101 |  |  | 767.6d | 474d | Mktg | Mktg | Tech | Design | All |  |  |

| ID | WBS | Task | Type | Duration | Start | Finish | Predecessors | Complete | Remaining | Total slack | Free slack | Constraint | Text1 | Text2 | Text10 | Text27 | Text28 |
| --- | --- | --- | --- | --- | --- | --- | --- | --- | --- | --- | --- | --- | --- | --- | --- | --- | --- |
| 586 | 1.8.3.2 | **Product PC Tech Ready** |  | 517d | 2013-07-29 A | 2015-09-02 |  |  | 517d | 502.6d |  |  | PD | PD | Tech | Design |  |
| 587 | 1.8.3.2.1 | **Define Final Formulas** |  | 517d | 2013-07-29 A | 2015-09-02 |  |  | 517d | 502.6d |  |  | PD | PD | Tech | Design |  |
| 588 | 1.8.3.2.1.1 | **E&U Legs** |  | 89.5d | 2013-09-10 | 2014-01-29 |  |  |  | 831.1d |  |  | PD | PD | Tech | Design |  |
| 589 | 1.8.3.2.1.1.1 | E&U make products (list variants and month needed) |  | 30d | 2013-09-10 | 2013-10-21 | 98 |  |  | 831.1d | 0d |  | Process | Process | Tech | Design | New Formula |
| 590 | 1.8.3.2.1.1.2 | Fill E&U product |  | 2w | 2013-10-24 | 2013-11-06 | 589FS+2d |  |  | 831.1d | 0d |  | PR | Russ | Tech | Design | New Formula |
| 591 | 1.8.3.2.1.1.3 | Place E&U micro test & results |  | 9.5w | 2013-11-07 | 2014-01-29 | 589, 590 |  |  | 831.1d | 0d |  | PR | PR | Tech | Design | New Formula |
| 592 | 1.8.3.2.1.2 | **Develop Initial Formulas** |  | 10d | 2013-07-29 A | 2013-08-12 |  |  | 10d | 994.6d |  |  | PD | PD | Tech | Design | New Formula |
| 593 | 1.8.3.2.1.2.1 | Define Product Strategy/Technical Design Frozen | milestone | 0d | 2013-07-29 A | 2013-07-29 A | 66 | 100% |  |  |  | start no earlier than 2011-10-18 | PR | TRL | Tech | Design | New Formula |
| 594 | 1.8.3.2.1.2.2 | Define Success Criteria |  | 1w | 2013-07-30 | 2013-08-05 | 593 |  |  | 967.6d | 0d |  | PR | PR | Tech | Design | New Formula |
| 595 | 1.8.3.2.1.2.3 | Develop Draft Scope for CUC (select variants) |  | 1d | 2013-08-06 | 2013-08-06 | 594 |  |  | 967.6d | 0d |  | PR | PR | Tech | Design | New Formula |
| 596 | 1.8.3.2.1.2.4 | Develop Draft Scope for BASES I |  | 1w | 2013-08-06 | 2013-08-12 | 594 |  |  | 994.6d | 0d |  | PR | PR | Tech | Design | New Formula |
| 597 | 1.8.3.2.1.2.5 | Develop Draft Scope for PC E&U |  | 1w | 2013-08-06 | 2013-08-12 | 594 |  |  | 994.6d | 0d |  | PR | PR | Tech | Design | New Formula |
| 598 | 1.8.3.2.1.3 | **Lock Final Formulas** |  | 498d | 2013-08-23 A | 2015-09-02 |  |  | 498d | 502.6d |  |  | PD | PD | Tech | Design |  |
| 599 | 1.8.3.2.1.3.1 | Approve CUC results | milestone | 0d | 2013-10-31 A | 2013-10-31 A | 444 | 100% |  |  |  |  | PR | TRL | Tech | Design | New Artwork, New Package, New Brand Architecture |
| 600 | 1.8.3.2.1.3.2 | Approve BASES II results |  | 4d | 2014-04-08 | 2014-04-14 | 517, 653 |  |  | 345.5d | 0d |  | PR | TRL | Tech | Design | New Artwork, New Package, New Brand Architecture |
| 601 | 1.8.3.2.1.3.3 | Approve PC E&U results |  | 4d | 2014-02-21 | 2014-02-26 | 551, 653 |  |  | 378d | 32.5d |  | PR | TRL | Tech | Design | New Formula |
| 602 | 1.8.3.2.1.3.4 | Complete formula definition for all non-consumer tested formulas (list variants) |  | 1w | 2014-12-10 | 2014-12-17 | 604SF |  |  | 678.6d |  |  | Formula | PD | Tech | Design | New Formula |
| 603 | 1.8.3.2.1.3.5 | Complete formula definition for any variant that needs requalification | milestone | 0d | 2014-05-29 A | 2014-05-29 A | 461 | 100% |  |  |  |  | Formula | PD | Tech | Design | New Formula |
| 604 | 1.8.3.2.1.3.6 | Place non consumer tested formulas in stability |  | 1w | 2014-12-17 | 2015-01-06 | 5FF-90ed |  |  | 673.6d | 0d |  | Process | Process | Tech | Design | New Formula |
| 605 | 1.8.3.2.1.3.7 | **Preliminary Stability - Physical** |  | 498d | 2013-08-23 | 2015-09-02 |  |  |  | 293.6d |  |  | Process | Process | Tech | Design |  |
| 606 | 1.8.3.2.1.3.7.1 | 6 wks read |  | 42ed | 2015-04-29 | 2015-06-10 | 452, 469, 531, 475 |  |  | 1235.6d | 0d |  | Process | Process | Tech | Design | New Formula |
| 607 | 1.8.3.2.1.3.7.2 | 12 wks read |  | 84ed | 2015-06-10 | 2015-09-02 | 452, 469, 531, 475, 606 |  |  | 1235.6d | 1.88d |  | Process | Process | Tech | Design | New Formula |
| 608 | 1.8.3.2.1.3.7.3 | Stability suds |  | 90ed | 2013-08-23 | 2013-11-21 | 452, 531, 533 |  |  | 3185.6d | 1951.88d |  | Process | Process | Tech | Design | New Formula |
| 609 | 1.8.3.2.1.3.8 | Preliminary formula card | milestone | 0d | 2014-09-29 A | 2014-09-29 A | 599, 600, 601, 607, 608, 603, 508 | 100% |  |  |  |  | Process | Process | Tech | Design | New Formula |

Notes:
- 589: Pure Green AKL / AF8017 / Atlantis AKL

| ID | WBS | Task | Duration | Start | Finish | Predecessors | Total slack | Free slack | Text1 | Text2 | Text10 | Text27 | Text28 |
| --- | --- | --- | --- | --- | --- | --- | --- | --- | --- | --- | --- | --- | --- |
| 610 | 1.8.3.2.1.4 | **Initial POC/Claims Approval to support Package** | 6d | 2015-04-30 | 2015-05-07 |  | 424.6d |  | PR | PR | Tech | Design |  |
| 611 | 1.8.3.2.1.4.1 | Initial Preview batch performance/success criteria documentation | 1d | 2015-04-30 | 2015-04-30 | 531, 475, 469, 362 | 424.6d | 0d | Mktg | Mktg | Comm | Design | New Formula, New Claims |
| 612 | 1.8.3.2.1.4.2 | Initial POC approval of performance/success criteria documentation | 1w | 2015-05-01 | 2015-05-07 | 611 | 424.6d | 0d | Mktg/ PR | Mktg/ PR | Comm | Design | New Formula, New Claims |
| 613 | 1.8.3.2.1.4.3 | Initial Approval of direction of Claims using success criteria | 1w | 2015-05-01 | 2015-05-07 | 612SS | 424.6d | 0d | Mktg/ PR | Mktg/ PR | Comm | Design | New Formula, New Claims |
| 614 | 1.8.3.3 | **Package PC Tech Ready** | 456d | 2013-05-23 | 2015-04-06 |  | 0d |  | TRO | Steve | Tech | Design |  |
| 615 | 1.8.3.3.1 | **Primary Package Pre-Pilot for BASES/3D BISI-P** | 456d | 2013-05-23 | 2015-04-06 |  | 0d |  | Pkg Dev | Bill | Tech | Design |  |
| 616 | 1.8.3.3.1.1 | Issue PO for Pilot/Prototype Program | 6d | 2013-05-23 | 2013-05-31 | 114FS+1w | 34.5d |  | Pkg Dev | Finance | Tech | Design | New Package |
| 617 | 1.8.3.3.1.2 | **Primary Pack Development, Qualification and Production (incl cavity, molds, builds, install, ship tests, etc)** | 341.5d | 2013-07-22 | 2014-12-09 | 616 | 0d |  | Pkg Dev | Pkg Dev | Tech | Design |  |
| 618 | 1.8.3.3.1.2.1 | Drawing & 3D Model | 39.5d | 2013-07-22 | 2013-09-16 | 409SF+6d | 0d |  | Pkg Dev | Pkg Dev | Tech | Design | New Package |
| 619 | 1.8.3.3.1.2.2 | Complete M&S/Sign off on DIA for all new Primary Packs | 64.5d | 2013-09-17 | 2013-12-19 | 618 | 0d |  | Pkg Dev | Pkg Dev | Tech | Design | New Package |
| 620 | 1.8.3.3.1.2.3 | Primary Pack Unit Cavity Builds | 42.5d | 2013-12-19 | 2014-02-28 | 619 | 0d |  | Pkg Dev | Pkg Dev | Tech | Design | New Package |
| 621 | 1.8.3.3.1.2.4 | Unit Cavity Trials / Qualification | 120d | 2014-03-03 | 2014-08-20 | 620 | 0d |  | Pkg Dev | Pkg Dev | Tech | Design | New Package |
| 622 | 1.8.3.3.1.2.5 | Unit Runs | 34d | 2014-08-21 | 2014-10-08 | 621 | 0d |  | Pkg Dev | Pkg Dev | Tech | Design | New Package |
| 623 | 1.8.3.3.1.2.6 | Unit Run / Fresh & Aged Data | 1w | 2014-10-09 | 2014-10-15 | 622 | 0d |  | Pkg Dev | Pkg Dev | Tech | Design | New Package |
| 624 | 1.8.3.3.1.2.7 | ESCR & Fill Trials | 2w | 2014-10-16 | 2014-10-29 | 623 | 0d |  | Pkg Dev | Pkg Dev | Tech | Design | New Package |
| 625 | 1.8.3.3.1.2.8 | Ship Stack / P&G 5M | 3.8w | 2014-10-30 | 2014-11-25 | 624 | 0d |  | Pkg Dev | Pkg Dev | Tech | Design | New Package |
| 626 | 1.8.3.3.1.2.9 | Production Tool Approval | 7d | 2014-12-01 | 2014-12-09 | 625, 624 | 0d |  | Pkg Dev | Pkg Dev | Tech | Design | New Package |
| 627 | 1.8.3.3.1.3 | **Receive New packing material** | 67d | 2014-12-10 | 2015-03-26 |  | 0d |  | Pkg Dev | MPD | Tech | Design |  |
| 628 | 1.8.3.3.1.3.1 | **New packing material Prototype** | 67d | 2014-12-10 | 2015-03-26 |  | 0d |  | Pkg Dev | MPD | Tech | Design |  |
| 629 | 1.8.3.3.1.3.1.1 | Develop specs for new pkg mtl | 2w | 2014-12-10 | 2015-01-06 | 617 | 0d |  | Pkg Dev | MPD | Tech | Design | New Package |
| 630 | 1.8.3.3.1.3.1.2 | Work with Purchasing to confirm supplier for pkg mtl needed (incl. timing, specs, substrate, etc) | 1mo | 2014-12-10 | 2015-01-22 | 629SS | 0d |  | Purchasing | PUR | Tech | Design | New Package |
| 631 | 1.8.3.3.1.3.1.3 | Set up new supplier Aravo - inluding Legal Entity and all vendor locations and all MEP/SEP generated | 1w | 2015-01-23 | 2015-01-29 | 630 | 0d |  | Purchasing | PUR | Tech | Design | New Package |
| 632 | 1.8.3.3.1.3.1.4 | Develop specs for New packing material with supplier - 80/20 in Enovia including MEP/SEP | 1w | 2015-01-30 | 2015-02-05 | 631 | 0d |  | Purchasing | PUR | Tech | Design | New Package |
| 633 | 1.8.3.3.1.3.1.5 | Provide supplier with artwork for BASES/3D BISI-P | 1w | 2015-02-06 | 2015-02-12 | 630, 632 | 0d |  | Design | Agency | Tech | Design | New Package |
| 634 | 1.8.3.3.1.3.1.6 | Review & approve pkg mtg specs/stds | 1w | 2015-02-13 | 2015-02-19 | 629, 633 | 0d |  | Mktg | Mktg | Tech | Design | New Package |
| 635 | 1.8.3.3.1.3.1.7 | Supplier to deliver pkg mtl or prototype (incl production and delivery) | 5w | 2015-02-20 | 2015-03-26 | 634 | 0d |  | Pkg Dev | MPD | Tech | Design | New Package |
| 636 | 1.8.3.3.1.4 | Assemble FINAL pkg mtl for BASES/3D BISI-P | 1w | 2015-03-27 | 2015-04-02 | 635, 622 | 0d |  | Pkg Dev | Finance | Tech | Design | New Package, Commercial Toolkit/Sell-in |
| 637 | 1.8.3.3.1.5 | Ship pkg mtl for BASES/3D-BISIP | 2d | 2015-04-03 | 2015-04-06 | 636 | 0d |  | Pkg Dev | Finance | Tech | Design | New Package, Commercial Toolkit/Sell-in |

| ID | WBS | Task | Type | Duration | Start | Finish | Predecessors | Complete | Remaining | Total slack | Free slack | Text1 | Text2 | Text10 | Text27 |
| --- | --- | --- | --- | --- | --- | --- | --- | --- | --- | --- | --- | --- | --- | --- | --- |
| 638 | 1.8.3.4 | **Packing PC Readiness** |  | 450d | 2013-03-04 | 2015-01-07 |  |  |  | 463.6d |  | Eng | Eng | Tech | Design |
| 639 | 1.8.3.4.1 | 30% Design Basis Development & Sign-off |  | 7w | 2013-09-09 | 2013-10-25 | 33FS+3mo |  |  | 369d | 279d | Eng | Eng | Tech | Design |
| 640 | 1.8.3.4.2 | Lead Line Determination |  | 1w | 2014-12-18 | 2015-01-07 | 855FF |  |  | 90d |  | Eng | Eng | Tech | Design |
| 641 | 1.8.3.4.3 | **Testing for Transformations** |  | 50d | 2013-03-04 | 2013-05-13 |  |  |  | 863.6d |  | Eng | Eng | Tech | Design |
| 642 | 1.8.3.4.3.1 | Qualify IML Quality with New Code Dating |  | 6w | 2013-03-04 | 2013-04-15 |  |  |  | 863.6d | 0d | Eng | Eng | Tech | Design |
| 643 | 1.8.3.4.3.2 | Approval of Code Dating with IML |  | 4w | 2013-04-16 | 2013-05-13 | 642 |  |  | 863.6d | 570d | Eng | Eng | Tech | Design |
| 644 | 1.8.3.4.4 | Run Macro Trials at Labs/Sites - Round 1 |  | 2mo | 2014-10-09 | 2014-12-12 | 622 |  |  | 90d | 0d | Eng | Eng | Tech | Design |
| 645 | 1.8.3.4.5 | Run Macro Trials at Labs/Sites - Round 2 |  | 3d | 2014-12-15 | 2014-12-17 | 622, 644 |  |  | 90d | 0d | Eng | Eng | Tech | Design |
| 646 | 1.8.3.5 | **Supply Chain PC Readiness** |  | 395.5d | 2013-03-04 | 2014-10-06 |  |  |  | 727.1d |  | SNO | TBD | Tech | Design |
| 647 | 1.8.3.5.1 | Material Supplier FMECA & TFS |  | 1w | 2014-09-29 | 2014-10-06 | 675FS-3w, 609, 603 |  |  | 631.1d | 319.5d | MPD | Scott | Tech | Design |
| 648 | 1.8.3.5.2 | Confirm material supply usage/availability |  | 1w | 2014-09-29 | 2014-10-06 | 609, 603 |  |  | 529.1d | 0d | SNO | MSM TBD | Tech | Design |
| 649 | 1.8.3.5.3 | Agreement with Supply Network design (Mat'l Delivery Strategy) |  | 1w | 2014-09-29 | 2014-10-06 | 675, 609, 603 |  |  | 727.1d | 233.7d | SNO | Joel | Tech | Design |
| 650 | 1.8.3.5.4 | Supplier base capability/reliability - High Level Analysis |  | 4w | 2013-03-04 | 2013-04-01 |  |  |  | 893.6d | 0d | SNO | MSM TBD | Tech | Design |
| 651 | 1.8.3.5.5 | Formulate strategy for PtD time inventory cost |  | 4w | 2013-03-04 | 2013-04-01 | 650FF |  |  | 893.6d | 600d | SNO | MSM TBD | Tech | Design |
| 652 | 1.8.4 | **PC Financials** |  | 173.5d | 2013-09-30 A | 2014-06-18 |  |  | 173.5d | 802.1d |  | Finance | Finance | All | Design |
| 653 | 1.8.4.1 | Commercial and Financial Assessment of New SKU's |  | 3w | 2013-09-30 | 2013-10-18 | 409 |  |  | 455d | 77d | Finance | Finance | All | Design |
| 654 | 1.8.4.2 | **Initiative Economics** |  | 5d | 2014-04-08 A | 2014-04-15 |  |  | 5d | 283.4d |  | Finance | Finance | All | Design |
| 655 | 1.8.4.2.1 | **Volume Assumptions** |  | 0d | 2014-04-08 A | 2014-04-08 A |  | 100% |  |  |  | Finance | Finance | All | Design |
| 656 | 1.8.4.2.1.1 | Detailed Forecast (SIMPL red sheet) | milestone | 0d | 2014-04-08 A | 2014-04-08 A | 517 | 100% |  |  |  | A&I | A&I | Comm | Design |
| 657 | 1.8.4.2.1.2 | Awareness, Trial / Penetration | milestone | 0d | 2014-04-08 A | 2014-04-08 A | 517 | 100% |  |  |  | A&I | A&I | Comm | Design |
| 658 | 1.8.4.2.1.3 | Cannibalization | milestone | 0d | 2014-04-08 A | 2014-04-08 A | 517 | 100% |  |  |  | A&I | A&I | Comm | Design |
| 659 | 1.8.4.2.1.4 | Source of Volume Analysis | milestone | 0d | 2014-04-08 A | 2014-04-08 A | 517 | 100% |  |  |  | A&I | A&I | Comm | Design |
| 660 | 1.8.4.2.2 | **Financial Assumptions** |  | 5d | 2014-04-08 | 2014-04-15 |  |  |  | 283.4d |  | Finance | Finance | All | Design |
| 661 | 1.8.4.2.2.1 | SIMPL Financial Fact Sheet |  | 1w | 2014-04-08 | 2014-04-15 | 656, 657, 658, 659 |  |  | 283.4d | 10.5d | Finance | Finance | Comm | Design |
| 662 | 1.8.4.2.2.2 | Gross and Incremental NOS, DOPAT |  | 1w | 2014-04-08 | 2014-04-15 | 656, 657, 658, 659 |  |  | 283.4d | 10.5d | Finance | Finance | Comm | Design |
| 663 | 1.8.4.2.2.3 | Gross Margin |  | 1w | 2014-04-08 | 2014-04-15 | 656, 657, 658, 659 |  |  | 283.4d | 10.5d | Finance | Finance | Comm | Design |
| 664 | 1.8.4.2.2.4 | NPV |  | 1w | 2014-04-08 | 2014-04-15 | 656, 657, 658, 659 |  |  | 283.4d | 10.5d | Finance | Finance | Comm | Design |
| 665 | 1.8.4.3 | Business model & pricing |  | 1w | 2014-05-01 | 2014-05-07 | 163, 661, 662, 663, 664 |  |  | 272.9d | 27.5d | Finance | Finance | Comm | Design |

| ID | WBS | Task | Duration | Start | Finish | Predecessors | Remaining | Total slack | Free slack | Text1 | Text2 | Text10 | Text27 |
| --- | --- | --- | --- | --- | --- | --- | --- | --- | --- | --- | --- | --- | --- |
| 666 | 1.8.4.4 | **Cost locked** | 107.5d | 2014-01-14 | 2014-06-17 |  |  | 784.1d |  | Finance | Finance | All | Design |
| 667 | 1.8.4.4.1 | Capital Estimate Complete | 8w | 2014-01-14 | 2014-03-11 | 133, 675FF |  | 851.6d | 67.5d | Finance | Jenny | Comm | Design |
| 668 | 1.8.4.4.2 | Transition Costs estimate complete | 2w | 2014-04-30 | 2014-05-13 | 167 |  | 807.6d | 23.5d | SNO | Kelvin | Supply | Design |
| 669 | 1.8.4.4.3 | Formula cost estimate complete | 2mo | 2014-04-14 | 2014-06-17 | 599, 600, 601 |  | 784.1d | 0d | Finance | Jenny | Comm | Design |
| 670 | 1.8.4.5 | Update Financial Analysis for PC | 1d | 2014-06-17 | 2014-06-18 | 665, 667, 669, 668 |  | 802.1d | 145.5d | Finance | Finance | Comm | Design |
| 671 | 1.8.5 | **PC Prep** | 156d | 2015-01-29 | 2015-09-03 | 581, 582, 584 |  | 448.6d |  | IDM | IL | All | Design |
| 672 | 1.8.5.1 | Update Technical PC Documents | 1d | 2015-09-03 | 2015-09-03 | 575, 576, 577, 585, 600, 651, 583, 607, 608, 643, 645, 617, 637 |  | 293.6d | 0d | TRO | TRL/Steve | Tech | Design |
| 673 | 1.8.5.2 | Update Commercial PC documents | 1d | 2015-01-29 | 2015-01-29 | 670 |  | 656.6d |  | Mktg | Mktg | Comm | Design |
| 674 | 1.8.6 | **PC Project Specific Items** | 5d | 2014-03-05 | 2014-03-11 |  |  | 325.1d |  | IDM | IL | All | Design |
| 675 | 1.8.6.1 | Package design locked | 1w | 2014-03-05 | 2014-03-11 | 396, 572 |  | 325.1d | 0d | Pkg Dev | MPD | Comm | Design |
| 676 | 1.9 | **Launch Authorization/Launch Plan Agree. Readiness** | 831.6d? | 2013-03-04 A | 2016-06-24 |  | 831.6d? | 291d |  | IDM | IL | All | Qualify & Ready |
| 677 | 1.9.1 | **LA/LPA Market Readiness** | 159d | 2015-04-07 | 2015-11-13 |  |  | 50.9d |  | Sales | IL | Comm | Qualify & Ready |
| 678 | 1.9.1.1 | **Customer Selling Strategy Final** | 159d | 2015-04-07 | 2015-11-13 |  |  | 50.9d |  | Sales | IL | Comm | Qualify & Ready |
| 679 | 1.9.1.1.1 | Pricing final | 2w | 2015-04-07 | 2015-04-20 | 665, 5 |  | 50.9d | 0d | Sales | IL | Comm | Qualify & Ready |
| 680 | 1.9.1.1.2 | Customer plans in place for DPSM (Distribution, Pricing, Shelving, Merchandising)/MDA | 3mo | 2015-04-21 | 2015-07-21 | 679, 156 |  | 50.9d | 0d | Sales | Sales | Comm | Qualify & Ready |
| 681 | 1.9.1.1.3 | Update CVA | 3w | 2015-07-22 | 2015-08-11 | 680 |  | 420.6d | 0d | Sales | Sales | Comm | Qualify & Ready |
| 682 | 1.9.1.1.4 | Price List Order Guide (PLOG) data updated | 8w | 2015-08-12 | 2015-10-06 | 680, 5, 681 |  | 420.6d | 0d | Sales | Sales | Comm | Qualify & Ready |
| 683 | 1.9.1.1.5 | Plan Letter in place | 8w | 2015-07-22 | 2015-09-15 | 680, 5 |  | 425.6d | 0d | Sales | Sales | Comm | Qualify & Ready |
| 684 | 1.9.1.1.6 | Presentations (GBU, Multi GBU, Retail) | 2w | 2015-09-16 | 2015-09-29 | 683, 5 |  | 425.6d | 5d | Sales | Sales | Comm | Qualify & Ready |
| 685 | 1.9.1.1.7 | By channel financial & demand plans linked (BU & MO) | 6w | 2015-07-22 | 2015-09-01 | 680, 5 |  | 50.9d | 0d | Sales | Sales | Comm | Qualify & Ready |
| 686 | 1.9.1.1.8 | Finalize GBP(field release) materials | 28d | 2015-10-07 | 2015-11-13 | 685, 684, 5, 682 |  | 420.6d | 119d | Sales | Sales | Comm | Qualify & Ready |
| 687 | 1.9.1.2 | Commercial IP strategy final (FTP approved) | 1mo | 2015-04-07 | 2015-05-06 | 153, 5 |  | 587.6d |  | Mktg | Mktg | Comm | Qualify & Ready |
| 688 | 1.9.2 | **Release to Field (GBP) Prep** | 483d | 2013-09-19 | 2015-09-04 |  |  | 272.9d |  | Sales | Sales | Comm | Qualify & Ready |
| 689 | 1.9.2.1 | Initiate Data Entry Form (DEF) | 1.5mo | 2015-07-22 | 2015-09-04 | 155SS, 70, 71, 72, 680 |  | 500.6d |  | Sales | Sales | Comm | Qualify & Ready |
| 690 | 1.9.2.2 | Update Shopper Based Design | 2w | 2013-09-19 | 2013-10-02 | 152, 359 |  | 272.9d | 0d | Sales | Sales | Comm | Qualify & Ready |

| ID | WBS | Task | Type | Duration | Start | Finish | Predecessors | Complete | Remaining | Total slack | Free slack | Text1 | Text2 | Text10 | Text27 |
| --- | --- | --- | --- | --- | --- | --- | --- | --- | --- | --- | --- | --- | --- | --- | --- |
| 691 | 1.9.3 | **LA/LPA Commercial Readiness** |  | 322.5d | 2014-04-14 A | 2015-07-31 |  |  | 322.5d | 525.6d |  | Mktg | Eng | Comm | Qualify & Ready |
| 692 | 1.9.3.1 | Updates Marketing Plans Based on Pre-Table Top |  | 1w | 2015-05-19 | 2015-05-26 | 288 |  |  | 422.7d | 0d | Mktg | Eng | Comm | Qualify & Ready |
| 693 | 1.9.3.2 | Legal concurrence of Mktg (final) MNI |  | 2w | 2015-05-11 | 2015-05-22 | 613, 706 |  |  | 424.6d | 0d | Mktg | Eng | Comm | Qualify & Ready |
| 694 | 1.9.3.3 | TPA complete (to incl. trial plans) |  | 1w | 2015-04-07 | 2015-04-13 | 5 |  |  | 604.6d |  | A&I | Kristy | Comm | Qualify & Ready |
| 695 | 1.9.3.4 | Leverage plan approved |  | 4w | 2015-05-26 | 2015-06-23 | 5, 692 |  |  | 553.7d |  | Mktg | Eng | Comm | Qualify & Ready |
| 696 | 1.9.3.5 | Tabletop approved |  | 7d | 2015-07-22 | 2015-07-30 | 733, 743, 709, 710, 711, 741, 738, 737, 722, 721, 707 |  |  | 525.6d | 0d | Mktg | Eng | Comm | Qualify & Ready |
| 697 | 1.9.3.6 | MRAT Completed w/MDO | milestone | 0d | 2015-07-10 A | 2015-07-10 A | 696, 686, 694, 695 | 100% |  |  |  | Sales | Sales | Comm | Qualify & Ready |
| 698 | 1.9.3.7 | Initiative toolbox element complete |  | 1d | 2015-07-31 | 2015-07-31 | 171, 696 |  |  | 525.6d |  | Mktg | Eng | Comm | Qualify & Ready |
| 699 | 1.9.3.8 | Initiative tracker set-up |  | 1d | 2015-07-31 | 2015-07-31 | 696 |  |  | 525.6d |  | A&I | Kristy | Comm | Qualify & Ready |
| 700 | 1.9.3.9 | **Final POC/Claims Approval to Support all Mktg Elements** |  | 264.5d | 2014-04-14 A | 2015-05-12 |  |  | 264.5d | 583.6d |  | A&I | PR | Comm | Qualify & Ready |
| 701 | 1.9.3.9.1 | Product Available for R1 POCs (on-pack) | milestone | 0d | 2014-05-30 A | 2014-05-30 A | 600, 601, 602, 461 | 100% |  |  |  | PR | PR | Comm | Qualify & Ready |
| 702 | 1.9.3.9.2 | Product Available for R2 POCs (Downy) |  | 1d | 2014-04-14 | 2014-04-15 | 600, 601 |  |  | 847.1d |  | PR | PR | Comm | Qualify & Ready |
| 703 | 1.9.3.9.3 | Product Available for R3 POCs (All) | milestone | 0d | 2014-05-30 A | 2014-05-30 A | 600, 601, 602, 461 | 100% |  |  |  | PR | PR | Comm | Qualify & Ready |
| 704 | 1.9.3.9.4 | R1 Claims Chosen | milestone | 0d | 2014-06-04 A | 2014-06-04 A | 224 | 100% |  |  |  | Mktg | Eng | Comm | Qualify & Ready |
| 705 | 1.9.3.9.5 | POC testing R1 (all proposed) |  | 8w | 2014-06-05 | 2014-07-31 | 704, 701 |  |  | 345.6d | 0d | PR | PR | Comm | Qualify & Ready |
| 706 | 1.9.3.9.6 | Claim Legal Approval R1 |  | 1d | 2015-05-08 | 2015-05-08 | 705, 798 |  |  | 424.6d | 0d | Mktg | Eng | Comm | Qualify & Ready |
| 707 | 1.9.3.9.7 | Obtain NACS (Claim Number) R1 |  | 2d | 2015-05-11 | 2015-05-12 | 706 |  |  | 575.6d | 0d | Mktg | Eng | Comm | Qualify & Ready |
| 708 | 1.9.3.10 | **360 Mktg plan approved** |  | 5d | 2015-05-26 | 2015-06-02 |  |  |  | 485.7d |  | Mktg | Mktg | Comm | Qualify & Ready |
| 709 | 1.9.3.10.1 | Country XX |  | 1w | 2015-05-26 | 2015-06-02 | 692 |  |  | 485.7d | 5d | Mktg | Mktg | Comm | Qualify & Ready |
| 710 | 1.9.3.10.2 | Country XX |  | 1w | 2015-05-26 | 2015-06-02 | 692 |  |  | 560.7d | 35.1d | Mktg | Mktg | Comm | Qualify & Ready |
| 711 | 1.9.3.10.3 | Country XX |  | 1w | 2015-05-26 | 2015-06-02 | 692 |  |  | 560.7d | 35.1d | Mktg | Mktg | Comm | Qualify & Ready |
| 712 | 1.9.3.11 | **Initiative toolbox elements complete** |  | 117.5d | 2015-02-06 A | 2015-07-21 |  |  | 117.5d | 533.6d |  | Mktg | Mktg | Comm | Qualify & Ready |
| 713 | 1.9.3.11.1 | **TV Plans - Advertising Copy** |  | 93.4d | 2015-02-06 A | 2015-06-17 |  |  | 93.4d | 557.7d |  | Mktg | Saatchi | Comm | Qualify & Ready |
| 714 | 1.9.3.11.1.1 | **Digimatic Production** |  | 0d | 2015-05-05 A | 2015-05-05 A |  | 100% |  |  |  | Mktg | Saatchi | Comm | Qualify & Ready |
| 715 | 1.9.3.11.1.1.1 | Pre-Pro (award/pre-pro/dig production) | milestone | 0d | 2015-05-05 A | 2015-05-05 A | 5, 288FS-2w, 692FS-4w, 693, 282 | 100% |  |  |  | Mktg | Saatchi | Comm | Qualify & Ready |
| 716 | 1.9.3.11.1.1.2 | Round 1 Review | milestone | 0d | 2015-05-05 A | 2015-05-05 A | 715 | 100% |  |  |  | Mktg | Saatchi | Comm | Qualify & Ready |
| 717 | 1.9.3.11.1.1.3 | Round 2 Review | milestone | 0d | 2015-05-05 A | 2015-05-05 A | 716 | 100% |  |  |  | Mktg | Saatchi | Comm | Qualify & Ready |

| ID | WBS | Task | Type | Duration | Start | Finish | Predecessors | Complete | Remaining | Total slack | Free slack | Text1 | Text2 | Text10 | Text27 | LP |
| --- | --- | --- | --- | --- | --- | --- | --- | --- | --- | --- | --- | --- | --- | --- | --- | --- |
| 718 | 1.9.3.11.1.2 | **Digimatic Test #1** |  | 31d | 2015-05-05 A | 2015-06-17 |  |  | 31d | 549.7d |  | Mktg | Saatchi | Comm | Qualify & Ready |  |
| 719 | 1.9.3.11.1.2.1 | In Field Testing (GM & USH) |  | 5w | 2015-05-05 | 2015-06-09 | 717 |  |  | 549.7d | 0d | Mktg | Saatchi | Comm | Qualify & Ready |  |
| 720 | 1.9.3.11.1.2.2 | Test 1 Results |  | 1d | 2015-06-09 | 2015-06-10 | 719 |  |  | 549.7d | 0d | Mktg | Saatchi | Comm | Qualify & Ready |  |
| 721 | 1.9.3.11.1.2.3 | Revisions |  | 1w | 2015-06-10 | 2015-06-17 | 720 |  |  | 549.7d | 24.1d | Mktg | Saatchi | Comm | Qualify & Ready |  |
| 722 | 1.9.3.11.1.2.4 | Approve Final Direction for Full-up Production/GBP | milestone | 0d | 2015-06-17 A | 2015-06-17 A | 721 | 100% |  |  |  | Mktg | Saatchi | Comm | Qualify & Ready |  |
| 723 | 1.9.3.11.1.3 | **Full Up Production** |  | 65d | 2015-02-06 A | 2015-05-08 |  |  | 65d | 586.1d |  | Mktg | Saatchi | Comm | Qualify & Ready |  |
| 724 | 1.9.3.11.1.3.1 | PDD/Garment Brief Alignment |  | 1w | 2015-02-06 | 2015-02-13 | 282 |  |  | 621.1d | 0d | PR | PR | Comm | Qualify & Ready |  |
| 725 | 1.9.3.11.1.3.2 | Conduct Garment Search |  | 1w | 2015-02-13 | 2015-02-20 | 724 |  |  | 621.1d | 0d | PR | PR | Comm | Qualify & Ready |  |
| 726 | 1.9.3.11.1.3.3 | Conduct Garment Test |  | 4w | 2015-02-20 | 2015-03-20 | 725 |  |  | 621.1d |  | PR | PR | Comm | Qualify & Ready |  |
| 727 | 1.9.3.11.1.3.4 | Pre-bid/Bid/Award |  | 3w | 2015-02-06 | 2015-02-27 | 282 |  |  | 593.6d | 0d | Mktg | Saatchi | Comm | Qualify & Ready |  |
| 728 | 1.9.3.11.1.3.5 | Prep/Scout/Cast/Set Design/Wardrobe |  | 3w | 2015-02-27 | 2015-03-20 | 727 |  |  | 593.6d | 0d | Mktg | Saatchi | Comm | Qualify & Ready |  |
| 729 | 1.9.3.11.1.3.6 | Pre-pro Meeting/Shoot |  | 4w | 2015-03-20 | 2015-04-17 | 728 |  |  | 593.6d | 0d | Mktg | Saatchi | Comm | Qualify & Ready |  |
| 730 | 1.9.3.11.1.3.7 | Edit/Agency Approvals/Revisions |  | 1.5w | 2015-04-17 | 2015-04-28 | 729 |  |  | 593.6d |  | Mktg | Saatchi | Comm | Qualify & Ready |  |
| 731 | 1.9.3.11.1.3.8 | Present Rough Cuts | milestone | 0d | 2015-04-28 A | 2015-04-28 A | 730 | 100% |  |  |  | Mktg | Saatchi | Comm | Qualify & Ready |  |
| 732 | 1.9.3.11.1.3.9 | Approval/Finish (tie to field) |  | 1.5w | 2015-04-29 | 2015-05-08 | 731 |  |  | 586.1d | 342.5d | Mktg | Saatchi | Comm | Qualify & Ready |  |
| 733 | 1.9.3.11.2 | Print Plans |  | 3w | 2015-05-26 | 2015-06-16 | 283, 288, 692, 693 |  |  | 422.7d | 0d | Mktg | Saatchi | Comm | Qualify & Ready |  |
| 734 | 1.9.3.11.3 | **Digital Plans** |  | 42d | 2015-05-25 | 2015-07-21 |  |  |  | 485.6d |  | Mktg | Saatchi | Comm | Qualify & Ready |  |
| 735 | 1.9.3.11.3.1 | Digital Objectives and Strategy |  | 2w | 2015-05-25 | 2015-06-05 | 284, 288FS-4w, 693 |  |  | 485.6d | 0d | Mktg | Saatchi | Comm | Qualify & Ready |  |
| 736 | 1.9.3.11.3.2 | Menu of Executions (Websites, online ads, mobile ads etc.) |  | 2w | 2015-06-08 | 2015-06-19 | 735 |  |  | 485.6d | 0d | Mktg | Saatchi | Comm | Qualify & Ready |  |
| 737 | 1.9.3.11.3.3 | Search Guidelines |  | 1mo | 2015-06-22 | 2015-07-21 | 736 |  |  | 525.6d | 0d | Mktg | Saatchi | Comm | Qualify & Ready |  |
| 738 | 1.9.3.11.3.4 | iMedia Guidelines |  | 1mo | 2015-06-22 | 2015-07-21 | 736 |  |  | 485.6d | 0d | Mktg | Saatchi | Comm | Qualify & Ready |  |
| 739 | 1.9.3.11.4 | **In Store Plans** |  | 23d | 2015-05-26 | 2015-06-26 |  |  |  | 480.7d |  | Mktg | Mktg | Comm | Qualify & Ready |  |
| 740 | 1.9.3.11.4.1 | InStore Plans Qualified |  | 2w | 2015-05-26 | 2015-06-09 | 285, 288, 692, 693 |  |  | 480.7d | 0d | A&I | A&I | Comm | Qualify & Ready | LP |
| 741 | 1.9.3.11.4.2 | Confirm InStore Claims Are Approved by Legal |  | 2w | 2015-06-09 | 2015-06-23 | 709, 740 |  |  | 480.7d | 0d | Mktg | Mktg | Comm | Qualify & Ready |  |
| 742 | 1.9.3.11.4.3 | In Store Plans Released for Retailer Engagement |  | 3d | 2015-06-23 | 2015-06-26 | 741 |  |  | 480.7d | 0d | Mktg | Mktg | Comm | Qualify & Ready |  |
| 743 | 1.9.3.11.5 | Media Plans |  | 3w | 2015-05-26 | 2015-06-16 | 286, 288, 692, 693 |  |  | 550.7d | 25.1d | Mktg | Mktg | Comm | Qualify & Ready | LP |

| ID | WBS | Task | Type | Duration | Start | Finish | Predecessors | Complete | Remaining | Total slack | Free slack | Text1 | Text2 | Text10 | Text27 |
| --- | --- | --- | --- | --- | --- | --- | --- | --- | --- | --- | --- | --- | --- | --- | --- |
| 744 | 1.9.3.12 | **LA/LPA Artwork** |  | 258d | 2014-04-29 A | 2015-05-15 |  |  | 258d | 580.6d |  | SNO | IOL | Supply | Qualify & Ready |
| 745 | 1.9.3.12.1 | Final Proof of Claim Ready - temporary |  | 1d | 2014-04-29 | 2014-04-29 | 675FS+1.5mo |  |  | 325.1d | 0d | PR | PR | Supply | Qualify & Ready |
| 746 | 1.9.3.12.2 | Finalize name & designs |  | 1.5w | 2014-04-30 | 2014-05-09 | 745 |  |  | 325.1d | 0d | Design | Design | Supply | Qualify & Ready |
| 747 | 1.9.3.12.3 | Design Planning Meeting-Print Feasibility |  | 1d | 2014-05-07 | 2014-05-07 | 746SS+1w |  |  | 326.6d | 1.5d | Design | Design | Supply | Qualify & Ready |
| 748 | 1.9.3.12.4 | Final Review- w/ GM- Approval |  | 1d | 2014-05-09 | 2014-05-12 | 747, 746 |  |  | 325.1d | 0d | Design | Design | Supply | Qualify & Ready |
| 749 | 1.9.3.12.5 | DESIGN LOCK - Final Package to all Variants with Final Claims |  | 26d | 2014-05-12 | 2014-06-18 | 748 |  |  | 325.1d | 19.5d | Design | Design | Supply | Qualify & Ready |
| 750 | 1.9.3.12.6 | **Label Finish** |  | 25d | 2014-05-12 A | 2014-06-17 |  |  | 25d | 804.1d |  | Design | Design | Supply | Qualify & Ready |
| 751 | 1.9.3.12.6.1 | Agreed to Label Design | milestone | 0d | 2014-05-12 A | 2014-05-12 A | 748 | 100% |  |  |  | Design | Design | Comm | Qualify & Ready |
| 752 | 1.9.3.12.6.2 | Agreed to Test Substrates/SKUS/Finishes | milestone | 0d | 2014-05-12 A | 2014-05-12 A | 751 | 100% |  |  |  | Design | Design | Comm | Qualify & Ready |
| 753 | 1.9.3.12.6.3 | Separations/Print Tools |  | 2w | 2014-05-12 | 2014-05-27 | 752 |  |  | 804.1d | 0d | Design | Design | Comm | Qualify & Ready |
| 754 | 1.9.3.12.6.4 | Run new Labels/Bottles |  | 3w | 2014-05-27 | 2014-06-17 | 753 |  |  | 804.1d |  | Design | Design | Comm | Qualify & Ready |
| 755 | 1.9.3.12.6.5 | Final Approval of Locked Substrates and Finishes | milestone | 0d | 2014-06-17 A | 2014-06-17 A | 754 | 100% |  |  |  | Design | Design | Comm | Qualify & Ready |
| 756 | 1.9.3.12.7 | **Artwork Finalization** |  | 247d | 2014-05-14 | 2015-05-15 |  |  |  | 333.6d |  |  |  | Supply | Qualify & Ready |
| 757 | 1.9.3.12.7.1 | Create Completed POA list |  | 2d | 2014-05-14 | 2014-05-15 | 69 |  |  | 333.6d | 28d | PS | Eng/IOL | Supply | Qualify & Ready |
| 758 | 1.9.3.12.7.2 | Submit PDR's in EPadex (enter BC's/POAs) |  | 1w | 2014-06-26 | 2014-07-02 | 757, 70, 71, 72 |  |  | 305.6d | 0d | Mktg | Eng | Supply | Qualify & Ready |
| 759 | 1.9.3.12.7.3 | Artwork Alignment Meeting (DPM Mtg) |  | 1d | 2014-06-26 | 2014-06-26 | 758SS |  |  | 305.6d | 0d | PS | AW | Supply | Qualify & Ready |
| 760 | 1.9.3.12.7.4 | Approve PDR in EPadex |  | 3d | 2014-06-27 | 2014-07-01 | 759 |  |  | 305.6d | 0d | PS | AW | Supply | Qualify & Ready |
| 761 | 1.9.3.12.7.5 | Provide TD in illustrator format to SGS (UC cap only new item), Approved TD |  | 10d | 2014-07-02 | 2014-07-16 | 760 |  |  | 305.6d | 0d | MPD | Scott | Supply | Qualify & Ready |
| 762 | 1.9.3.12.7.6 | **PDR 1 (chose your scope of each PDR)** |  | 29d | 2014-07-17 | 2014-08-26 |  |  |  | 305.6d |  |  |  | Supply | Qualify & Ready |
| 763 | 1.9.3.12.7.6.1 | Agency Upload GOS to Epadex |  | 5d | 2014-07-17 | 2014-07-23 | 761, 749, 755 |  |  | 305.6d | 0d | Design | Design | Supply | Qualify & Ready |
| 764 | 1.9.3.12.7.6.2 | Graphic Options Approval in Epadex (DCIC) |  | 2d | 2014-07-24 | 2014-07-25 | 763 |  |  | 345.6d | 0d | Mktg | Eng | Supply | Qualify & Ready |
| 765 | 1.9.3.12.7.6.3 | **PDR #1 - Production Release** |  | 7d | 2014-07-28 | 2014-08-05 |  |  |  | 345.6d |  |  |  | Supply | Qualify & Ready |
| 766 | 1.9.3.12.7.6.3.1 | Color development (assume 8 unique designs) |  | 5d | 2014-07-28 | 2014-08-01 | 764 |  |  | 345.6d | 0d | Artwork | AW | Comm | Qualify & Ready |
| 767 | 1.9.3.12.7.6.3.2 | Master Copy Meeting- w/Legal - legal number for master copy |  | 1d | 2014-08-01 | 2014-08-01 | 764, 705 |  |  | 345.6d | 0d | Mktg | Eng | Comm | Qualify & Ready |
| 768 | 1.9.3.12.7.6.3.3 | Master Copy approval - all waves (MF mtg) |  | 2d | 2014-08-04 | 2014-08-05 | 766, 767 |  |  | 345.6d | 0d | Mktg | Eng | Comm | Qualify & Ready |
| 769 | 1.9.3.12.7.6.3.4 | Upload Master Copy |  | 2d | 2014-08-04 | 2014-08-05 | 768SS |  |  | 345.6d | 0d | Mktg | Eng | Comm | Qualify & Ready |
| 770 | 1.9.3.12.7.6.4 | Wave 1 - Approval |  | 3w | 2014-08-06 | 2014-08-26 | 769 |  |  | 345.6d | 0d | Artwork | AW | Supply | Qualify & Ready |

| ID | WBS | Task | Type | Duration | Start | Finish | Predecessors | Remaining | Total slack | Free slack | Text10 | Text27 | Text1 | Text2 |
| --- | --- | --- | --- | --- | --- | --- | --- | --- | --- | --- | --- | --- | --- | --- |
| 771 | 1.9.3.12.7.7 | **PDR 2 (Next Scope)** |  | 193d | 2014-07-31 | 2015-05-15 |  |  | 305.6d |  | Supply | Qualify & Ready |  |  |
| 772 | 1.9.3.12.7.7.1 | Agency Upload GOS to Epadex |  | 10d | 2014-07-31 | 2014-08-13 | 761, 749, 755, 763FS+5d |  | 305.6d | 0d | Comm | Qualify & Ready | Design | Design |
| 773 | 1.9.3.12.7.7.2 | Graphic Options Approval in Epadex (DCIC) |  | 2d | 2014-08-14 | 2014-08-15 | 772 |  | 305.6d | 0d | Comm | Qualify & Ready | Mktg | Eng |
| 774 | 1.9.3.12.7.7.3 | **PDR #2 - Production Release** |  | 181d | 2014-08-18 | 2015-05-15 |  |  | 305.6d |  |  | Qualify & Ready |  |  |
| 775 | 1.9.3.12.7.7.3.1 | Claim approval # needed (link to POC work) |  | 3d | 2015-05-13 | 2015-05-15 | 707 |  | 580.6d |  | Comm | Qualify & Ready | Artwork | AW |
| 776 | 1.9.3.12.7.7.3.2 | Color development (assume 20 unique designs) |  | 20d | 2014-08-18 | 2014-09-15 | 773 |  | 305.6d | 0d | Comm | Qualify & Ready | Artwork | AW |
| 777 | 1.9.3.12.7.7.3.3 | Master Copy Meeting- w/Legal - legal number for master copy |  | 5d | 2014-08-18 | 2014-08-22 | 773 |  | 320.6d | 15d | Comm | Qualify & Ready | Mktg | Eng |
| 778 | 1.9.3.12.7.7.3.4 | Master Copy approval - all waves (MF mtg) |  | 2d | 2014-09-16 | 2014-09-17 | 776, 777 |  | 305.6d | 0d | Comm | Qualify & Ready | Mktg | Eng |
| 779 | 1.9.3.12.7.7.3.5 | Upload Master Copy |  | 2d | 2014-09-16 | 2014-09-17 | 778SS |  | 305.6d | 0d | Comm | Qualify & Ready | Mktg | Eng |
| 780 | 1.9.3.12.7.7.4 | Wave 2 |  | 3w | 2014-09-18 | 2014-10-08 | 779 |  | 305.6d | 0d | Comm | Qualify & Ready | Artwork | AW |
| 781 | 1.9.3.12.7.7.5 | Wave 3 |  | 3w | 2014-09-23 | 2014-10-13 | 780SS+3d |  | 305.6d | 0d | Comm | Qualify & Ready | Artwork | AW |
| 782 | 1.9.3.12.7.7.6 | Wave 4 |  | 3w | 2014-09-26 | 2014-10-16 | 781SS+3d |  | 305.6d | 0d | Comm | Qualify & Ready | Artwork | AW |
| 783 | 1.9.3.12.7.7.7 | Wave 5 |  | 3w | 2014-10-01 | 2014-10-21 | 782SS+3d |  | 305.6d | 0d | Comm | Qualify & Ready | Artwork | AW |
| 784 | 1.9.3.12.7.7.8 | Wave 6 |  | 3w | 2014-10-06 | 2014-10-24 | 783SS+3d |  | 305.6d | 0d | Comm | Qualify & Ready | Artwork | AW |
| 785 | 1.9.3.12.7.7.9 | Wave 7 |  | 3w | 2014-10-09 | 2014-10-29 | 784SS+3d |  | 305.6d | 0d | Comm | Qualify & Ready | Artwork | AW |
| 786 | 1.9.3.12.7.7.10 | Wave 8 |  | 3w | 2014-10-14 | 2014-11-03 | 785SS+3d |  | 305.6d | 0d | Comm | Qualify & Ready | Artwork | AW |
| 787 | 1.9.3.12.7.7.11 | Wave 9 |  | 3w | 2014-10-17 | 2014-11-06 | 786SS+3d |  | 305.6d | 0d | Comm | Qualify & Ready | Artwork | AW |
| 788 | 1.9.3.12.7.7.12 | Wave 10 |  | 3w | 2014-10-22 | 2014-11-11 | 787SS+3d |  | 305.6d | 0d | Comm | Qualify & Ready | Artwork | AW |
| 789 | 1.9.3.12.7.7.13 | Wave 11 |  | 3w | 2014-10-27 | 2014-11-14 | 788SS+3d |  | 305.6d | 0d | Comm | Qualify & Ready | Artwork | AW |
| 790 | 1.9.3.12.7.7.14 | Wave 12 |  | 3w | 2014-10-30 | 2014-11-19 | 789SS+3d |  | 305.6d | 0d | Comm | Qualify & Ready | Artwork | AW |
| 791 | 1.9.4 | **LA/LPA Technical Readiness** |  | 831.6d? | 2013-03-04 A | 2016-06-24 |  | 831.6d? | 291d |  | Tech | Qualify & Ready | TRO | Process |
| 792 | 1.9.4.1 | **LA General Technical Readiness** |  | 723.6d | 2013-08-06 | 2016-06-24 |  |  | 291d |  | Tech | Qualify & Ready | TRO | Process |
| 793 | 1.9.4.1.1 | Prepare TRA |  | 2w | 2016-01-28 | 2016-02-10 | 7FS-3mo |  | 387.6d | 210d | Tech | Qualify & Ready | TRO | Eng |
| 794 | 1.9.4.1.2 | GTRO Updated (Risks summary, Learning plan & dashboard) |  | 2w | 2016-03-18 | 2016-03-31 | 7FS-6w |  | 351.6d |  | Tech | Qualify & Ready | TRO | Eng |
| 795 | 1.9.4.1.3 | Prepare TT&T plans |  | 1mo | 2016-03-18 | 2016-04-18 | 7FS-6w |  | 339.6d |  | Tech | Qualify & Ready | Process | Process |
| 796 | 1.9.4.1.4 | IP strategy complete | milestone | 0d | 2016-01-28 | 2016-01-28 | 7FS-3mo |  | 397.6d |  | Tech | Qualify & Ready | Pkg Dev | MPD |
| 797 | 1.9.4.1.5 | Patent & TM issues resolved | milestone | 0d | 2016-01-28 | 2016-01-28 | 7FS-3mo |  | 397.6d | 220d | Tech | Qualify & Ready | Pkg Dev | MPD |
| 798 | 1.9.4.1.6 | POC template complete & approved | milestone | 0d | 2015-05-07 | 2015-05-07 | 613 |  | 424.6d | 0d | Tech | Qualify & Ready | PD | PD |
| 799 | 1.9.4.1.7 | Regulatory issues resolved | milestone | 0d | 2016-01-28 | 2016-01-28 | 7FS-3mo |  | 311.6d | 0d | Tech | Qualify & Ready | TRO | Process |
| 800 | 1.9.4.1.8 | Agreement to Supply Network design | milestone | 0d | 2015-09-16 | 2015-09-16 | 649, 885, 879 |  | 493.4d |  | Supply | Qualify & Ready | SNO | IOL |
| 801 | 1.9.4.1.9 | TFS, PFS & Controls strategy final |  | 8mo | 2015-06-18 | 2016-02-18 | 578, 580 |  | 293.6d | 50d | Tech | Qualify & Ready | Eng | Eng |
| 802 | 1.9.4.1.10 | Finalize layouts/models/flow sheets |  | 1w | 2015-01-29 | 2015-02-04 | 584 |  | 564.6d | 321d | Tech | Qualify & Ready | Eng | Eng |
| 803 | 1.9.4.1.11 | SalesR #3 |  | 1d | 2015-04-21 | 2015-04-21 | 584, 858SS |  | 509.6d | 0d | Tech | Qualify & Ready | Eng | Eng |
| 804 | 1.9.4.1.12 | ISU #3 |  | 1d | 2013-08-06 | 2013-08-06 | 581 |  | 925.6d | 682d | Tech | Qualify & Ready | Eng | Eng |
| 805 | 1.9.4.1.13 | SalesR #4 |  | 1d | 2015-04-22 | 2015-04-22 | 803, 988 |  | 509.6d | 266d | Tech | Qualify & Ready | Eng | Eng |

Notes:
- 800: Need clarity on what this is

| ID | WBS | Task | Type | Duration | Start | Finish | Predecessors | Complete | Remaining | Total slack | Free slack | Text1 | Text2 | Text10 | Text27 |
| --- | --- | --- | --- | --- | --- | --- | --- | --- | --- | --- | --- | --- | --- | --- | --- |
| 806 | 1.9.4.1.14 | **Specs & Stds** |  | 325.6d | 2015-03-27 | 2016-06-24 |  |  |  | 209d |  | Pkg Dev | MPD | Tech | Qualify & Ready |
| 807 | 1.9.4.1.14.1 | Generate Final formula cards/Primary specs |  | 30d | 2016-01-14 | 2016-02-24 | 834, 609, 832, 647, 830, 603, 833, 811 |  |  | 311.6d | 10d | Process | Process | Tech | Qualify & Ready |
| 808 | 1.9.4.1.14.2 | Reblend Stds - if applicable |  | 3mo | 2016-01-14 | 2016-04-14 | 830 |  |  | 0d |  | Process | Process | Tech | Qualify & Ready |
| 809 | 1.9.4.1.14.3 | ASL/RMS/RMPI |  | 3mo | 2016-01-14 | 2016-04-14 | 830, 926 |  |  | 243.6d | 0d | Process | Process | Tech | Qualify & Ready |
| 810 | 1.9.4.1.14.4 | Process Control Standards |  | 2mo | 2016-01-14 | 2016-03-15 | 830 |  |  | 287.6d | 22d | Process | Process | Tech | Qualify & Ready |
| 811 | 1.9.4.1.14.5 | Mfg Stds (HDL Deviation Sheets) |  | 3mo | 2015-09-10 | 2015-12-10 | 826 |  |  | 262.6d | 0d | Process | Process | Tech | Qualify & Ready |
| 812 | 1.9.4.1.14.6 | **Packing Stds (IPS) - draft vs final** |  | 281.6d | 2015-03-27 | 2016-04-25 |  |  |  | 0d |  | Pkg Dev | MPD | Tech | Qualify & Ready |
| 813 | 1.9.4.1.14.6.1 | Formula Cards S&S |  | 2.3mo | 2016-02-15 | 2016-04-25 | 808SS+1mo |  |  | 0d |  | Pkg Dev | MPD | Tech | Qualify & Ready |
| 814 | 1.9.4.1.14.6.2 | Primary Pack S&S (caps, wraps, labels, transitions, corrugate, etc) |  | 2mo | 2015-03-27 | 2015-05-27 | 634, 635, 968, 770, 780, 781, 782, 783, 784, 785, 786, 787, 788, 789, 790 |  |  | 227.6d | 0d | Pkg Dev | MPD | Tech | Qualify & Ready |
| 815 | 1.9.4.1.14.6.3 | Other (tie sheets, corner posts, bulk shipper) S&S |  | 2w | 2015-05-28 | 2015-06-10 | 814 |  |  | 227.6d |  | Pkg Dev | MPD | Tech | Qualify & Ready |
| 816 | 1.9.4.1.14.7 | WPPI |  | 2mo | 2016-04-25 | 2016-06-24 | 831, 813, 814, 815 |  |  | 240d | 0d | Process | Process | Tech | Qualify & Ready |
| 817 | 1.9.4.1.14.8 | Product QEC |  | 2w | 2015-09-10 | 2015-09-23 | 706, 826 |  |  | 367.6d | 0d | Process | Process | Tech | Qualify & Ready |
| 818 | 1.9.4.1.14.9 | Packing QEC |  | 2w | 2015-06-18 | 2015-07-01 | 579 |  |  | 427.6d | 60d | Pkg Dev | Vanessa | Tech | Qualify & Ready |
| 819 | 1.9.4.1.14.10 | TFS |  | 2w | 2015-09-10 | 2015-09-23 | 826 |  |  | 367.6d | 0d | Process | Process | Tech | Qualify & Ready |
| 820 | 1.9.4.2 | **LA/LPA Product Tech Ready** |  | 415.5d | 2014-09-29 A | 2016-05-19 |  |  | 415.5d | 316.6d |  | Process | Process | Tech | Qualify & Ready |
| 821 | 1.9.4.2.1 | **Scale up for Start-up** |  | 115.5d | 2015-04-20 A | 2015-09-28 |  |  | 115.5d | 484.6d |  | Process | Process | Tech | Qualify & Ready |
| 822 | 1.9.4.2.1.1 | Pilot Scale trials |  | 16w | 2015-05-14 | 2015-09-02 | 471, 477, 533, 640 |  |  | 0d |  | Process | Process | Tech | Qualify & Ready |
| 823 | 1.9.4.2.1.2 | **Planning and Approvals for Manufacturing Feasibility EO (Intermediates & FP)** |  | 18d | 2015-09-03 | 2015-09-28 |  |  |  | 0d |  | Process | Process | Tech | Qualify & Ready |
| 824 | 1.9.4.2.1.2.1 | Develop and Approve initial Plan for EOs (Cost, Timing, etc) |  | 3d | 2015-09-03 | 2015-09-07 | 822, 599, 600, 601, 461 |  |  | 0d |  | Process | Process | Tech | Qualify & Ready |
| 825 | 1.9.4.2.1.2.2 | Procure Raw Materials for inputs to formula (perfumes, etc) |  | 3w | 2015-09-08 | 2015-09-28 | 824 |  |  | 484.6d |  | Process | Process | Tech | Qualify & Ready |
| 826 | 1.9.4.2.1.3 | Manufacturing Feasibility EO (list all EOs and location) |  | 1w | 2015-09-03 | 2015-09-09 | 824SS |  |  | 0d |  | Process | Process | Tech | Qualify & Ready |
| 827 | 1.9.4.2.1.4 | Basis for Scale Up | milestone | 0d | 2015-04-20 A | 2015-04-20 A | 471, 477, 533, 603, 608, 826 | 100% |  |  |  | Process | Process | Tech | Qualify & Ready |
| 828 | 1.9.4.2.2 | **Scale Up Stability - Physical** |  | 130d | 2015-09-09 | 2016-03-09 |  |  |  | 0d |  | Process | Process | Tech | Qualify & Ready |
| 829 | 1.9.4.2.2.1 | 6wk read |  | 42ed | 2015-09-09 | 2015-10-21 | 826 |  |  | 1.88d | 0d | Process | Process | Tech | Qualify & Ready |
| 830 | 1.9.4.2.2.2 | 12 wk read |  | 84ed | 2015-10-21 | 2016-01-13 | 826, 829 |  |  | 1.88d |  | Process | Process | Tech | Qualify & Ready |
| 831 | 1.9.4.2.2.3 | 26 wk read |  | 182ed | 2015-09-09 | 2016-03-09 | 826 |  |  | 1148.6d | 140.6d | Process | Process | Tech | Qualify & Ready |
| 832 | 1.9.4.2.2.4 | Stability suds |  | 90ed | 2015-09-09 | 2015-12-08 | 826 |  |  | 1415.6d | 109.88d | Process | Process | Tech | Qualify & Ready |
| 833 | 1.9.4.2.3 | Chemical Risk Assessment on All Products |  | 1w | 2014-09-29 | 2014-10-06 | 609, 603 |  |  | 631.1d | 319.5d | Process | Process | Tech | Qualify & Ready |
| 834 | 1.9.4.2.4 | MST Report |  | 2w | 2015-09-10 | 2015-09-23 | 826 |  |  | 391.6d | 80d | Process | Process | Tech | Qualify & Ready |

| ID | WBS | Task | Type | Duration | Start | Finish | Predecessors | Complete | Remaining | Total slack | Free slack | Text1 | Text2 | Text10 | Text27 |
| --- | --- | --- | --- | --- | --- | --- | --- | --- | --- | --- | --- | --- | --- | --- | --- |
| 835 | 1.9.4.2.5 | **Product/Making CQV** |  | 293d | 2015-04-07 | 2016-05-19 |  |  |  | 265.6d |  | Process | Process | Tech | Qualify & Ready |
| 836 | 1.9.4.2.5.1 | Determine what to make and how much for CQ |  | 3w | 2015-04-07 | 2015-04-27 | 5 |  |  | 469.6d | 0d | Plant | Tad | Tech | Qualify & Ready |
| 837 | 1.9.4.2.5.2 | Confirm when materials on site | milestone | 0d | 2015-12-17 | 2015-12-17 | 847, 851, 926 |  |  | 360.6d | 95d | Process | Process | Tech | Qualify & Ready |
| 838 | 1.9.4.2.5.3 | Confirm Downtime for CQ in SAP |  | 1w | 2015-04-28 | 2015-05-04 | 836 |  |  | 469.6d | 102d | SNO | IOL | Tech | Qualify & Ready |
| 839 | 1.9.4.2.5.4 | Complete PQ Document |  | 2mo | 2015-09-24 | 2015-11-24 | 836, 817, 819, 838, 818 |  |  | 367.6d | 102d | Process | Process | Tech | Qualify & Ready |
| 840 | 1.9.4.2.5.5 | IQ/OQ Raw Materials |  | 2w | 2016-04-15 | 2016-04-28 | 839, 809, 810 |  |  | 265.6d | 0d | Plant | Tad | Tech | Qualify & Ready |
| 841 | 1.9.4.2.5.6 | Stds (Odor/Appearance) |  | 2w | 2016-04-15 | 2016-04-28 | 809 |  |  | 243.6d | 0d | Process | Process | Tech | Qualify & Ready |
| 842 | 1.9.4.2.5.7 | Complete Product CQV |  | 3w | 2016-04-29 | 2016-05-19 | 841, 840, 839, 837, 811, 807, 808 |  |  | 265.6d | 25.6d | Process | Process | Tech | Qualify & Ready |
| 843 | 1.9.4.3 | **LA/LPA Process Tech Ready** |  | 362d | 2014-05-23 | 2015-11-03 |  |  |  | 392.6d |  | Eng | Eng | Tech | Qualify & Ready |
| 844 | 1.9.4.3.1 | **New Matl Readiness** |  | 205d | 2014-05-23 | 2015-03-27 |  |  |  | 549.6d |  | Eng | Eng | Tech | Qualify & Ready |
| 845 | 1.9.4.3.1.1 | Order/Receive equipment (tanks, agitators, valves, etc) |  | 13w | 2014-05-23 | 2014-08-25 | 40 |  |  | 549.6d | 0d | Eng | Eng | Tech | Qualify & Ready |
| 846 | 1.9.4.3.1.2 | Construction |  | 5mo | 2014-08-26 | 2015-02-13 | 845 |  |  | 549.6d | 0d | Eng | Eng | Tech | Qualify & Ready |
| 847 | 1.9.4.3.1.3 | CQ (eng) |  | 6w | 2015-02-16 | 2015-03-27 | 846 |  |  | 549.6d | 189d | Eng | Eng | Tech | Qualify & Ready |
| 848 | 1.9.4.3.2 | **Other Formula Equipment** |  | 151d | 2015-04-07 | 2015-11-03 |  |  |  | 392.6d |  | Eng | Robert | Tech | Qualify & Ready |
| 849 | 1.9.4.3.2.1 | Other/Receive Formula equipment |  | 13w | 2015-04-07 | 2015-07-06 | 5 |  |  | 392.6d | 0d | Eng | Robert | Tech | Qualify & Ready |
| 850 | 1.9.4.3.2.2 | Construction |  | 3mo | 2015-07-07 | 2015-10-06 | 849 |  |  | 392.6d | 0d | Eng | Robert | Tech | Qualify & Ready |
| 851 | 1.9.4.3.2.3 | CQ (eng) |  | 4w | 2015-10-07 | 2015-11-03 | 850 |  |  | 392.6d | 32d | Eng | Robert | Tech | Qualify & Ready |
| 852 | 1.9.4.4 | **LA/LPA Package Tech Ready** |  | 5d | 2015-12-29 | 2016-01-04 |  |  |  | 414.6d |  | Pkg Dev | MPD | Tech | Qualify & Ready |
| 853 | 1.9.4.4.1 | Handover process to MPO approved |  | 1w | 2015-12-29 | 2016-01-04 | 7FS-4mo |  |  | 414.6d | 259d | Pkg Dev | MPD | Tech | Qualify & Ready |
| 854 | 1.9.4.5 | **LA/LPA Packing Readiness - CQV 1** |  | 165d | 2014-10-22 A | 2015-06-29 |  |  | 165d | 549.6d |  | Eng | Eng | Tech | Qualify & Ready |
| 855 | 1.9.4.5.1 | 60% Design Basis Mechanical Development |  | 1w | 2014-12-18 | 2015-01-07 | 639, 645 |  |  | 90d | 0d | Eng | Eng | Tech | Qualify & Ready |
| 856 | 1.9.4.5.2 | 60% Design Basis Electrical Development |  | 1w | 2015-01-15 | 2015-01-21 | 855SS+2w, 645 |  |  | 98.9d | 0d | Eng | Eng | Tech | Qualify & Ready |
| 857 | 1.9.4.5.3 | 50% EI Development - Mechanical & Sign-off |  | 5w | 2015-04-07 | 2015-05-11 | 5, 645, 855 |  |  | 509.6d | 0d | Eng | Eng | Tech | Qualify & Ready |
| 858 | 1.9.4.5.4 | 50% EI Development - Electric & Sign-off |  | 5w | 2015-04-21 | 2015-05-25 | 857SS+2w |  |  | 509.6d | 0d | Eng | Eng | Tech | Qualify & Ready |
| 859 | 1.9.4.5.5 | Order Long Lead Time Packing (Laser, Vision, Cap Delivery) |  | 12w | 2015-04-07 | 2015-06-29 | 5 |  |  | 549.6d |  | Eng | Eng | Tech | Qualify & Ready |
| 860 | 1.9.4.5.6 | EI “Equipment Sourcing” Ready | milestone | 0d | 2014-10-22 A | 2014-10-22 A | 5, 858 | 100% |  |  |  | Eng | Eng | Tech | Qualify & Ready |
| 861 | 1.9.4.5.7 | Lead Lines EI Mechanical Development & IFC |  | 6w | 2014-10-23 | 2014-12-08 | 860 |  |  | 674.6d | 0d | Eng | Eng | Tech | Qualify & Ready |
| 862 | 1.9.4.5.8 | Lead Lines EI Electrical Development & IFC |  | 6w | 2014-11-06 | 2015-01-05 | 861SS+2w |  |  | 674.6d |  | Eng | Eng | Tech | Qualify & Ready |

| ID | WBS | Task | Type | Duration | Start | Finish | Predecessors | Complete | Remaining | Total slack | Free slack | Constraint | Text1 | Text2 | Text10 | Text27 |
| --- | --- | --- | --- | --- | --- | --- | --- | --- | --- | --- | --- | --- | --- | --- | --- | --- |
| 863 | 1.9.4.5.9 | **Lead Lines CQV** |  | 120d | 2015-01-05 A | 2015-06-22 |  |  | 120d | 554.6d |  |  | Eng | Eng | Tech | Qualify & Ready |
| 864 | 1.9.4.5.9.1 | Lead Lines Equipment Sourcing for Plants |  | 6w | 2015-05-12 | 2015-06-22 | 5, 857 |  |  | 554.6d |  |  | Eng | Eng | Tech | Qualify & Ready |
| 865 | 1.9.4.5.9.2 | Lead Lines Equipment on Site | milestone | 0d | 2015-01-05 A | 2015-01-05 A | 864, 861, 862, 859 | 100% |  |  |  |  | Eng | Eng | Tech | Qualify & Ready |
| 866 | 1.9.4.5.9.3 | Construction Planning |  | 3w | 2015-01-06 | 2015-01-26 | 865 |  |  | 489.6d | 0d |  | Eng | Eng | Tech | Qualify & Ready |
| 867 | 1.9.4.5.9.4 | Lead Lines Equipment Installation |  | 15d | 2015-02-24 | 2015-03-16 | 866FS+4w |  |  | 489.6d | 0d |  | Eng | Eng | Tech | Qualify & Ready |
| 868 | 1.9.4.5.9.5 | CQV Lead Lines for different variants |  | 8w | 2015-03-17 | 2015-05-11 | 865, 867 |  |  | 489.6d | 0d |  | Eng | Eng | Tech | Qualify & Ready |
| 869 | 1.9.4.6 | **LA Supply Chain Readiness** |  | 823.6d? | 2013-03-04 A | 2016-06-14 |  |  | 823.6d? | 299d |  |  | SNO | Charlotte | Supply | Qualify & Ready |
| 870 | 1.9.4.6.1 | Lock the Preliminary Customer Conversion Plan (80/20) |  | 5d | 2013-03-12 | 2013-03-18 | 52, 53, 54, 55, 56, 57, 59, 60, 61, 62, 63 |  |  | 994.6d | 71d |  | SNO | Perfume | Supply | Qualify & Ready |
| 871 | 1.9.4.6.2 | **Demand** |  | 8d | 2013-06-28 | 2013-07-10 |  |  |  |  |  |  | SNO | Perfume | Supply | Qualify & Ready |
| 872 | 1.9.4.6.2.1 | **Inventory Build Strategy** |  | 547.2d | 2013-06-28 | 2015-09-16 |  |  |  | 493.4d |  |  | SNO | Perfume | Supply | Qualify & Ready |
| 873 | 1.9.4.6.2.1.1 | **70/30 Confidence Plan** |  | 31d | 2015-07-27 | 2015-09-08 |  |  |  | 394.4d |  |  | SNO | Perfume | Supply | Qualify & Ready |
| 874 | 1.9.4.6.2.1.1.1 | Initial by Variant/Size Volume Forecast from Demand/Finance |  | 5d | 2015-07-27 | 2015-08-03 | 5FS+3.6mo |  |  | 399.4d | 5d |  | SNO | Perfume | Supply | Qualify & Ready |
| 875 | 1.9.4.6.2.1.1.2 | Update Merchandising/Customization Assumptions |  | 10d | 2015-07-27 | 2015-08-10 | 5FS+3.6mo |  |  | 394.4d | 0d |  | SNO | MLL/MIL | Supply | Qualify & Ready |
| 876 | 1.9.4.6.2.1.1.3 | Update to Shelf Transition Plans |  | 10d | 2015-07-27 | 2015-08-10 | 5FS+3.6mo |  |  | 394.4d | 0d |  | SNO | MLL/MIL | Supply | Qualify & Ready |
| 877 | 1.9.4.6.2.1.1.4 | Update RCCP with build plugs |  | 9d | 2015-08-10 | 2015-08-21 | 874, 875, 876 |  |  | 394.4d | 0d |  | SNO | Taylor | Supply | Qualify & Ready |
| 878 | 1.9.4.6.2.1.1.5 | Approval of 70/30 Plan |  | 2d | 2015-08-21 | 2015-08-25 | 877 |  |  | 394.4d | 0d |  | SNO | Perfume | Supply | Qualify & Ready |
| 879 | 1.9.4.6.2.1.1.6 | C:D checks and build plans with Major Suppliers |  | 12d | 2015-08-21 | 2015-09-08 | 877 |  |  | 499.4d | 6d |  | SNO | Lori | Supply | Qualify & Ready |
| 880 | 1.9.4.6.2.1.2 | **80/20 Confidence Plan** |  | 547.2d | 2013-06-28 | 2015-09-16 |  |  |  | 405.4d |  |  | SNO | Perfume | Supply | Qualify & Ready |
| 881 | 1.9.4.6.2.1.2.1 | Initial by Variant/Size Volume Forecast from Demand/Finance |  | 5d | 2013-06-28 | 2013-07-05 | 870 |  |  | 923.6d | 0d |  | SNO | Perfume | Supply | Qualify & Ready |
| 882 | 1.9.4.6.2.1.2.2 | Update Merchandising/Customization Assumptions |  | 2d | 2013-06-28 | 2013-07-01 | 870 |  |  | 926.6d | 3d |  | CMS | Andrew | Supply | Qualify & Ready |
| 883 | 1.9.4.6.2.1.2.3 | Update to Shelf Transition Plans |  | 2d | 2013-06-28 | 2013-07-01 | 870 |  |  | 926.6d | 3d |  | SNO | MLL/MIL | Supply | Qualify & Ready |
| 884 | 1.9.4.6.2.1.2.4 | Update RCCP with build plugs |  | 7d | 2013-07-08 | 2013-07-16 | 881, 882, 883 |  |  | 923.6d | 0d | finish no earlier than 2013-06-11 | SNO | Taylor | Supply | Qualify & Ready |
| 885 | 1.9.4.6.2.1.2.5 | Approval of 80/20 Plan |  | 2d | 2015-09-14 | 2015-09-16 | 884, 919 |  |  | 405.4d | 0d |  | SNO | Perfume | Supply | Qualify & Ready |
| 886 | 1.9.4.6.2.2 | **Master Data** |  | 25d | 2013-06-03 | 2013-07-08 |  |  |  |  |  |  | SNO | Jim Downey | Supply | Qualify & Ready |
| 887 | 1.9.4.6.2.2.1 | IOPT MD input RPMI |  | 14d | 2016-04-25 | 2016-05-13 | 813, 814, 815 |  |  | 0d |  |  | SNO | IOL | Supply | Qualify & Ready |
| 888 | 1.9.4.6.2.2.2 | Costing RPMI at supplier and SA/PO set up in PUMA |  | 7d | 2016-05-13 | 2016-05-24 | 887 |  |  | 5d | 0d |  | SNO | Taylor | Supply | Qualify & Ready |
| 889 | 1.9.4.6.2.2.3 | Obtain costing resources |  | 23d | 2016-04-29 | 2016-06-01 | 887FS-2w |  |  | 0d |  |  | SNO | Taylor | Supply | Qualify & Ready |
| 890 | 1.9.4.6.2.2.4 | Complete master data on new brandcodes |  | 5d | 2016-05-25 | 2016-06-01 | 889FF |  |  | 0d |  |  | SNO | Taylor | Supply | Qualify & Ready |
| 891 | 1.9.4.6.2.2.5 | FP brandcode costed (master data complete) |  | 3d | 2016-05-24 | 2016-05-27 | 888 |  |  | 5d |  |  | SNO | Taylor | Supply | Qualify & Ready |

Notes:
- 882: Volume build assumptions complete
- 883: Work to support RCCP (#1383) - Done / Next Steps: / - Final Build Plan date requested. / Conversion plans are not expected until Nov/Dec

| ID | WBS | Task | Duration | Start | Finish | Predecessors | Remaining | Total slack | Free slack | Text1 | Text2 | Text10 | Text27 |
| --- | --- | --- | --- | --- | --- | --- | --- | --- | --- | --- | --- | --- | --- |
| 892 | 1.9.4.6.2.3 | **BOP** | 231.4d | 2015-07-27 | 2016-06-14 |  |  | 0d |  | SNO | Perfume | Supply | Qualify & Ready |
| 893 | 1.9.4.6.2.3.1 | **BOP Readiness** | 224.4d | 2015-07-27 | 2016-06-03 |  |  | 0d |  | SNO | Perfume | Supply | Qualify & Ready |
| 894 | 1.9.4.6.2.3.1.1 | GDF (Global Demand Forecast) Setup | 3w | 2015-07-27 | 2015-08-17 | 5FS+3.6mo |  | 197.4d | 0d | SNO | Joe S | Supply | Qualify & Ready |
| 895 | 1.9.4.6.2.3.1.2 | Validate new and old SKU's in GDF/Forecast Template | 2w | 2015-08-17 | 2015-08-31 | 894 |  | 197.4d |  | SNO | Joe S | Supply | Qualify & Ready |
| 896 | 1.9.4.6.2.3.1.3 | Test volume data flow after master data set up | 2d | 2016-06-01 | 2016-06-03 | 890, 895 |  | 0d |  | SNO | Joe | Supply | Qualify & Ready |
| 897 | 1.9.4.6.2.3.2 | **BOP Final** | 7d | 2016-06-03 | 2016-06-14 |  |  | 0d |  | SNO | Perfume | Supply | Qualify & Ready |
| 898 | 1.9.4.6.2.3.2.1 | Demand passes prelim BOP (date needed) | 2d | 2016-06-03 | 2016-06-07 | 891, 896 |  | 0d |  | SNO | Joe | Supply | Qualify & Ready |
| 899 | 1.9.4.6.2.3.2.2 | Open producttion versions | 1d | 2016-06-07 | 2016-06-08 | 898 |  | 0d |  | SNO | Joe | Supply | Qualify & Ready |
| 900 | 1.9.4.6.2.3.2.3 | Demand passes final BOP (date needed) | 4d | 2016-06-08 | 2016-06-14 | 899 |  | 0d |  | SNO | Joe | Supply | Qualify & Ready |
| 901 | 1.9.4.6.3 | **Warehousing & Transportation Strategy & Planning** | 630.2d? | 2013-03-04 A | 2015-09-17 |  | 630.2d? | 484.4d |  | SNO | Joel | Supply | Qualify & Ready |
| 902 | 1.9.4.6.3.1 | **How much Space** | 521.2d | 2013-07-17 | 2015-08-27 |  |  | 499.4d |  | SNO | Joel | Supply | Qualify & Ready |
| 903 | 1.9.4.6.3.1.1 | Request the 70/30 Probability Bundle Split | 2d | 2015-08-25 | 2015-08-27 | 878 |  | 394.4d | 0d | SNO | Joel | Supply | Qualify & Ready |
| 904 | 1.9.4.6.3.1.2 | Request the 80/20 Probablility Bundle Split | 2d | 2013-07-17 | 2013-07-18 | 884 |  | 923.6d | 529.2d | SNO | Joel | Supply | Qualify & Ready |
| 905 | 1.9.4.6.3.1.3 | Inventory Space for Current/Other | 2d | 2015-08-25 | 2015-08-27 | 878 |  | 499.4d | 15d | SNO | Joel | Supply | Qualify & Ready |
| 906 | 1.9.4.6.3.1.4 | Any relevant ATS for ship/store/stack | 1mo | 2015-07-27 | 2015-08-26 | 5FS+3.6mo |  | 500.4d | 16d | SNO | Joel | Supply | Qualify & Ready |
| 907 | 1.9.4.6.3.1.5 | Confrim Supplier Space for build | 2d | 2013-07-17 | 2013-07-18 | 884 |  | 1018.6d | 534.2d | SNO | Joel | Supply | Qualify & Ready |
| 908 | 1.9.4.6.3.2 | **How much Carrier Capacity** | 630.2d? | 2013-03-04 | 2015-09-17 |  |  | 484.4d |  | SNO | Joel | Supply | Qualify & Ready |
| 909 | 1.9.4.6.3.2.1 | Intial Carrier capacity assessment for launch | 1d | 2015-09-16 | 2015-09-17 | 885 |  | 484.4d | 0d | SNO | Joel | Supply | Qualify & Ready |
| 910 | 1.9.4.6.3.2.2 | Locked carrier capacity (production schedule out (DATE) and customer pull pattern) | 1d? | 2013-03-04 | 2013-03-04 |  |  | 1061.6d | 0d | SNO | Joel | Supply | Qualify & Ready |
| 911 | 1.9.4.6.3.2.3 | PrePurchase Capacity (when do you need this? - physical distribution) - note when to lock | 8w | 2013-03-05 | 2013-04-30 | 910 |  | 1061.6d | 589.2d | SNO | Joel | Supply | Qualify & Ready |
| 912 | 1.9.4.6.3.2.4 | Evaluate need for additional drop lot space at ship points | 1d? | 2015-09-16 | 2015-09-17 | 885 |  | 472.4d | 0d | SNO | Joel | Supply | Qualify & Ready |
| 913 | 1.9.4.6.3.3 | **Storage Strategy** | 12d | 2015-08-27 | 2015-09-14 |  |  | 394.4d |  | SNO | Joel | Supply | Qualify & Ready |
| 914 | 1.9.4.6.3.3.1 | Explore warehouse locations (options analysis) | 10d | 2015-08-27 | 2015-09-10 | 903 |  | 394.4d | 0d | SNO | Joel | Supply | Qualify & Ready |
| 915 | 1.9.4.6.3.3.2 | Determine if need double stacking for any other part of the bundle | 10d | 2015-08-27 | 2015-09-10 | 903 |  | 394.4d | 0d | SNO | Joel | Supply | Qualify & Ready |
| 916 | 1.9.4.6.3.3.3 | Determine if new warehouse should it be a ship point (opportunistic shipment not SVGroup) | 10d | 2015-08-27 | 2015-09-10 | 903 |  | 394.4d | 0d | SNO | Joel | Supply | Qualify & Ready |
| 917 | 1.9.4.6.3.3.4 | Determine if it makes sense to shift any IRI districts for launch (cost impacts due to GM - analyis for category | 10d | 2015-08-27 | 2015-09-10 | 903 |  | 394.4d | 0d | SNO | Joel | Supply | Qualify & Ready |
| 918 | 1.9.4.6.3.3.5 | Strategy for freeing up enough space at the ship points to get right mix for launch | 10d | 2015-08-27 | 2015-09-10 | 903 |  | 394.4d | 0d | SNO | Joel | Supply | Qualify & Ready |
| 919 | 1.9.4.6.3.3.6 | Finalize Storage Strategy with 80/20 Confidence | 2d | 2015-09-10 | 2015-09-14 | 904, 914, 915, 916, 917, 918 |  | 394.4d | 0d | SNO | Joel | Supply | Qualify & Ready |

Notes:
- 917: Need Customer Pull Data before this can be done

| ID | WBS | Task | Type | Duration | Start | Finish | Predecessors | Complete | Remaining | Total slack | Free slack | Text1 | Text2 | Text10 | Text27 |
| --- | --- | --- | --- | --- | --- | --- | --- | --- | --- | --- | --- | --- | --- | --- | --- |
| 920 | 1.9.4.6.3.4 | **Transportation Strategy** |  | 470.2d | 2013-03-22 A | 2015-02-26 |  |  | 470.2d | 614.4d |  | SNO | Joel | Supply | Qualify & Ready |
| 921 | 1.9.4.6.3.4.1 | Physical distribution for new ship point (if needed) | milestone | 0d | 2015-02-26 A | 2015-02-26 A | 916 | 100% |  |  |  | SNO | Joel | Supply | Qualify & Ready |
| 922 | 1.9.4.6.3.4.2 | DSD options (what business to ship/ not normal lane and need to get capacity/paper - are we even doing this | milestone | 0d | 2013-03-22 | 2013-03-22 | 52, 24, 26 |  |  | 1084.6d | 612.2d | SNO | Joel | Supply | Qualify & Ready |
| 923 | 1.9.4.6.4 | Total Costs & Timing Update for Space (to incl interfreight, etc) |  | 3d | 2015-09-17 | 2015-09-22 | 903, 904, 906, 907, 909, 912, 921, 905 |  |  | 484.4d | 0d | SNO | Joel | Supply | Qualify & Ready |
| 924 | 1.9.4.6.5 | Approval for Additional Space (MO Ldr) |  | 5d | 2015-09-22 | 2015-09-29 | 923 |  |  | 484.4d | 240.8d | SNO | Joel | Supply | Qualify & Ready |
| 925 | 1.9.4.7 | **Material Qualification** |  | 300.5d | 2014-10-06 | 2015-12-17 |  |  |  | 338.6d |  | MSM | Jessica | Supply | Qualify & Ready |
| 926 | 1.9.4.7.1 | New Material Qualification |  | 1w | 2015-12-11 | 2015-12-17 | 811 |  |  | 262.6d | 0d | MSM | Ria | Supply | Qualify & Ready |
| 927 | 1.9.4.7.2 | Global Mat'l Supply Logistics plan |  | 3mo | 2014-10-06 | 2015-01-23 | 648 |  |  | 573.1d | 329.5d | SNO | IOL | Supply | Qualify & Ready |
| 928 | 1.9.4.7.3 | Packing Materials supplier assessment |  | 5mo | 2014-10-06 | 2015-03-26 | 648 |  |  | 529.1d | 285.5d | SNO | Jessica | Supply | Qualify & Ready |
| 929 | 1.9.4.7.4 | Raw Materials supplier assessment |  | 3mo | 2014-10-06 | 2015-01-23 | 648 |  |  | 573.1d | 329.5d | SNO | Gene | Supply | Qualify & Ready |
| 930 | 1.9.4.7.5 | Material supply vs. demand |  | 2w | 2015-08-25 | 2015-09-08 | 650, 878 |  |  | 411.4d | 167.8d | SNO | IOL | Supply | Qualify & Ready |
| 931 | 1.9.4.7.6 | Supplier base capability/reliability - High Level Analysis |  | 4w | 2015-08-25 | 2015-09-22 | 650, 878 |  |  | 401.4d | 157.8d | SNO | MSM TBD | Supply | Qualify & Ready |
| 932 | 1.9.5 | **LA/LPA Financials** |  | 167.2d | 2015-02-23 A | 2015-10-15 |  |  | 167.2d | 472.4d |  | Finance | Finance | All | Qualify & Ready |
| 933 | 1.9.5.1 | **Initiative Economics** |  | 157.2d | 2015-02-23 A | 2015-10-01 |  |  | 157.2d | 472.4d |  | Finance | Finance | All | Qualify & Ready |
| 934 | 1.9.5.1.1 | **Volume Assumptions** |  | 0d | 2015-02-23 A | 2015-02-23 A |  | 100% |  |  |  | Finance | Finance | All | Qualify & Ready |
| 935 | 1.9.5.1.1.1 | Detailed Forecast (SIMPL red sheet) | milestone | 0d | 2015-02-23 A | 2015-02-23 A | 5FS+5mo | 100% |  |  |  | A&I | A&I | Comm | Qualify & Ready |
| 936 | 1.9.5.1.1.2 | Awareness, Trial / Penetration | milestone | 0d | 2015-02-23 A | 2015-02-23 A | 5FS+5mo | 100% |  |  |  | A&I | A&I | Comm | Qualify & Ready |
| 937 | 1.9.5.1.1.3 | Cannibalization | milestone | 0d | 2015-02-23 A | 2015-02-23 A | 5FS+5mo | 100% |  |  |  | A&I | A&I | Comm | Qualify & Ready |
| 938 | 1.9.5.1.1.4 | Source of Volume Analysis | milestone | 0d | 2015-02-23 A | 2015-02-23 A | 5FS+5mo | 100% |  |  |  | A&I | A&I | Comm | Qualify & Ready |
| 939 | 1.9.5.1.2 | **Cost locked** |  | 12.2d | 2015-09-08 | 2015-09-24 |  |  |  | 472.4d |  | Finance | Finance | All | Qualify & Ready |
| 940 | 1.9.5.1.2.1 | Transition Costs Complete |  | 1w | 2015-09-17 | 2015-09-24 | 668, 5FS+5mo, 911, 912, 919 |  |  | 472.4d | 0d | SNO | Kelvin | Supply | Qualify & Ready |
| 941 | 1.9.5.1.2.2 | Capital Spend complete |  | 1w | 2015-09-08 | 2015-09-14 | 667, 5FS+5mo |  |  | 479.6d | 7.2d | Finance | Jenny | Comm | Qualify & Ready |
| 942 | 1.9.5.1.2.3 | Formula cost complete |  | 1w | 2015-09-08 | 2015-09-14 | 669, 5FS+5mo |  |  | 479.6d | 7.2d | Finance | Jenny | Comm | Qualify & Ready |
| 943 | 1.9.5.1.3 | **Financial Assumptions** |  | 5d | 2015-09-24 | 2015-10-01 |  |  |  | 472.4d |  | Finance | Finance | All | Qualify & Ready |
| 944 | 1.9.5.1.3.1 | SIMPL Financial Fact Sheet |  | 1w | 2015-09-24 | 2015-10-01 | 935, 936, 937, 938, 940, 941, 942 |  |  | 472.4d | 0d | Finance | Finance | Comm | Qualify & Ready |
| 945 | 1.9.5.1.3.2 | Gross and Incremental NOS, DOPAT |  | 1w | 2015-09-24 | 2015-10-01 | 935, 936, 937, 938, 940, 941, 942 |  |  | 472.4d | 0d | Finance | Finance | Comm | Qualify & Ready |
| 946 | 1.9.5.1.3.3 | Gross Margin |  | 1w | 2015-09-24 | 2015-10-01 | 935, 936, 937, 938, 940, 941, 942 |  |  | 472.4d | 0d | Finance | Finance | Comm | Qualify & Ready |
| 947 | 1.9.5.1.3.4 | NPV |  | 1w | 2015-09-24 | 2015-10-01 | 935, 936, 937, 938, 940, 941, 942 |  |  | 472.4d | 0d | Finance | Finance | Comm | Qualify & Ready |
| 948 | 1.9.5.2 | Business model & pricing |  | 1w | 2015-10-01 | 2015-10-08 | 944, 945, 946, 947 |  |  | 472.4d | 0d | Finance | Finance | Comm | Qualify & Ready |
| 949 | 1.9.5.3 | Distribution Inputs |  | 1w | 2015-07-22 | 2015-07-28 | 680 |  |  | 483.6d | 0d | Finance | Finance | Comm | Qualify & Ready |
| 950 | 1.9.5.4 | Volume Analysis |  | 8w | 2015-07-29 | 2015-09-22 | 949 |  |  | 483.6d | 11.2d | Finance | Finance | Comm | Qualify & Ready |
| 951 | 1.9.5.5 | Update Financial Analysis for LPA-LA |  | 1w | 2015-10-08 | 2015-10-15 | 950, 942, 941, 940, 948 |  |  | 472.4d |  | Finance | Finance | Comm | Qualify & Ready |

| ID | WBS | Task | Type | Duration | Start | Finish | Predecessors | Complete | Remaining | Actual start | Total slack | Free slack | Text1 | Text2 | Text10 | Text27 |
| --- | --- | --- | --- | --- | --- | --- | --- | --- | --- | --- | --- | --- | --- | --- | --- | --- |
| 952 | 1.9.6 | **LA/LPA Prep** |  | 94.1d | 2015-12-18 A | 2016-04-28 |  |  | 94.1d |  | 243.6d |  | IDM | IL | All | Qualify & Ready |
| 953 | 1.9.6.1 | Update Technical LA Documents | milestone | 0d | 2016-04-28 | 2016-04-28 | 801, 927, 928, 930, 802, 804, 805, 831, 931, 841, 926, 885, 919, 929, 868 |  |  |  | 243.6d | 0d | IDM | IL | All | Qualify & Ready |
| 954 | 1.9.6.2 | Update Commercial LA documents | milestone | 0d | 2015-12-18 A | 2015-12-18 A | 951, 699, 698, 696, 694, 687, 984, 985 | 100% |  |  |  |  | IDM | IL | All | Qualify & Ready |
| 955 | 1.10 | **Delivery JFM** |  | 1122.6d? | 2013-03-04 A | 2017-08-07 |  | 6% | 1059.14d? |  | 0d |  | SNO | Kelvin | Supply | Launch |
| 956 | 1.10.1 | **Marketing Plan Execution** |  | 327.9d? | 2014-08-27 | 2015-12-17 |  |  |  |  | 345.6d |  | Mktg | Mktg | Comm | Launch |
| 957 | 1.10.1.1 | **TV Plans - Advertising Copy (incl anthem finish and copy testing)** |  | 1d? | 2015-06-17 | 2015-06-18 |  |  |  |  | 552.7d | 312.7d | Mktg | Mktg | Comm | Launch |
| 958 | 1.10.1.1.1 | Anthem approved |  | 1d? | 2015-06-17 | 2015-06-18 | 722, 731 |  |  |  | 552.7d |  |  |  |  | Launch |
| 959 | 1.10.1.1.2 | USH Approved |  | 1d? | 2015-06-17 | 2015-06-18 | 722, 731 |  |  |  | 552.7d |  |  |  |  | Launch |
| 960 | 1.10.1.1.3 | Copy Testing results |  | 1d? | 2015-06-17 | 2015-06-18 | 722, 731 |  |  |  | 552.7d |  |  |  |  | Launch |
| 961 | 1.10.1.2 | Print Execution |  | 6mo | 2015-06-16 | 2015-12-17 | 733 |  |  |  | 422.7d | 182.7d | Mktg | Mktg | Comm | Launch |
| 962 | 1.10.1.3 | **Digital Execution** |  | 44d | 2015-07-22 | 2015-09-21 |  |  |  |  | 485.6d |  | Mktg | Mktg | Comm | Launch |
| 963 | 1.10.1.3.1 | Digital Execution |  | 2w | 2015-07-22 | 2015-08-04 | 738 |  |  |  | 519.6d | 279.6d | Mktg | Mktg | Comm | Launch |
| 964 | 1.10.1.3.2 | Search Execution |  | 2mo | 2015-07-22 | 2015-09-21 | 738 |  |  |  | 485.6d | 245.6d | Mktg | Mktg | Comm | Launch |
| 965 | 1.10.1.3.3 | iMedia Execution |  | 2mo | 2015-07-22 | 2015-09-21 | 738 |  |  |  | 485.6d | 245.6d | Mktg | Mktg | Comm | Launch |
| 966 | 1.10.1.4 | In Store Execution |  | 66d | 2015-06-26 | 2015-09-28 | 742 |  |  |  | 480.7d | 240.7d | Mktg | Mktg | Comm | Launch |
| 967 | 1.10.1.5 | **Print Tools** |  | 75d | 2014-08-27 | 2014-12-15 |  |  |  |  | 345.6d |  | SNO | IOL | Supply | Launch |
| 968 | 1.10.1.5.1 | PDR 1 (Cap Wraps) Print Tools - 2/22 |  | 20d | 2014-08-27 | 2014-09-24 | 770 |  |  |  | 345.6d | 40d | SNO | IOL | Supply | Launch |
| 969 | 1.10.1.5.2 | PDR 2 (US Labels) Print Tools - 3/18-4/16 |  | 15d | 2014-11-20 | 2014-12-15 | 968, 790 |  |  |  | 679.6d |  | SNO | IOL | Supply | Launch |
| 970 | 1.10.2 | **Customization Milestone (US/PR/CAN)** |  | 138d? | 2013-06-17 | 2014-01-13 |  | 10% | 124.2d? | 2013-05-06 |  |  | CMS | Marciniak | Supply | Launch |
| 971 | 1.10.2.1 | C&F Submitted |  | 1d? | 2015-05-19 | 2015-05-20 | 6 |  |  |  | 0d |  | CMS | Marciniak | Supply | Launch |
| 972 | 1.10.2.2 | Design Frozen | milestone | 0d | 2015-05-20 | 2015-05-20 | 971 |  |  |  | 0d |  | CMS | Marciniak | Supply | Launch |
| 973 | 1.10.2.3 | Case Weights & Measures (CW&M) attached to C&F |  | 2d | 2015-05-20 | 2015-05-22 | 972 |  |  |  | 0d |  | CMS | Marciniak | Supply | Launch |
| 974 | 1.10.2.4 | C&F Final |  | 12d | 2015-05-22 | 2015-06-09 | 973 |  |  |  | 0d |  | CMS | Marciniak | Supply | Launch |
| 975 | 1.10.2.5 | PDR submitted into ePadex |  | 1d | 2015-06-09 | 2015-06-10 | 974 |  |  |  | 0d |  | CMS | Marciniak | Supply | Launch |
| 976 | 1.10.2.6 | GBP Release |  | 14d | 2015-06-10 | 2015-06-30 | 975 |  |  |  | 0d |  | CMS | Marciniak | Supply | Launch |
| 977 | 1.10.2.7 | Demand Flowing |  | 2d | 2015-06-30 | 2015-07-02 | 976 |  |  |  | 0d |  | CMS | Marciniak | Supply | Launch |
| 978 | 1.10.2.8 | Art Files Released to CM |  | 51d | 2015-07-02 | 2015-09-11 | 977 |  |  |  | 0d |  | CMS | Marciniak | Supply | Launch |
| 979 | 1.10.2.9 | Manual Approved |  | 1d | 2015-09-11 | 2015-09-14 | 978 |  |  |  | 0d |  | CMS | Marciniak | Supply | Launch |
| 980 | 1.10.2.10 | CRWS Approved |  | 1d | 2015-09-14 | 2015-09-15 | 979 |  |  |  | 0d |  | CMS | Marciniak | Supply | Launch |
| 981 | 1.10.2.11 | PR Approved |  | 6d | 2015-09-15 | 2015-09-23 | 980 |  |  |  | 0d |  | CMS | Marciniak | Supply | Launch |
| 982 | 1.10.2.12 | Feeder Stock (Product Packaged into currogate displays) |  | 34d | 2015-09-23 | 2015-11-10 | 981 |  |  |  | 0d |  | CMS | Marciniak | Supply | Launch |
| 983 | 1.10.2.13 | Customization Product at Location to build displays |  | 1d | 2015-11-10 | 2015-11-11 | 982 |  |  |  | 0d |  | CMS | IOL | Supply | Launch |
| 984 | 1.10.2.14 | C:D Analysis of High side demand |  | 1mo | 2013-05-06 A | 2015-11-18 | 685, 983 | 77% | 0.23mo |  | 425.7d | 0d | SNO | Perfume | Supply | Launch |
| 985 | 1.10.2.15 | Conversion remnant plan approved |  | 1mo | 2015-11-18 | 2015-12-18 | 685, 984 |  |  |  | 425.7d |  | SNO | Perfume | Supply | Launch |

| ID | WBS | Task | Duration | Start | Finish | Predecessors | Complete | Remaining | Total slack | Free slack | Text1 | Text2 | Text10 | Text27 |
| --- | --- | --- | --- | --- | --- | --- | --- | --- | --- | --- | --- | --- | --- | --- |
| 986 | 1.10.3 | **Packing Delivery** | 126d | 2013-04-22 A | 2013-10-17 |  | 45% | 68.73d | 916.6d |  | Eng | Eng | Tech | Launch |
| 987 | 1.10.3.1 | EI Mechanical 90% Development & IFC | 5w | 2013-04-22 A | 2013-05-24 A | 868SS-6w | 100% |  |  |  | Eng | Eng | Tech | Launch |
| 988 | 1.10.3.2 | EI Electrical 90% Development & IFC | 5w | 2013-05-06 A | 2013-06-10 A | 987SS+2w | 100% |  |  |  | Eng | Eng | Tech | Launch |
| 989 | 1.10.3.3 | Remaining Line Equipment Mech Sourcing Line (remaining lines) | 3w | 2013-05-20 A | 2013-06-10 A | 987FS-1w | 100% |  |  |  | Eng | Eng | Tech | Launch |
| 990 | 1.10.3.4 | Remaining Line Equipment Elec Sourcing Line (remaining Lines) | 3w | 2013-06-04 A | 2013-06-24 A | 988FS-1w | 100% |  |  |  | Eng | Eng | Tech | Launch |
| 991 | 1.10.3.5 | Remaining Line Equipment Mech Purchase (remaining lines) | 6w | 2013-06-11 | 2013-07-23 | 989 |  |  | 926.6d | 10d | Eng | Eng | Tech | Launch |
| 992 | 1.10.3.6 | Remaining Line Equipment Elec Purchase (remaining lines) | 6w | 2013-06-25 | 2013-08-06 | 990 |  |  | 916.6d | 0d | Eng | Eng | Tech | Launch |
| 993 | 1.10.3.7 | **Post LA Construction** | 51d | 2013-08-07 | 2013-10-17 |  |  |  | 916.6d |  | Eng | Eng | Tech | Launch |
| 994 | 1.10.3.7.1 | Construction Planning on line A | 2w | 2013-08-07 | 2013-08-20 | 991, 992 |  |  | 916.6d | 0d | Eng | Eng | Tech | Launch |
| 995 | 1.10.3.7.2 | Line A Construction | 2d | 2013-08-21 | 2013-08-22 | 994 |  |  | 916.6d | 0d | Eng | Eng | Tech | Launch |
| 996 | 1.10.3.7.3 | Construction Planning line B | 2w | 2013-09-12 | 2013-09-25 | 991, 992, 1001 |  |  | 916.6d | 0d | Eng | Eng | Tech | Launch |
| 997 | 1.10.3.7.4 | Line B Construction | 2d | 2013-09-26 | 2013-09-27 | 996 |  |  | 916.6d | 0d | Eng | Eng | Tech | Launch |
| 998 | 1.10.3.7.5 | Construction Planning C | 2w | 2013-10-02 | 2013-10-15 | 1002FS-10d |  |  | 916.6d | 0d | Eng | Eng | Tech | Launch |
| 999 | 1.10.3.7.6 | Line C Construction | 2d | 2013-10-16 | 2013-10-17 | 998 |  |  | 916.6d | 0d | Eng | Eng | Tech | Launch |
| 1000 | 1.10.4 | **CQV 2 (Product & Packing)** | 66d | 2013-08-23 | 2013-11-25 |  |  |  | 916.6d |  | Eng | Eng | Tech | Launch |
| 1001 | 1.10.4.1 | Line A - CQV (Dates and Variants) | 13d | 2013-08-23 | 2013-09-11 | 995 |  |  | 916.6d | 0d | Eng | Eng | Tech | Launch |
| 1002 | 1.10.4.2 | Line B - CQV (Dates and Variants) | 12d | 2013-09-30 | 2013-10-15 | 997 |  |  | 916.6d | 0d | Eng | Eng | Tech | Launch |
| 1003 | 1.10.4.3 | Line C - CQV (Dates and Variants) | 13d | 2013-10-18 | 2013-11-05 | 999 |  |  | 916.6d | 0d | Eng | Eng | Tech | Launch |
| 1004 | 1.10.4.4 | Remaining 2 Formulas/Packages (list variants here) | 3w | 2013-10-18 | 2013-11-07 | 1003SS |  |  | 947.6d |  | Eng | Eng | Tech | Launch |
| 1005 | 1.10.4.5 | Line D CQV - assumed part of inventory build | 3d | 2013-11-20 | 2013-11-22 | 1003FS+10d |  |  | 935.6d | 0d | Eng | Eng | Tech | Launch |
| 1006 | 1.10.4.6 | Line E CQV - assumed part of inventory build | 1d | 2013-11-25 | 2013-11-25 | 1005 |  |  | 935.6d |  | Eng | Eng | Tech | Launch |
| 1007 | 1.10.5 | **Sales Samples** | 322d | 2013-03-04 | 2014-06-20 |  |  |  | 712.6d |  | SNO | Kelvin | Supply | Launch |
| 1008 | 1.10.5.1 | Order Label/Artwork Materials | 2w | 2014-05-08 | 2014-05-21 | 157 |  |  | 712.6d | 0d | PR | PR | Tech | Launch |
| 1009 | 1.10.5.2 | Primary Pack Production | 1w | 2014-05-22 | 2014-05-29 | 1008 |  |  | 712.6d | 0d | PR | PR | Tech | Launch |
| 1010 | 1.10.5.3 | Label Production | 1w | 2014-05-22 | 2014-05-29 | 1008 |  |  | 712.6d | 0d | PR | PR | Tech | Launch |
| 1011 | 1.10.5.4 | Sales Sample Primary Pack Delivery to Sampling Solutions | 1w | 2013-03-04 | 2013-03-08 |  |  |  | 1013.6d | 301d | PR | PR | Tech | Launch |
| 1012 | 1.10.5.5 | Sales Sample Assembly at Sampling Solutions | 1w | 2014-05-30 | 2014-06-05 | 1009, 1010, 1011 |  |  | 712.6d | 0d | PR | PR | Tech | Launch |
| 1013 | 1.10.5.6 | Agency Sales Samples Delivery | 11d | 2014-06-06 | 2014-06-20 | 1012 |  |  | 712.6d | 0d | PR | PR | Tech | Launch |

| ID | WBS | Task | Type | Duration | Start | Finish | Predecessors | Total slack | Free slack | Text1 | Text2 | Text10 | Text27 |
| --- | --- | --- | --- | --- | --- | --- | --- | --- | --- | --- | --- | --- | --- |
| 1014 | 1.10.6 | **Production Operating Strategy** |  | 1122.6d? | 2013-03-04 | 2017-08-07 |  | 0d |  | IOL | IOL | Execution | Launch |
| 1015 | 1.10.6.1 | **Launch Organization Team Design** |  | 1d? | 2016-05-31 | 2016-05-31 |  | 308.6d |  | IOL | IOL | Execution | Launch |
| 1016 | 1.10.6.1.1 | Shipment deployment Need internal or external to the PSC |  | 1d? | 2016-05-31 | 2016-05-31 | 7FS+1mo | 308.6d |  | IOL | IOL | Execution | Launch |
| 1017 | 1.10.6.2 | **Warehouse & Transportation Start-up** |  | 626.2d | 2013-04-05 | 2015-10-14 |  | 473.4d |  | IOL | IOL | Execution | Launch |
| 1018 | 1.10.6.2.1 | **Secure warehouse space** |  | 20d | 2013-04-05 | 2013-05-02 |  | 1056.6d |  | IOL | IOL | Execution | Launch |
| 1019 | 1.10.6.2.1.1 | Write COP |  | 1w | 2013-04-05 | 2013-04-11 | 3FS+1mo | 1056.6d | 0d | IOL | IOL | Execution | Launch |
| 1020 | 1.10.6.2.1.2 | Write exploratory ROA |  | 1w | 2013-04-12 | 2013-04-18 | 1019 | 1056.6d | 0d | IOL | IOL | Execution | Launch |
| 1021 | 1.10.6.2.1.3 | MO Leader concurrence |  | 1w | 2013-04-19 | 2013-04-25 | 1020 | 1056.6d | 0d | IOL | IOL | Execution | Launch |
| 1022 | 1.10.6.2.1.4 | Official ROA |  | 1w | 2013-04-26 | 2013-05-02 | 1021 | 1056.6d | 0d | IOL | IOL | Execution | Launch |
| 1023 | 1.10.6.2.1.5 | Warehouse Available | milestone | 0d | 2013-05-02 | 2013-05-02 | 1022 | 1079.6d |  | IOL | IOL | Execution | Launch |
| 1024 | 1.10.6.2.2 | **Whse/Transp Readiness** |  | 22d | 2015-09-14 | 2015-10-14 |  | 472.4d |  | IOL | IOL | Execution | Launch |
| 1025 | 1.10.6.2.2.1 | T&W Readiness Kick-off (PSC, MDO, GBU) | milestone | 0d | 2015-09-14 | 2015-09-14 | 1022, 921, 922, 919 | 472.4d | 0d | IOL | IOL | Execution | Launch |
| 1026 | 1.10.6.2.2.2 | Transportation purchases for new lanes |  | 1mo | 2015-09-14 | 2015-10-14 | 1025 | 472.4d | 236.4d | IOL | IOL | Execution | Launch |
| 1027 | 1.10.6.2.2.3 | Transportation BCP - ice storms north & tornadoes in south |  | 1mo | 2015-09-14 | 2015-10-14 | 1025 | 472.4d | 236.4d | IOL | IOL | Execution | Launch |
| 1028 | 1.10.6.2.2.4 | RTCIS/PRIME Set Up |  | 1mo | 2015-09-14 | 2015-10-14 | 1025 | 472.4d | 236.4d | IOL | IOL | Execution | Launch |
| 1029 | 1.10.6.2.2.5 | 3PL set up to manage shuttles in and out of facility (if only storage facility) |  | 1mo | 2015-09-14 | 2015-10-14 | 1025 | 472.4d | 236.4d | IOL | IOL | Execution | Launch |
| 1030 | 1.10.6.2.2.6 | Order guide changes and APAL |  | 1mo | 2015-09-14 | 2015-10-14 | 1025 | 472.4d | 236.4d | IOL | IOL | Execution | Launch |
| 1031 | 1.10.6.3 | **Remnant Management Plans** |  | 299d? | 2016-06-14 | 2017-08-07 |  | 0d |  | IOL | IOL | Execution | Launch |
| 1032 | 1.10.6.3.1 | Develop Remnant Strategy |  | 1d? | 2016-06-14 | 2016-06-15 | 900 | 0d |  | SNO | MLL/MIL | Execution | Launch |
| 1033 | 1.10.6.3.2 | Fill vs scrap decision on reshippers initial evaluation |  | 1d? | 2016-06-15 | 2016-06-16 | 1032 | 0d |  | SNO | CSNP/BP | Execution | Launch |
| 1034 | 1.10.6.3.3 | Secondary market/remnant |  | 146d | 2016-06-16 | 2017-01-06 | 1033 | 0d |  | SNO | CSNP/BP | Execution | Launch |
| 1035 | 1.10.6.3.4 | Fill vs scrap decision on reshippers final look |  | 1d? | 2017-01-06 | 2017-01-09 | 1034 | 0d |  | SNO | CSNP/BP | Execution | Launch |
| 1036 | 1.10.6.3.5 | Execute scrap |  | 146d | 2017-01-09 | 2017-08-01 | 1035 | 0d |  | SNO | CSNP/BP | Execution | Launch |
| 1037 | 1.10.6.3.6 | Manage visibility of remnants - what we have left; consolidating them, etc |  | 1d? | 2017-08-01 | 2017-08-02 | 1036 | 0d |  | SNO | CSNP/BP | Execution | Launch |
| 1038 | 1.10.6.3.7 | Overall strategy of remnants (from MS&P) |  | 1d? | 2017-08-02 | 2017-08-03 | 1037 | 0d |  | SNO | CSNP/BP | Execution | Launch |
| 1039 | 1.10.6.3.8 | Is there any end date to move old product into market through NPI disposition |  | 1d? | 2017-08-03 | 2017-08-04 | 1038 | 0d |  | SNO | CSNP/BP | Execution | Launch |
| 1040 | 1.10.6.3.9 | FSCI Plans - Runout of Current / Merchandising Impact |  | 1d? | 2017-08-04 | 2017-08-07 | 1039 | 0d |  | Mktg | Mktg | Execution | Launch |

Notes:
- 1024: tie to sop

| ID | WBS | Task | Duration | Start | Finish | Predecessors | Total slack | Free slack | Text10 | Text27 | Text2 |
| --- | --- | --- | --- | --- | --- | --- | --- | --- | --- | --- | --- |
| 1041 | 1.10.6.4 | **Managed Supply** | 600.2d? | 2013-03-04 | 2015-08-06 |  | 522.4d |  | Execution | Launch |  |
| 1042 | 1.10.6.4.1 | **Managed Supply Readiness** | 600.2d? | 2013-03-04 | 2015-08-06 |  | 522.4d |  | Execution | Launch |  |
| 1043 | 1.10.6.4.1.1 | Acquire Access/License to manage | 1w | 2015-07-27 | 2015-08-03 | 5FS+3.6mo | 522.4d | 0d | Execution | Launch | Joe S |
| 1044 | 1.10.6.4.1.2 | SODE file creation for bundle | 1d? | 2015-08-03 | 2015-08-04 | 1043 | 522.4d | 0d | Execution | Launch | Joe S |
| 1045 | 1.10.6.4.1.3 | Develop GBP Materials for Managed Supply Guildelines | 1d? | 2015-08-04 | 2015-08-05 | 1044 | 522.4d | 0d | Execution | Launch | Joe S |
| 1046 | 1.10.6.4.1.4 | Acquire systems support for managed supply report development | 1d? | 2015-08-05 | 2015-08-06 | 1045 | 522.4d |  | Execution | Launch | Perfume |
| 1047 | 1.10.6.4.1.5 | **ABC Strategy** | 1d? | 2013-03-04 | 2013-03-04 |  | 1121.6d |  | Execution | Launch |  |
| 1048 | 1.10.6.4.1.5.1 | Obtain history of SKUs by Customer | 1d? | 2013-03-04 | 2013-03-04 |  | 1121.6d |  | Execution | Launch | Joe / Perfume |
| 1049 | 1.10.6.4.2 | **By Country Managed Supply Forecasts:** | 10d? | 2013-03-04 | 2013-03-15 |  | 1112.6d |  | Execution | Launch |  |
| 1050 | 1.10.6.4.2.1 | Develop team template | 1d? | 2013-03-04 | 2013-03-04 |  | 1112.6d | 0d | Execution | Launch | Joe S |
| 1051 | 1.10.6.4.2.2 | Develop Spotfire reports | 1d? | 2013-03-05 | 2013-03-05 | 1050 | 1112.6d | 0d | Execution | Launch | tbd - systems resource |
| 1052 | 1.10.6.4.2.3 | Populate team templates with run rates | 1d? | 2013-03-06 | 2013-03-06 | 1051 | 1112.6d | 0d | Execution | Launch | Joe S |
| 1053 | 1.10.6.4.2.4 | Create a one pager for the teams for how to fill out template | 1d? | 2013-03-07 | 2013-03-07 | 1052 | 1112.6d | 0d | Execution | Launch | Joe S |
| 1054 | 1.10.6.4.2.5 | Train teams on template | 1d? | 2013-03-08 | 2013-03-08 | 1053 | 1112.6d | 0d | Execution | Launch | Joe S |
| 1055 | 1.10.6.4.2.6 | Validation of the overall tool and forecast template process | 1d? | 2013-03-11 | 2013-03-11 | 1054 | 1112.6d | 0d | Execution | Launch | Joe S |
| 1056 | 1.10.6.4.2.7 | Templates sent out | 1d? | 2013-03-12 | 2013-03-12 | 1055 | 1112.6d | 0d | Execution | Launch | Joe S |
| 1057 | 1.10.6.4.2.8 | Month 1 Forecast Proposal (date needed) | 1d? | 2013-03-13 | 2013-03-13 | 1056 | 1112.6d | 0d | Execution | Launch | Joe S |
| 1058 | 1.10.6.4.2.9 | Month 2 Forecast Update (date needed) | 1d? | 2013-03-14 | 2013-03-14 | 1057 | 1112.6d | 0d | Execution | Launch | Joe S |
| 1059 | 1.10.6.4.2.10 | Month 3 Forecast Lock (date needed) | 1d? | 2013-03-15 | 2013-03-15 | 1058 | 1112.6d |  | Execution | Launch | Joe S |
| 1060 | 1.10.6.5 | **Orders** | 825.6d? | 2013-03-04 | 2016-06-16 |  | 297d |  | Execution | Launch |  |
| 1061 | 1.10.6.5.1 | Understand SAP ordering systems capability for potential Forecast / Order Compliance Interventions; CSO - OMA Education Program | 1d? | 2013-03-04 | 2013-03-04 |  | 1121.6d |  | Execution | Launch | MLL/MIL / Natalie |
| 1062 | 1.10.6.5.2 | PSC org up to speed | 1d? | 2013-03-04 | 2013-03-04 |  | 1121.6d |  | Execution | Launch |  |
| 1063 | 1.10.6.5.3 | Daily Processes | 1d? | 2013-03-04 | 2013-03-04 |  | 1121.6d |  | Execution | Launch |  |
| 1064 | 1.10.6.5.4 | First Delivery Orders Due (date due) | 1d? | 2016-06-15 | 2016-06-16 | 28FS-9w | 297d |  | Execution | Launch | MLL/MIL |
| 1065 | 1.10.6.5.5 | Last Order date for FDD (date here) | 1d? | 2013-03-04 | 2013-03-04 |  | 1121.6d |  | Execution | Launch |  |
| 1066 | 1.10.6.5.6 | FDD Order Consolidation Date (date here) | 1d? | 2013-03-04 | 2013-03-04 |  | 1121.6d |  | Execution | Launch | MLL/MIL |
| 1067 | 1.10.6.5.7 | Last Order Date for Current Product (date here) | 1d? | 2013-03-04 | 2013-03-04 |  | 1121.6d |  | Execution | Launch | MLL/MIL |
| 1068 | 1.10.6.5.8 | Last Ship Date for other Current Product (date here) | 1d? | 2013-03-04 | 2013-03-04 |  | 1121.6d |  | Execution | Launch | MLL/MIL |

Notes:
- 1048: is this for demand process or for ABC plans?

| ID | WBS | Task | Type | Duration | Start | Finish | Predecessors | Total slack | Free slack | Text10 | Text27 | Text1 | Text2 |
| --- | --- | --- | --- | --- | --- | --- | --- | --- | --- | --- | --- | --- | --- |
| 1069 | 1.10.6.6 | **Current Inventory Build Execution** |  | 63d? | 2016-06-14 | 2016-09-09 |  | 236d |  | Execution | Launch |  |  |
| 1070 | 1.10.6.6.1 | Create builds via SAFTS in SAP |  | 1d? | 2016-06-14 | 2016-06-15 | 900 | 236d | 0d | Execution | Launch | SNO | SIP |
| 1071 | 1.10.6.6.2 | Complete current inventory SAFTs at large suppliers (Lima) | milestone | 0d | 2016-06-15 | 2016-06-15 | 1070 | 236d | 0d | Execution | Launch | SNO | SIP |
| 1072 | 1.10.6.6.3 | Complete FP SAFTs for current inventory |  | 61d | 2016-06-15 | 2016-09-08 | 1071 | 236d | 0d | Execution | Launch | SNO | SIP |
| 1073 | 1.10.6.6.4 | Current Build SOP |  | 1d? | 2016-09-08 | 2016-09-09 | 1026, 1027, 1028, 1029, 1030, 1072 | 236d |  | Execution | Launch | SNO | SIP |
| 1074 | 1.10.6.7 | **New Inventory Build Execution** |  | 51d? | 2013-03-04 | 2013-05-14 |  | 1071.6d |  | Execution | Launch |  |  |
| 1075 | 1.10.6.7.1 | Complete Bundle builds at Large Suppliers | milestone | 0d | 2013-03-04 | 2013-03-04 |  | 1122.6d |  | Execution | Launch | SNO | SIP |
| 1076 | 1.10.6.7.2 | Formulas aval (date needed) |  | 1d? | 2013-03-04 | 2013-03-04 |  | 1121.6d |  | Execution | Launch | SNO | SIP |
| 1077 | 1.10.6.7.3 | Complete FP SAFTs for new product (by plant) |  | 51d | 2013-03-04 | 2013-05-14 |  | 1071.6d |  | Execution | Launch | SNO | SIP |
| 1078 | 1.10.7 | **Prod/nv Build** |  | 706.6d | 2013-11-06 | 2016-08-31 |  | 243d |  | Execution | Launch | SNO | IOL |
| 1079 | 1.10.7.1 | SMART |  | 4w | 2016-01-28 | 2016-02-24 | 799, 834, 807SS | 311.6d | 0d | Execution | Launch | PR | PR |
| 1080 | 1.10.7.2 | G2Target complete |  | 2mo | 2015-05-12 | 2015-07-10 | 868 | 489.6d | 178d | Execution | Launch | Eng | Eng |
| 1081 | 1.10.7.3 | Readiness Report |  | 3w | 2016-02-25 | 2016-03-16 | 1079 | 311.6d | 0d | Execution | Launch | TRO | TRL |
| 1082 | 1.10.7.4 | **Materials - increased supply** |  | 10d | 2015-09-14 | 2015-09-28 |  | 394.4d |  | Execution | Launch | SNO | Lori |
| 1083 | 1.10.7.4.1 | Totes |  | 2w | 2015-09-14 | 2015-09-28 | 919 | 394.4d | 0d | Execution | Launch | SNO | Lori |
| 1084 | 1.10.7.4.2 | non SAP consumables (tiesheets, stretchwrap) |  | 2w | 2015-09-14 | 2015-09-28 | 919 | 434.4d | 122.8d | Execution | Launch | SNO | Lori |
| 1085 | 1.10.7.4.3 | Pallets |  | 2w | 2015-09-14 | 2015-09-28 | 919 | 434.4d | 122.8d | Execution | Launch | SNO | Lori |
| 1086 | 1.10.7.5 | SubAssembly - new parts (onsite and ready for use) |  | 40d | 2015-09-28 | 2015-11-23 | 919, 968, 1083, 868 | 394.4d | 82.8d | Execution | Launch | SNO | Lori |
| 1087 | 1.10.7.6 | **Finished Product** |  | 587d | 2013-11-06 | 2016-03-16 |  | 362.6d |  | Execution | Launch | SNO | IOL |
| 1088 | 1.10.7.6.1 | Tanks Up and Running |  | 1.5mo | 2013-11-06 | 2014-01-06 | 1002, 1003, 1001 | 916.6d |  | Execution | Launch | SNO | Tad |
| 1089 | 1.10.7.6.2 | All sizes/All forms up and running | milestone | 0d | 2016-03-16 | 2016-03-16 | 1084, 1085, 1080, 1081, 1086 | 311.6d | 71.6d | Execution | Launch | SNO | IOL |
| 1090 | 1.10.7.7 | Inventory build (hard convert due to bottle sizes) |  | 60ed | 2016-06-24 | 2016-08-23 | 842, 816, 1089 | 1008d | 0d | Execution | Launch | SNO | IOL |
| 1091 | 1.10.7.8 | Ship to RDC |  | 3d | 2016-08-25 | 2016-08-30 | 1090SS+2mo | 240d | 0d | Execution | Launch | SNO | IOL |
| 1092 | 1.10.7.9 | SOS - Laundry |  | 1d | 2016-08-30 | 2016-08-31 | 1091, 957, 961, 963, 964, 965, 966 | 240d | 0d | Execution | Launch | SNO | IOL |
